# Development of the Technology City in Dammam-RECOVERY SCHEDULE -REV0.00

How a schedule from Primavera P6 changed from version to version. A marks actual dates.

## Version 1 (data date 2026-06-23, saved 2026-09-07, file 4.MOD3-3147-RECOVERY-REV0.00-7-9-2026-FINAL (1).xer)

Note of the change: Restructure repo: reference, baseline, weekly folders by data date, notes, templates, README

| ID | WBS | Task | Duration | Start | Finish | Predecessors | Complete | Total float |
| --- | --- | --- | --- | --- | --- | --- | --- | --- |
|  | MS | **Key Milestones** |  | 2025-12-23 | 2027-02-23 |  |  |  |
|  | CM | **Contractual Milestones** |  | 2025-12-23 | 2027-02-23 |  |  |  |
| MS-CS-PS |  | Project Commencement Date ( Site Handover ) | 0d | 2025-12-23 A | 2025-12-23 A |  | 100% |  |
| MS-CF-EBL |  | Completion of Execution Plan and Baseline Schedule | 0d | 2026-01-18 A | 2026-01-18 A | PRE-CON-MDC-20 FF, PRE-CON-MDC-10 FF, PRE-CON-MDC-20 | 100% |  |
| MS-CF-MOB |  | Completion of Mobilization and Site Preperation Works | 0d | 2026-01-18 A | 2026-01-18 A | MOB-30 FF, MOB-20 FF, MOB-80 FF, MOB-40 FF, MOB-50 FF, MOB-60 FF, MOB-10 FF, MOB-70 FF, PRE-CON-MDC-10 FF, PRE-CON-MDC-20 FF, PRE-CON-MDC-30 FF, PRE-CON-MDC-40 FF, PRE-CON-MDC-50 FF, PRE-CON-MDC-60 FF, PRE-CON-MDC-70 FF, PRE-CON-MDC-80 FF, MOB-30 | 100% |  |
| MS-CF-ENG |  | Completion of Submitting and Approval of Shopdrwing and Material | 0d | 2026-07-13 | 2026-07-13 | PRE-CON-MDC-30 FF, PRE-CON-MDC-40 FF, PRE-CON-MDC-50 FF, PRE-CON-MDC-60 FF, PRE-CON-MDC-70 FF, PRE-CON-MDC-80 FF, ENG-SH-RD-A-110 FF, ENG-SH-HS-A-110 FF, ENG-SH-TSB-A-100 FF, ENG-SH-MRK-A-110 FF, ENG-SH-SW-ML-A-110 FF, ENG-SH-SD-ML-A-110 FF, ENG-SH-SD-CB-A-110 FF, ENG-SH-PW-ML-A-110 FF, ENG-SH-PW-FH-A-110 FF, ENG-SH-IR-ML-A-110 FF, ENG-SH-TSE-ML-A-120 FF, ENG-SH-MV-A-110 FF, ENG-SH-LV-A-120 FF, ENG-SH-SL-A-110 FF, ENG-SH-MSN-A-120 FF, ENG-SH-TE-A-110 FF, ENG-SH-CTV-A-110 FF, ENG-SH-SPS-A-160 FF, ENG-SH-LS-A-170 FF, ENG-SH-DPO-A-120 FF, ENG-SH-ST-A-180 FF, ENG-SH-GR-A-190 FF, ENG-SH-GR-A-200_R FF, ENG-MT-RD-A-100 FF, ENG-MT-RD-A-110 FF, ENG-MT-RD-A-120 FF, ENG-MT-RD-A-130 FF, ENG-MT-RD-A-140 FF, ENG-MT-RD-A-150 FF, ENG-MT-TS-A-100 FF, ENG-MT-TS-A-110 FF, ENG-MT-IR-ML-A-140 FF, ENG-MT-IR-ML-A-150 FF, ENG-MT-SW-ML-A-100 FF, ENG-MT-SW-ML-A-110 FF, ENG-MT-SW-TF-A-100 FF, ENG-MT-SD-ML-A-100 FF, ENG-MT-SD-ML-A-110 FF, ENG-MT-SD-CB-A-100 FF, ENG-MT-SD-CB-A-110 FF, ENG-MT-SD-TF-A-100 FF, ENG-MT-SD-TF-A-110 FF, ENG-MT-PW-ML-A-100 FF, ENG-MT-PW-ML-A-110 FF, ENG-MT-PW-FH-A-100 FF, ENG-MT-PW-TF-A-100 FF, ENG-MT-IR-ML-A-100 FF, ENG-MT-IR-ML-A-110 FF, ENG-MT-IR-ML-A-120 FF, ENG-MT-IR-ML-A-130 FF, ENG-MT-MV-ML-A-100 FF, ENG-MT-MV-TF-A-100 FF, ENG-MT-SL-ML-A-100 FF, ENG-MT-SL-A-100 FF, ENG-MT-SL-A-110 FF, ENG-MT-SL-A-120 FF, ENG-MT-SL-DB-A-100 FF, ENG-MT-SL-TF-A-100 FF, ENG-MT-SL-ES-A-100 FF, ENG-MT-TE-A-100 FF, ENG-MT-TE-A-110 FF, ENG-MT-CTV-A-100 FF, ENG-MT-PS-CV-A-150 FF, ENG-MT-SLS-CV-A-110 FF, ENG-MT-DPO-CV-A-110 FF, ENG-MT-TSE-CV-A-140 FF, ENG-MT-GR-CV-A-130 FF, ENG-MT-FE-CV-A-120 FF, ENG-MT-PL-CV-A-160 FF, ENG-MT-CTV-A-110 FF, ENG-MT-SPS-MC-A-110 FF, ENG-MT-TSE-MC-A-120 FF, PRE-CON-MDC-30 |  | 0d |
| MS-CF-IR |  | Completion of Construction Works for Irrigation Network | 0d | 2027-01-02 | 2027-01-02 | CO-IR-TF-160 FF, CO-IR-TF-160 |  | 34.5d |
| MS-CF-SD |  | Completion of Construction Works for Storm Drainage Network | 0d | 2027-01-03 | 2027-01-03 | CO-SD-ML-TF-100 FF, CO-SD-MH-TF-120 FF, CO-SD-CB-TF-160 FF, CO-SD-CB-TF-130 FF, CO-SD-CB-TF-110 FF, CO-SD-PO-110-P2 FF, CO-SD-PO-110-P1 FF, CO-SD-ML-TF-100 |  | 2d |
| MS-CF-MV |  | Completion of Construction Works for Medium Voltage Network | 0d | 2027-01-10 | 2027-01-10 | CO-MV-TF-220 FF, CO-MV-TF-220 |  | 8.5d |
| MS-CF-SW |  | Completion of Construction Works for Sewage Network | 0d | 2027-01-13 | 2027-01-13 | CO-SW-TF-110 FF, CO-SW-TF-210 FF, CO-SW-TF-110 |  | 2d |
| MS-CF-TSE |  | Completion of Construction Works for Treated Sewage Effluent Network | 0d | 2027-01-14 | 2027-01-14 | CO-TSE-TF-170 FF, CO-TSE-TF-170 |  | 23d |
| MS-CF-TE |  | Completion of Construction Works for Telecom Network | 0d | 2027-01-19 | 2027-01-19 | CO-TE-CTV-TF-140 FF, CO-TE-CTV-TF-140 |  | 0.5d |
| MS-CF-SL |  | Completion of Construction Works for Street Lighting Network | 0d | 2027-01-26 | 2027-01-26 | CO-SL-TF-230 FF, CO-SL-TF-220 FF, CO-SL-TF-230 |  | 7.5d |
| MS-CF-PW |  | Completion of Construction Works for Potable Water Network | 0d | 2027-01-26 | 2027-01-26 | CO-PW-TF-120 FF, CO-UB-IRT-250 FF, CO-PW-TF-100 FF, CO-PW-TF-120 |  | 13d |
| MS-CF-RD |  | Completion of Construction Works for Road Works | 0d | 2027-02-14 | 2027-02-14 | CO-RD-F-TS-120 FF, CO-RD-F-TS-110 FF, CO-RD-F-TS-100 FF, CO-RD-F-TS-120 |  | 6d |
| MS-CF-PF |  | Project Completion Date | 0d | 2027-02-23 | 2027-02-23 | A1100 FF, CO-SD-PO-110-P2 FF, MS-CF-PW FF, MS-CF-IR FF, MS-CF-SW FF, MS-CF-SD FF, MS-CF-TSE FF, MS-CF-MV FF, MS-CF-SL FF, MS-CF-TE FF, MS-CF-RD FF, MS-CF-EBL FF, MS-CF-ENG FF, CO-SU-FE-EP2-EL-870 FF, CO-SU-FE-EP2-AR-450 FF, T/C-CTV FF, HO-130 FF, HO-100 FF, HO-180 FF, HO-190 FF, HO-150 FF, HO-160 FF, HO-170 FF, HO-210 FF, HO-140 FF, HO-230 FF, HO-250 FF, CO-LS-PL-180 FF, T/C-IR FF, T/C-RD FF, T/C-SD FF, T/C-DPO FF, CO-SD-ML-130 FF, CO-SD-MH-220 FF, CO-SD-CB-170 FF, CO-SD-ML-160 FF, CO-SD-MH-260 FF, CO-SD-CB-200 FF, CO-SD-CB-TF-110 FF, CO-SD-CB-TF-130 FF, CO-SD-CB-TF-160 FF, CO-SD-MH-TF-120 FF, CO-SD-MH-TF-210 FF, CO-SD-ML-TF-100 FF, T/C-TSE-10 FF, T/C-TE FF, T/C-MV FF, T/C-SL FF, T/C-SW FF, T/C-PW FF, A1100 |  | -0.15d |
|  | MOB | **Preliminaries and Mobilization Works** |  | 2025-12-23 | 2026-01-26 |  |  |  |
|  | MOB | **Mobilization Works** |  | 2025-12-23 | 2026-01-26 |  |  |  |
| MOB-20 |  | Project Site Layout Plan Approval | 6.25d | 2025-12-23 A | 2025-12-29 A | MS-CS-PS SS, MOB-30 SS | 100% |  |
| MOB-30 |  | Supply & Install of Project Supervision Offices | 29d | 2025-12-23 A | 2026-01-26 A | MS-CS-PS SS | 100% |  |
| MOB-80 |  | Construction Site Access Roads | 29d | 2025-12-23 A | 2026-01-26 A | MOB-20 SS, MS-CS-PS SS | 100% |  |
| MOB-90 |  | Site Surveying Work | 30d | 2025-12-23 A | 2026-01-26 A | MS-CS-PS SS | 100% |  |
| MOB-10 |  | Clear and Grub for Offices and Access Roads | 23d | 2025-12-31 A | 2026-01-26 A | MOB-60 SS, MS-CS-PS SS | 100% |  |
| MOB-40 |  | Construction Project Store | 23d | 2025-12-31 A | 2026-01-26 A | MOB-30 SS+7d, MS-CS-PS SS | 100% |  |
| MOB-50 |  | Mobilization of Major Manpower | 23.25d | 2025-12-31 A | 2026-01-26 A | MOB-40 SS+10d, MS-CS-PS SS | 100% |  |
| MOB-60 |  | Mobilization of Major Equipments | 23.25d | 2025-12-31 A | 2026-01-26 A | MOB-50 SS, MS-CS-PS SS | 100% |  |
| MOB-70 |  | Installation Project Sign Board | 12.75d | 2026-01-12 A | 2026-01-26 A | MOB-10 SS+10d, MS-CS-PS SS | 100% |  |
|  | 1 | **Project Main Documents From The Contractor** |  | 2025-12-23 | 2026-01-18 |  |  |  |
| PRE-CON-MDC-10 |  | Submission Project Execution Plan | 23.25d | 2025-12-23 A | 2026-01-18 A | MS-CS-PS SS | 100% |  |
| PRE-CON-MDC-20 |  | Submission Project Baseline Schedule | 23.25d | 2025-12-23 A | 2026-01-18 A | MS-CS-PS SS | 100% |  |
| PRE-CON-MDC-30 |  | Submission Project Health & Safety Plan | 23.25d | 2025-12-23 A | 2026-01-18 A | MS-CS-PS SS | 100% |  |
| PRE-CON-MDC-40 |  | Submission Project Quality Control Plan | 23.25d | 2025-12-23 A | 2026-01-18 A | MS-CS-PS SS | 100% |  |
| PRE-CON-MDC-50 |  | Submission Project Surveying Report | 23.25d | 2025-12-23 A | 2026-01-18 A | MS-CS-PS SS, MOB-90 SS, MOB-90 FF | 100% |  |
| PRE-CON-MDC-60 |  | Submission Project Geotechnical Soil Report | 23.25d | 2025-12-23 A | 2026-01-18 A | MS-CS-PS SS | 100% |  |
| PRE-CON-MDC-70 |  | Submission Project Environmental Plan | 23.25d | 2025-12-23 A | 2026-01-18 A | MS-CS-PS SS | 100% |  |
| PRE-CON-MDC-80 |  | Submission Project Organization Chart and Communications Plan | 23.25d | 2025-12-23 A | 2026-01-18 A | MS-CS-PS SS | 100% |  |
|  | ENG | **Engineering Works** |  | 2026-01-06 | 2026-07-13 |  |  |  |
|  | SD | **Shop Drawings** |  | 2026-01-17 | 2026-07-13 |  |  |  |
|  | INF | **Infrastructure Networks** |  | 2026-01-17 | 2026-07-13 |  |  |  |
|  | RD | **Road Works** |  | 2026-01-17 | 2026-07-13 |  |  |  |
|  | 1 | **Road Pavement Works** |  | 2026-01-17 | 2026-07-04 |  |  |  |
|  | 1 | **Submittal** |  | 2026-01-17 | 2026-01-19 |  |  |  |
| ENG-SH-RD-S-100 |  | Submission Shop Drawings for Plan and Profile of Road Works | 3.25d | 2026-01-17 A | 2026-01-19 A | MS-CS-PS SS+7d | 100% |  |
| ENG-SH-RD-S-110 |  | Submission Shop Drawings for Roads Typical Sections and Pavement Details | 3.25d | 2026-01-17 A | 2026-01-19 A | MS-CS-PS SS+7d | 100% |  |
|  | 2 | **Approval** |  | 2026-01-19 | 2026-07-04 |  |  |  |
| ENG-SH-RD-A-100 |  | Approval Shop Drawings for Plan and Profile of Road Works | 13.25d | 2026-01-19 A | 2026-02-02 A | ENG-SH-RD-S-100 | 100% |  |
| ENG-SH-RD-A-110 |  | Approval Shop Drawings for Roads Typical Sections and Pavement Details | 10d | 2026-06-23 | 2026-07-04 | ENG-SH-RD-S-110 |  | 7.5d |
|  | 10 | **Pavement Works** |  | 2026-06-23 | 2026-07-01 |  |  |  |
|  | 1 | **Submittal** |  | 2026-06-23 | 2026-06-27 |  |  |  |
| ENG-SH-HS-S-100 |  | Submission Shop Drawings for Hardscaping (Curbstone& Interlock) Works | 3.5d | 2026-06-23 | 2026-06-27 | MS-CS-PS SS, ENG-SH-RD-S-100 SS |  | 0d |
|  | 2 | **Approval** |  | 2026-06-27 | 2026-07-01 |  |  |  |
| ENG-SH-HS-A-110 |  | Approval Shop Drawings for Hardscaping (Curbstone& Interlock) Works | 4d | 2026-06-27 | 2026-07-01 | ENG-SH-HS-S-100 |  | 0d |
|  | 11 | **Traffic Sign Boards and Road Marking** |  | 2026-06-27 | 2026-07-13 |  |  |  |
|  | 1 | **Submittal** |  | 2026-06-27 | 2026-07-12 |  |  |  |
| ENG-SH-TSB-S-100 |  | Submission Shop Drawings for Traffic Signs Boards | 6d | 2026-06-27 | 2026-07-04 | MS-CS-PS SS, ENG-SH-HS-A-110 SS |  | 7d |
| ENG-SH-MRK-S-110 |  | Submission Shop Drawings for Pavement Markings | 6d | 2026-07-05 | 2026-07-12 | MS-CS-PS SS, ENG-SH-HS-A-110 SS+7d |  | 0d |
|  | 2 | **Approval** |  | 2026-06-27 | 2026-07-13 |  |  |  |
| ENG-SH-TSB-A-100 |  | Approval Shop Drawings for Traffic Signs Boards | 7d | 2026-06-27 | 2026-07-05 | ENG-SH-TSB-S-100 SS, ENG-SH-TSB-S-100 FF |  | 7d |
| ENG-SH-MRK-A-110 |  | Approval Shop Drawings for Pavement Markings | 7d | 2026-07-05 | 2026-07-13 | ENG-SH-MRK-S-110 SS, ENG-SH-MRK-S-110 FF |  | 0d |
|  | SW | **Sewage Network** |  | 2026-01-17 | 2026-06-30 |  |  |  |
|  | 1 | **Main Line Sections** |  | 2026-01-17 | 2026-06-30 |  |  |  |
|  | 1 | **Submittal** |  | 2026-01-17 | 2026-01-18 |  |  |  |
| ENG-SH-SW-ML-S-100 |  | Submission Shop Drawings for Main Line and Manholes of Sewage Network | 2.25d | 2026-01-17 A | 2026-01-18 A | MS-CS-PS SS, ENG-SH-RD-S-100, ENG-SH-RD-S-110 SS | 100% |  |
|  | 2 | **Approval** |  | 2026-06-23 | 2026-06-30 |  |  |  |
| ENG-SH-SW-ML-A-110 |  | Approval Shop Drawings for Main Line and Manholes of Sewage Network | 7d | 2026-06-23 | 2026-06-30 | ENG-SH-SW-ML-S-100 |  | 5.5d |
|  | ST | **Storm Drainage Network** |  | 2026-01-17 | 2026-07-06 |  |  |  |
|  | 1 | **Main Line Sections** |  | 2026-01-17 | 2026-05-31 |  |  |  |
|  | 1 | **Submittal** |  | 2026-01-17 | 2026-01-18 |  |  |  |
| ENG-SH-SD-ML-S-100 |  | Submission Shop Drawings for Main Line and Manholes of Storm Drainage Network | 2.25d | 2026-01-17 A | 2026-01-18 A | MS-CS-PS SS, ENG-SH-SW-ML-S-100 SS | 100% |  |
|  | 2 | **Approval** |  | 2026-05-16 | 2026-05-31 |  |  |  |

| ID | WBS | Task | Duration | Start | Finish | Predecessors | Complete | Total float |
| --- | --- | --- | --- | --- | --- | --- | --- | --- |
| ENG-SH-SD-ML-A-110 |  | Approval Shop Drawings for Main Line and Manholes of Storm Drainage Network | 7d | 2026-05-16 A | 2026-05-31 A | ENG-SH-SD-ML-S-100 | 100% |  |
|  | 2 | **Catch Basin Sections** |  | 2026-01-17 | 2026-07-06 |  |  |  |
|  | 1 | **Submittal** |  | 2026-01-17 | 2026-06-28 |  |  |  |
| ENG-SH-SD-CB-S-100 |  | Submission Shop Drawings for Secondary Line and Catch Basin of Storm Drainage Network(Completed) | 115.25d | 2026-01-17 A | 2026-06-15 A | MS-CS-PS SS, ENG-SH-SD-ML-S-100 SS | 100% |  |
| ENG-SH-SD-CB-S-100_R |  | Submission Shop Drawings for Secondary Line and Catch Basin of Storm Drainage Network(Remaining) | 4.5d | 2026-06-23 | 2026-06-28 | MS-CS-PS SS, ENG-SH-SD-ML-S-100 SS, ENG-SH-SD-CB-S-100 |  | 0.75d |
|  | 2 | **Approval** |  | 2026-06-28 | 2026-07-06 |  |  |  |
| ENG-SH-SD-CB-A-110 |  | Approval Shop Drawings for Secondary Line and Catch Basin of Storm Drainage Network | 7d | 2026-06-28 | 2026-07-06 | ENG-SH-SD-CB-S-100_R |  | 6d |
|  | PW | **Potable Water Network** |  | 2026-01-18 | 2026-07-06 |  |  |  |
|  | 1 | **Main Line Sections** |  | 2026-01-18 | 2026-06-30 |  |  |  |
|  | 1 | **Submittal** |  | 2026-01-18 | 2026-01-21 |  |  |  |
| ENG-SH-PW-ML-S-100 |  | Submission Shop Drawings for Main Line and Valve Chambers of Potable Water Network | 4.25d | 2026-01-18 A | 2026-01-21 A | MS-CS-PS SS, ENG-SH-SD-ML-S-100 SS | 100% |  |
|  | 2 | **Approval** |  | 2026-06-23 | 2026-06-30 |  |  |  |
| ENG-SH-PW-ML-A-110 |  | Approval Shop Drawings for Main Line and Valve Chambers of Potable Water Network | 7d | 2026-06-23 | 2026-06-30 | ENG-SH-PW-ML-S-100 |  | 8.5d |
|  | 2 | **Fire Hydrant** |  | 2026-06-23 | 2026-07-06 |  |  |  |
|  | 1 | **Submittal** |  | 2026-06-23 | 2026-06-28 |  |  |  |
| ENG-SH-PW-FH-S-100 |  | Submission Shop Drawings for Fire Hydrant Network | 5d | 2026-06-23 | 2026-06-28 | MS-CS-PS SS, ENG-SH-PW-ML-S-100 SS |  | 5.5d |
|  | 2 | **Approval** |  | 2026-06-29 | 2026-07-06 |  |  |  |
| ENG-SH-PW-FH-A-110 |  | Approval Shop Drawings for Fire Hydrant Network | 7d | 2026-06-29 | 2026-07-06 | ENG-SH-PW-FH-S-100 |  | 5.5d |
|  | IR | **Irrigation Network** |  | 2026-06-23 | 2026-07-07 |  |  |  |
|  | 1 | **Main Line Sections** |  | 2026-06-23 | 2026-07-07 |  |  |  |
|  | 1 | **Submittal** |  | 2026-06-23 | 2026-06-29 |  |  |  |
| ENG-SH-IR-ML-S-100 |  | Submission Shop Drawings for Main Line and Valves & Bulbblers and Sprinklers of Irrigation Network | 6d | 2026-06-23 | 2026-06-29 | MS-CS-PS SS, ENG-SH-PW-ML-S-100 SS |  | 4.5d |
|  | 2 | **Approval** |  | 2026-06-30 | 2026-07-07 |  |  |  |
| ENG-SH-IR-ML-A-110 |  | Approval Shop Drawings for Main Line and Valves & Bulbblers and Sprinklers of Irrigation Network | 7d | 2026-06-30 | 2026-07-07 | ENG-SH-IR-ML-S-100 |  | 4.5d |
|  | TSE | **Treated Sewage Effluent Network** |  | 2026-06-23 | 2026-07-07 |  |  |  |
|  | 1 | **Main Line Sections** |  | 2026-06-23 | 2026-07-07 |  |  |  |
|  | 1 | **Submittal** |  | 2026-06-23 | 2026-06-29 |  |  |  |
| ENG-SH-TSE-ML-S-110 |  | Submission Shop Drawings for Main Line Treated Sewage Effluent Network | 6d | 2026-06-23 | 2026-06-29 | MS-CS-PS SS, ENG-SH-IR-ML-S-100 SS |  | 4.5d |
|  | 2 | **Approval** |  | 2026-06-30 | 2026-07-07 |  |  |  |
| ENG-SH-TSE-ML-A-120 |  | Approval Shop Drawings for Main Line Treated Sewage Effluent Network | 7d | 2026-06-30 | 2026-07-07 | ENG-SH-TSE-ML-S-110 |  | 4.5d |
|  | MV | **Medium Voltage Network** |  | 2026-01-17 | 2026-07-07 |  |  |  |
|  | 1 | **Submittal** |  | 2026-01-17 | 2026-01-22 |  |  |  |
| ENG-SH-MV-S-100 |  | Submission Shop Drawings for Medium Voltage Network | 6.25d | 2026-01-17 A | 2026-01-22 A | MS-CS-PS SS, MS-CS-PS | 100% |  |
|  | 2 | **Approval** |  | 2026-06-30 | 2026-07-07 |  |  |  |
| ENG-SH-MV-A-110 |  | Approval Shop Drawings for Medium Voltage Network | 7d | 2026-06-30 | 2026-07-07 | ENG-SH-MV-S-100, ENG-SH-IR-ML-S-100 |  | 4.5d |
|  | LV | **Low Voltage Network** |  | 2026-06-23 | 2026-07-07 |  |  |  |
|  | 1 | **Submittal** |  | 2026-06-23 | 2026-06-29 |  |  |  |
| ENG-SH-LV-S-110 |  | Submission Shop Drawings for Low Voltage Network | 6d | 2026-06-23 | 2026-06-29 | MS-CS-PS SS, ENG-SH-IR-ML-S-100 SS |  | 4.5d |
|  | 2 | **Approval** |  | 2026-06-30 | 2026-07-07 |  |  |  |
| ENG-SH-LV-A-120 |  | Approval Shop Drawings for Low Voltage Network | 7d | 2026-06-30 | 2026-07-07 | ENG-SH-LV-S-110 |  | 4.5d |
|  | SL | **Street Lighting Network** |  | 2026-01-17 | 2026-07-02 |  |  |  |
|  | 1 | **Submittal** |  | 2026-01-17 | 2026-06-29 |  |  |  |
| ENG-SH-SL-S-100 |  | Submission Shop Drawings for Street Lighting Network(Completed) | 115.25d | 2026-01-17 A | 2026-06-15 A | MS-CS-PS SS, ENG-SH-MV-S-100 SS+4d | 100% |  |
| ENG-SH-SL-S-100_R |  | Submission Shop Drawings for Street Lighting Network(Remaining) | 6d | 2026-06-23 | 2026-06-29 | MS-CS-PS SS, ENG-SH-MV-S-100 SS+4d, ENG-SH-SL-S-100 |  | 8.5d |
|  | 2 | **Approval** |  | 2026-06-25 | 2026-07-02 |  |  |  |
| ENG-SH-SL-A-110 |  | Approval Shop Drawings for Street Lighting Network | 7d | 2026-06-25 | 2026-07-02 | ENG-SH-SL-S-100_R SS+2d, ENG-SH-SL-S-100_R FF |  | 8.5d |
|  | TL | **Telecom Network** |  | 2026-06-29 | 2026-07-07 |  |  |  |
|  | 1 | **Submittal** |  | 2026-06-30 | 2026-07-06 |  |  |  |
| ENG-SH-CTV-S-100 |  | Submission Shop Drawings for CCTV Complete System | 6d | 2026-06-30 | 2026-07-06 | MS-CS-PS SS, ENG-SH-TE-S-100 SS, ENG-SH-TE-S-100 FF |  | 4.5d |
| ENG-SH-MSN-S-110 |  | Submission Shop Drawings for MSN System | 6d | 2026-06-30 | 2026-07-06 | MS-CS-PS SS, ENG-SH-CTV-S-100 SS |  | 5.5d |
| ENG-SH-TE-S-100 |  | Submission Shop Drawings for Telecom Network | 6d | 2026-06-30 | 2026-07-06 | MS-CS-PS SS, ENG-SH-LV-S-110 |  | 4.5d |
|  | 2 | **Approval** |  | 2026-06-29 | 2026-07-07 |  |  |  |
| ENG-SH-MSN-A-120 |  | Approval Shop Drawings for MSN System | 7d | 2026-06-29 | 2026-07-06 | ENG-SH-MSN-S-110 FF, ENG-SH-MSN-S-110 |  | 5.5d |
| ENG-SH-CTV-A-110 |  | Approval Shop Drawings for CCTV Complete System | 7d | 2026-06-30 | 2026-07-07 | ENG-SH-CTV-S-100 SS |  | 4.5d |
| ENG-SH-TE-A-110 |  | Approval Shop Drawings for Telecom Network | 7d | 2026-06-30 | 2026-07-07 | ENG-SH-TE-S-100 SS, ENG-SH-TE-S-100 FF |  | 4.5d |
|  | 1 | **Superstructure Works** |  | 2026-01-17 | 2026-07-07 |  |  |  |
|  | PS | **Pump Stations** |  | 2026-01-17 | 2026-07-02 |  |  |  |
|  | 1 | **Submittal** |  | 2026-01-17 | 2026-06-30 |  |  |  |
| ENG-SH-SPS-S-150 |  | Submission Shop Drawings Package for Sewage Pump Stations(Completed) | 115.25d | 2026-01-17 A | 2026-06-15 A | MS-CS-PS SS | 100% |  |
| ENG-SH-SPS-S-150_R |  | Submission Shop Drawings Package for Sewage Pump Stations(Remaining) | 6d | 2026-06-24 | 2026-06-30 | ENG-SH-PW-ML-A-110 FF, MS-CS-PS SS, ENG-SH-SPS-S-150 |  | 8.5d |
|  | 2 | **Approval** |  | 2026-06-27 | 2026-07-02 |  |  |  |
| ENG-SH-SPS-A-160 |  | Approval Shop Drawings Package for Sewage Pump Stations | 6d | 2026-06-27 | 2026-07-02 | ENG-SH-SPS-S-150_R SS+2d, ENG-SH-SPS-S-150_R FF |  | 8.5d |
|  | LS | **Lift Station** |  | 2026-01-17 | 2026-07-02 |  |  |  |
|  | 1 | **Submittal** |  | 2026-01-17 | 2026-06-30 |  |  |  |
| ENG-SH-LS-S-160 |  | Submission Shop Drawings Package for Lift Stations(Completed) | 115.25d | 2026-01-17 A | 2026-06-15 A | MS-CS-PS SS | 100% |  |
| ENG-SH-LS-S-160_R |  | Submission Shop Drawings Package for Lift Stations(Remaining) | 6d | 2026-06-24 | 2026-06-30 | ENG-SH-SW-ML-A-110 FF, MS-CS-PS SS, ENG-SH-LS-S-160 |  | 5.5d |
|  | 2 | **Approval** |  | 2026-06-27 | 2026-07-02 |  |  |  |
| ENG-SH-LS-A-170 |  | Approval Shop Drawings Package for Lift Stations | 6d | 2026-06-27 | 2026-07-02 | ENG-SH-LS-S-160_R SS+2d |  | 8.5d |
|  | PO | **Storm Drainage Ponds** |  | 2026-06-28 | 2026-07-06 |  |  |  |
|  | 1 | **Submittal** |  | 2026-06-28 | 2026-07-05 |  |  |  |

| ID | WBS | Task | Duration | Start | Finish | Predecessors | Complete | Total float |
| --- | --- | --- | --- | --- | --- | --- | --- | --- |
| ENG-SH-DPO-S-110 |  | Submission Shop Drawings Package for Storm Drainage Ponds | 6d | 2026-06-28 | 2026-07-05 | MS-CS-PS SS, ENG-SH-SD-ML-A-110 SS, ENG-SH-SD-CB-A-110 SS |  | 6d |
|  | 2 | **Approval** |  | 2026-06-29 | 2026-07-06 |  |  |  |
| ENG-SH-DPO-A-120 |  | Approval Shop Drawings Package for Storm Drainage Ponds | 6d | 2026-06-29 | 2026-07-06 | ENG-SH-DPO-S-110 SS+1d, ENG-SH-DPO-S-110 FF |  | 6d |
|  | ST | **Storage Tank (TSE)** |  | 2026-06-30 | 2026-07-07 |  |  |  |
|  | 1 | **Submittal** |  | 2026-06-30 | 2026-07-06 |  |  |  |
| ENG-SH-ST-S-170 |  | Submission Shop Drawings Package for Storage Tank TSE | 6d | 2026-06-30 | 2026-07-06 | MS-CS-PS SS, ENG-SH-TSE-ML-A-120 SS |  | 4.5d |
|  | 2 | **Approval** |  | 2026-07-01 | 2026-07-07 |  |  |  |
| ENG-SH-ST-A-180 |  | Approval Shop Drawings Package for Storage Tank TSE | 6d | 2026-07-01 | 2026-07-07 | ENG-SH-ST-S-170 SS+1d, ENG-SH-ST-S-170 FF |  | 4.5d |
|  | GR | **Gaurd Room** |  | 2026-06-23 | 2026-06-29 |  |  |  |
| ENG-SH-GR-A-190 |  | Approval Shop Drawings Package for Gaurd Room | 6d | 2026-06-23 | 2026-06-29 | ENG-SH-GR-S-180 SS, ENG-SH-GR-S-180 FF |  | 11.5d |
|  | 1 | **Submittal** |  | 2026-06-23 | 2026-06-29 |  |  |  |
| ENG-SH-GR-S-180 |  | Submission Shop Drawings Package for Gaurd Room | 6d | 2026-06-23 | 2026-06-29 | MS-CS-PS SS, ENG-SH-RD-A-100 SS+7d |  | 11.5d |
|  | 2 | **Approval** |  |  |  |  |  |  |
|  | FE | **Fence** |  | 2026-01-29 | 2026-06-28 |  |  |  |
|  | 1 | **Submittal** |  | 2026-01-29 | 2026-06-27 |  |  |  |
| ENG-SH-GR-S-190 |  | Submission Shop Drawings Package for Fence(Completed) | 104.25d | 2026-01-29 A | 2026-06-15 A | MS-CS-PS SS, ENG-SH-RD-A-100 SS | 100% |  |
| ENG-SH-GR-S-190_R |  | Submission Shop Drawings Package for Fence(Remaining) | 3.48d | 2026-06-23 | 2026-06-27 | MS-CS-PS SS, ENG-SH-RD-A-100 SS, ENG-SH-GR-S-190 |  | 13.3d |
|  | 2 | **Approval** |  | 2026-01-29 | 2026-06-28 |  |  |  |
| ENG-SH-GR-A-200 |  | Approval Shop Drawings Package for Fence(Completed) | 104.25d | 2026-01-29 A | 2026-06-15 A | ENG-SH-GR-S-190 SS | 100% |  |
| ENG-SH-GR-A-200_R |  | Approval Shop Drawings Package for Fence(Remaining) | 4.2d | 2026-06-23 | 2026-06-28 | ENG-SH-GR-S-190_R SS, ENG-SH-GR-A-200, ENG-SH-GR-S-190_R FF |  | 13.3d |
|  | SD11 | **Material Submittals and Approvals** |  | 2026-01-06 | 2026-07-12 |  |  |  |
|  | 2 | **Short Lead Time Items** |  | 2026-01-06 | 2026-07-12 |  |  |  |
|  | INF | **Infrastructure Networks** |  | 2026-01-06 | 2026-07-12 |  |  |  |
|  | 10 | **Road Works** |  | 2026-01-10 | 2026-03-11 |  |  |  |
|  | MS | **Submission of Material** |  | 2026-01-10 | 2026-03-07 |  |  |  |
|  | 1 | **Roads Works** |  | 2026-01-10 | 2026-01-19 |  |  |  |
| ENG-MT-RD-S-100 |  | Material Submittal for Subgrade of Road Works | 9.25d | 2026-01-10 A | 2026-01-19 A | ENG-SH-RD-S-100 | 100% |  |
| ENG-MT-RD-S-110 |  | Material Submittal for Aggregate Base Course of Road Works | 9.25d | 2026-01-10 A | 2026-01-19 A | ENG-SH-RD-S-100 | 100% |  |
| ENG-MT-RD-S-120 |  | Material Submittal for Prime Coat of Road Works | 9.25d | 2026-01-10 A | 2026-01-19 A | ENG-SH-RD-S-100 | 100% |  |
| ENG-MT-RD-S-130 |  | Material Submittal for Bituminous Base & Wearing Courses of Road Works | 9.25d | 2026-01-10 A | 2026-01-19 A | ENG-SH-RD-S-100 | 100% |  |
|  | 10 | **Pavement Works** |  | 2026-01-11 | 2026-01-19 |  |  |  |
| ENG-MT-RD-S-140 |  | Material Submittal for Interlock Tiles of Landscaping | 8.25d | 2026-01-11 A | 2026-01-19 A | ENG-MT-RD-S-130 SS | 100% |  |
| ENG-MT-RD-S-150 |  | Material Submittal for Curbstones of Landscaping | 8.25d | 2026-01-11 A | 2026-01-19 A | ENG-MT-RD-S-130 SS | 100% |  |
|  | 11 | **Traffic Signs Boards and Roads Marking** |  | 2026-02-26 | 2026-03-07 |  |  |  |
| ENG-MT-TS-S-100 |  | Material Submittal for Traffic Signs Boards of Road Works | 1.25d | 2026-02-26 A | 2026-02-28 A | MS-CS-PS | 100% |  |
| ENG-MT-TS-S-110 |  | Material Submittal for Road Markings of Road Works | 6d | 2026-03-01 A | 2026-03-07 A | ENG-SH-RD-A-100 | 100% |  |
|  | NA | **Approval of Material** |  | 2026-01-18 | 2026-03-11 |  |  |  |
|  | 1 | **Road Works** |  | 2026-01-18 | 2026-01-20 |  |  |  |
| ENG-MT-RD-A-100 |  | Material Approval for Subgrade of Road Works | 0d | 2026-01-18 A | 2026-01-20 A | ENG-MT-RD-S-100 | 100% |  |
| ENG-MT-RD-A-110 |  | Material Approval for Aggregate Base Course of Road Works | 0d | 2026-01-18 A | 2026-01-20 A | ENG-MT-RD-S-110 | 100% |  |
| ENG-MT-RD-A-120 |  | Material Approval for Prime Coat of Road Works | 0d | 2026-01-18 A | 2026-01-20 A | ENG-MT-RD-S-120 | 100% |  |
| ENG-MT-RD-A-130 |  | Material Approval for Bituminous Base & Wearing Courses of Road Works | 0d | 2026-01-18 A | 2026-01-20 A | ENG-MT-RD-S-130 | 100% |  |
|  | 2 | **Pavement Works** |  | 2026-01-18 | 2026-01-20 |  |  |  |
| ENG-MT-RD-A-140 |  | Material Approval of Interlock Tiles for Landscaping | 0d | 2026-01-18 A | 2026-01-20 A | ENG-MT-RD-S-140 | 100% |  |
| ENG-MT-RD-A-150 |  | Material Approval of Curbstones for Landscaping | 0d | 2026-01-18 A | 2026-01-20 A | ENG-MT-RD-S-150 | 100% |  |
|  | 3 | **Traffic Signs Boards and Roads Marking** |  | 2026-02-28 | 2026-03-11 |  |  |  |
| ENG-MT-TS-A-100 |  | Material Approval for Traffic Signs Boards of Road Works | 0d | 2026-02-28 A | 2026-03-02 A | ENG-MT-TS-S-100, MS-CS-PS | 100% |  |
| ENG-MT-TS-A-110 |  | Material Approval for Road Markings of Road Works | 0d | 2026-03-08 A | 2026-03-11 A | MS-CS-PS | 100% |  |
|  | 6 | **Softscape and Planting Works** |  | 2026-06-27 | 2026-07-12 |  |  |  |
|  | 1 | **Submission of Material** |  | 2026-06-27 | 2026-07-04 |  |  |  |
| ENG-MT-IR-ML-S-140 |  | Material Submittal for Softscape and Planting Works | 6d | 2026-06-27 | 2026-07-04 | ENG-SH-HS-A-110 SS |  | 1d |
| ENG-MT-IR-ML-S-150 |  | Material Submittal for Site Furnishings (Seating Bench,Stone Boulders and Gravel) | 6d | 2026-06-27 | 2026-07-04 | ENG-SH-HS-A-110 SS |  | 2d |
|  | 2 | **Approval of Material** |  | 2026-07-04 | 2026-07-12 |  |  |  |
| ENG-MT-IR-ML-A-140 |  | Material Approval for Softscape and Planting Works | 7d | 2026-07-04 | 2026-07-12 | ENG-MT-IR-ML-S-140, ENG-SH-HS-A-110 SS |  | 1d |
| ENG-MT-IR-ML-A-150 |  | Material Approval for Site Furnishings (Seating Bench,Stone Boulders and Gravel) | 6d | 2026-07-04 | 2026-07-11 | ENG-MT-IR-ML-S-150, ENG-SH-HS-A-110 SS |  | 2d |
|  | 2 | **Sewage Network** |  | 2026-01-11 | 2026-07-07 |  |  |  |
|  | MS | **Submission of Material** |  | 2026-01-11 | 2026-06-29 |  |  |  |
|  | 1 | **Main Line Sections** |  | 2026-01-11 | 2026-01-26 |  |  |  |
| ENG-MT-SW-ML-S-110 |  | Material Submittal for Main Line Pipes of Sewage Network | 14.25d | 2026-01-11 A | 2026-01-26 A | ENG-MT-RD-S-150 SS | 100% |  |
| ENG-MT-SW-ML-S-100 |  | Material Submittal for Manholes of Sewage Network | 5.25d | 2026-01-20 A | 2026-01-25 A | ENG-MT-RD-S-150 SS | 100% |  |
|  | 3 | **Testing and Finishes** |  | 2026-06-23 | 2026-06-29 |  |  |  |
| ENG-MT-SW-TF-S-100 |  | Material Submittal for Manhole Covers of Sewage Network | 6d | 2026-06-23 | 2026-06-29 | ENG-MT-RD-S-150 SS |  | 2d |
|  | MA | **Approval of Material** |  | 2026-01-21 | 2026-07-07 |  |  |  |
|  | 1 | **Main Line Sections** |  | 2026-01-21 | 2026-01-26 |  |  |  |
| ENG-MT-SW-ML-A-100 |  | Material Approval for Manholes of Sewage Network | 0d | 2026-01-21 A | 2026-01-26 A | ENG-MT-SW-ML-S-100 | 100% |  |
| ENG-MT-SW-ML-A-110 |  | Material Approval for Main Line Pipes of Sewage Network | 0d | 2026-01-22 A | 2026-01-25 A | ENG-MT-SW-ML-S-110 | 100% |  |
|  | 3 | **Testing and Finishes** |  | 2026-06-30 | 2026-07-07 |  |  |  |
| ENG-MT-SW-TF-A-100 |  | Material Approval for Manhole Covers of Sewage Network | 7d | 2026-06-30 | 2026-07-07 | ENG-MT-SW-TF-S-100 |  | 2d |
|  | 9 | **Storm Drainage Network** |  | 2026-01-06 | 2026-07-07 |  |  |  |
|  | MS | **Submission of Material** |  | 2026-01-06 | 2026-06-29 |  |  |  |

| ID | WBS | Task | Duration | Start | Finish | Predecessors | Complete | Total float |
| --- | --- | --- | --- | --- | --- | --- | --- | --- |
|  | 1 | **Main Line Sections** |  | 2026-01-06 | 2026-01-13 |  |  |  |
| ENG-MT-SD-ML-S-100 |  | Material Submittal for Manholes of Storm Drainage Network | 7.25d | 2026-01-06 A | 2026-01-13 A | ENG-SH-SD-ML-S-100 SS, ENG-SH-SD-ML-A-110 | 100% |  |
| ENG-MT-SD-ML-S-110 |  | Material Submittal for Main Line Pipes of Storm Drainage Network | 7.25d | 2026-01-06 A | 2026-01-13 A | ENG-SH-SD-ML-S-100 SS | 100% |  |
|  | 2 | **Catch Basin Sections** |  | 2026-01-06 | 2026-01-13 |  |  |  |
| ENG-MT-SD-CB-S-100 |  | Material Submittal for Catch Basins of Storm Drainage Network | 7.25d | 2026-01-06 A | 2026-01-13 A | ENG-SH-SD-ML-S-100 SS | 100% |  |
| ENG-MT-SD-CB-S-110 |  | Material Submittal for Catch Basin Pipes of Storm Drainage Network | 7.25d | 2026-01-06 A | 2026-01-13 A | ENG-SH-SD-ML-S-100 SS | 100% |  |
|  | 3 | **Testing and Finishes** |  | 2026-06-23 | 2026-06-29 |  |  |  |
| ENG-MT-SD-TF-S-100 |  | Material Submittal for Manhole Covers of Storm Drainage Network | 6d | 2026-06-23 | 2026-06-29 | ENG-SH-SD-ML-S-100 SS |  | 4.5d |
| ENG-MT-SD-TF-S-110 |  | Material Submittal for Catch Basin Covers of Storm Drainage Network | 6d | 2026-06-23 | 2026-06-29 | ENG-SH-SD-ML-S-100 SS |  | 4.5d |
|  | MA | **Approval of Material** |  | 2026-01-15 | 2026-07-07 |  |  |  |
|  | 1 | **Main Line Sections** |  | 2026-01-15 | 2026-01-19 |  |  |  |
| ENG-MT-SD-ML-A-100 |  | Material Approval for Manholes of Storm Drainage Network | 0d | 2026-01-15 A | 2026-01-19 A | ENG-MT-SD-ML-S-100 | 100% |  |
| ENG-MT-SD-ML-A-110 |  | Material Approval for Main Line Pipes of Storm Drainage Network | 0d | 2026-01-15 A | 2026-01-19 A | ENG-MT-SD-ML-S-110 | 100% |  |
|  | 2 | **Catch Basin Sections** |  | 2026-01-15 | 2026-01-19 |  |  |  |
| ENG-MT-SD-CB-A-100 |  | Material Approval for Catch Basins of Storm Drainage Network | 0d | 2026-01-15 A | 2026-01-19 A | ENG-MT-SD-CB-S-100 | 100% |  |
| ENG-MT-SD-CB-A-110 |  | Material Approval for Catch Basin Pipes of Storm Drainage Network | 0d | 2026-01-15 A | 2026-01-19 A | ENG-MT-SD-CB-S-110 | 100% |  |
|  | 3 | **Testing and Finishes** |  | 2026-06-30 | 2026-07-07 |  |  |  |
| ENG-MT-SD-TF-A-100 |  | Material Approval for Manhole Covers of Storm Drainage Network | 7d | 2026-06-30 | 2026-07-07 | ENG-MT-SD-TF-S-100 |  | 4.5d |
| ENG-MT-SD-TF-A-110 |  | Material Approval for Catch Basin Covers of Storm Drainage Network | 7d | 2026-06-30 | 2026-07-07 | ENG-MT-SD-TF-S-110 |  | 4.5d |
|  | 3 | **Potable Water Network** |  | 2026-01-24 | 2026-07-07 |  |  |  |
|  | MS | **Submission of Material** |  | 2026-01-24 | 2026-06-29 |  |  |  |
|  | 1 | **Main Line Sections** |  | 2026-01-24 | 2026-06-29 |  |  |  |
| ENG-MT-PW-ML-S-100 |  | Material Submittal for Main Line Pipes of Potable Water Network | 6d | 2026-01-24 A | 2026-01-25 A | ENG-SH-PW-ML-S-100 SS | 100% |  |
| ENG-MT-PW-ML-S-110 |  | Material Submittal for Main Line Valves of Potable Water Network | 6d | 2026-06-23 | 2026-06-29 | ENG-SH-PW-ML-S-100 SS |  | 4.5d |
|  | 3 | **Fire Hydrant** |  | 2026-06-23 | 2026-06-29 |  |  |  |
| ENG-MT-PW-FH-S-100 |  | Material Submittal for Fire Hydrant of Potable Water Network | 6d | 2026-06-23 | 2026-06-29 | ENG-SH-PW-ML-S-100 SS |  | 4.5d |
|  | 4 | **Testing and Finishes** |  | 2026-06-23 | 2026-06-29 |  |  |  |
| ENG-MT-PW-TF-S-100 |  | Material Submittal for Surface Box of Potable Water Network | 6d | 2026-06-23 | 2026-06-29 | ENG-SH-PW-ML-S-100 SS |  | 4.5d |
|  | MA | **Approval of Material** |  | 2026-01-25 | 2026-07-07 |  |  |  |
|  | 1 | **Main Line Sections** |  | 2026-01-25 | 2026-07-07 |  |  |  |
| ENG-MT-PW-ML-A-100 |  | Material Approval for Main Line Pipes of Potable Water Network | 7d | 2026-01-25 A | 2026-01-27 A | ENG-MT-PW-ML-S-100 | 100% |  |
| ENG-MT-PW-ML-A-110 |  | Material Approval for Valves of Potable Water Network | 7d | 2026-06-30 | 2026-07-07 | ENG-MT-PW-ML-S-110 |  | 4.5d |
|  | 3 | **Fire Hydrant** |  | 2026-06-30 | 2026-07-07 |  |  |  |
| ENG-MT-PW-FH-A-100 |  | Material Approval for Fire Hydrants of Potable Water Network | 7d | 2026-06-30 | 2026-07-07 | ENG-MT-PW-FH-S-100 |  | 4.5d |
|  | 4 | **Testing and Finishes** |  | 2026-06-30 | 2026-07-07 |  |  |  |
| ENG-MT-PW-TF-A-100 |  | Material Approval for Surface Box of Potable Water Network | 7d | 2026-06-30 | 2026-07-07 | ENG-MT-PW-TF-S-100 |  | 4.5d |
|  | 4 | **Irrigation Network** |  | 2026-01-06 | 2026-01-27 |  |  |  |
|  | MS | **Submission of Material** |  | 2026-01-06 | 2026-01-27 |  |  |  |
|  | 1 | **Main Line Pipes** |  | 2026-01-06 | 2026-01-27 |  |  |  |
| ENG-MT-IR-ML-S-100 |  | Material Submittal for Main Line Pipes of Irrigation Network | 19.25d | 2026-01-06 A | 2026-01-27 A | MS-CS-PS | 100% |  |
| ENG-MT-IR-ML-S-110 |  | Material Submittal for Main Line Valves of Irrigation Network | 19.25d | 2026-01-06 A | 2026-01-27 A | MS-CS-PS | 100% |  |
|  | MA | **Approval of Material** |  | 2026-01-18 | 2026-01-26 |  |  |  |
|  | 1 | **Main Line Pipes** |  | 2026-01-18 | 2026-01-26 |  |  |  |
| ENG-MT-IR-ML-A-100 |  | Material Approval for Main Line Pipes of Irrigation Network | 0d | 2026-01-18 A | 2026-01-24 A | ENG-MT-IR-ML-S-100 | 100% |  |
| ENG-MT-IR-ML-A-110 |  | Material Approval for Valves of Irrigation Network | 0d | 2026-01-24 A | 2026-01-26 A | ENG-MT-IR-ML-S-110 | 100% |  |
|  | 1 | **Treated Sewage Effluent (Tse)** |  | 2026-01-17 | 2026-02-16 |  |  |  |
|  | MS | **Submission of Material** |  | 2026-01-17 | 2026-02-04 |  |  |  |
|  | 1 | **Main Line Pipes** |  | 2026-01-17 | 2026-02-04 |  |  |  |
| ENG-MT-IR-ML-S-120 |  | Material Submittal for Main Line Pipes of Irrigation Network | 9.25d | 2026-01-17 A | 2026-01-26 A | MS-CS-PS | 100% |  |
| ENG-MT-IR-ML-S-130 |  | Material Submittal for Main Line Valves of Irrigation Network | 2.25d | 2026-02-03 A | 2026-02-04 A | MS-CS-PS | 100% |  |
|  | MA | **Approval of Material** |  | 2026-01-29 | 2026-02-16 |  |  |  |
|  | 1 | **Main Line Pipes** |  | 2026-01-29 | 2026-02-16 |  |  |  |
| ENG-MT-IR-ML-A-120 |  | Material Approval for Main Line Pipes of Irrigation Network | 0d | 2026-01-29 A | 2026-02-16 A | ENG-MT-IR-ML-S-120 | 100% |  |
| ENG-MT-IR-ML-A-130 |  | Material Approval for Valves of Irrigation Network | 0d | 2026-02-04 A | 2026-02-09 A | ENG-MT-IR-ML-S-130 | 100% |  |
|  | 5 | **Medium Voltage Network** |  | 2026-01-06 | 2026-07-07 |  |  |  |
|  | MS | **Submission of Material** |  | 2026-01-06 | 2026-06-29 |  |  |  |
|  | 1 | **Cabling Works** |  | 2026-01-06 | 2026-01-13 |  |  |  |
| ENG-MT-MV-ML-S-100 |  | Material Submittal for Medium Voltage Cables of Medium Voltage Network | 7.25d | 2026-01-06 A | 2026-01-13 A | ENG-SH-MV-S-100 SS | 100% |  |
|  | 3 | **Termination and Testing Works** |  | 2026-06-23 | 2026-06-29 |  |  |  |
| ENG-MT-MV-TF-S-100 |  | Material Submittal for Termination Kits of Medium Voltage Network | 6d | 2026-06-23 | 2026-06-29 | ENG-SH-MV-S-100 SS |  | 4.5d |
|  | MA | **Approval of Material** |  | 2026-01-14 | 2026-07-07 |  |  |  |
|  | 1 | **Cabling Works** |  | 2026-01-14 | 2026-01-20 |  |  |  |
| ENG-MT-MV-ML-A-100 |  | Material Approval for Medium Voltage Cables of Medium Voltage Network | 0d | 2026-01-14 A | 2026-01-20 A | ENG-MT-MV-ML-S-100, ENG-SH-MV-S-100 SS | 100% |  |
|  | 3 | **Termination and Testing Works** |  | 2026-06-30 | 2026-07-07 |  |  |  |
| ENG-MT-MV-TF-A-100 |  | Material Approval for Termination and Joints Kits of Medium Voltage Network | 7d | 2026-06-30 | 2026-07-07 | ENG-MT-MV-TF-S-100, ENG-SH-MV-S-100 |  | 4.5d |
|  | 7 | **Street Lighting Network** |  | 2026-01-06 | 2026-07-07 |  |  |  |
|  | MS | **Submission of Material** |  | 2026-01-06 | 2026-07-06 |  |  |  |
|  | 1 | **Cabling Works** |  | 2026-02-01 | 2026-02-08 |  |  |  |
| ENG-MT-SL-ML-S-100 |  | Material Submittal for Lighting Cables of Street Lighting Network | 6d | 2026-02-01 A | 2026-02-08 A | ENG-MT-MV-ML-S-100 SS | 100% |  |
|  | 2 | **Lighting Poles Works** |  | 2026-01-06 | 2026-01-19 |  |  |  |

| ID | WBS | Task | Duration | Start | Finish | Predecessors | Complete | Total float |
| --- | --- | --- | --- | --- | --- | --- | --- | --- |
| ENG-MT-SL-S-100 |  | Material Submittal for Lighting Poles Concrete Foundations of Street Lighting Network | 7.25d | 2026-01-06 A | 2026-01-13 A | ENG-MT-MV-ML-S-100 SS | 100% |  |
| ENG-MT-SL-S-110 |  | Material Submittal for Lighting Poles of Street Lighting Network | 7.25d | 2026-01-06 A | 2026-01-13 A | ENG-MT-MV-ML-S-100 SS | 100% |  |
| ENG-MT-SL-S-120 |  | Material Submittal for Lighting Fixtures of Street Lighting Network | 6d | 2026-01-15 A | 2026-01-19 A | ENG-MT-MV-ML-S-100 SS | 100% |  |
|  | 3 | **Distribution Panel Board** |  | 2026-02-18 | 2026-02-19 |  |  |  |
| ENG-MT-SL-DB-S-100 |  | Material Submittal for Lighting Distrubution Panel Boards of Street Lighting Network | 1.25d | 2026-02-18 A | 2026-02-19 A | ENG-MT-MV-ML-S-100 SS | 100% |  |
|  | 5 | **Termination and Testing Works** |  | 2026-06-23 | 2026-06-29 |  |  |  |
| ENG-MT-SL-TF-S-100 |  | Material Submittal for Fuse Boxes of Street Lighting Network | 6d | 2026-06-23 | 2026-06-29 | ENG-MT-MV-ML-S-100 SS |  | 0d |
| ENG-MT-SL-TF-S-110 |  | Material Submittal for Cable Lugs of Street Lighting Network | 6d | 2026-06-23 | 2026-06-29 | ENG-MT-MV-ML-S-100 SS |  | 11.5d |
|  | 4 | **Earthing System Works** |  | 2026-06-30 | 2026-07-06 |  |  |  |
| ENG-MT-SL-ES-S-100 |  | Material Submittal for Lighting Earthing of Street Lighting Network | 6d | 2026-06-30 | 2026-07-06 | ENG-MT-MV-ML-S-100 SS, ENG-MT-SL-TF-S-110, ENG-MT-SL-TF-A-110 SS |  | 11.5d |
|  | MA | **Approval of Material** |  | 2026-01-14 | 2026-07-07 |  |  |  |
|  | 1 | **Cabling Works** |  | 2026-02-04 | 2026-02-09 |  |  |  |
| ENG-MT-SL-ML-A-100 |  | Material Approval for Lighting Cables of Street Lighting Network | 0d | 2026-02-04 A | 2026-02-09 A | ENG-MT-MV-ML-S-100 | 100% |  |
|  | 2 | **Lighting Poles Works** |  | 2026-01-14 | 2026-01-25 |  |  |  |
| ENG-MT-SL-A-100 |  | Material Approval for Lighting Poles Concrete Foundations of Street Lighting Network | 10.25d | 2026-01-14 A | 2026-01-25 A | ENG-MT-SL-S-100 | 100% |  |
| ENG-MT-SL-A-110 |  | Material Approval for Lighting Poles of Street Lighting Network | 0d | 2026-01-14 A | 2026-01-25 A | ENG-MT-SL-S-110 | 100% |  |
| ENG-MT-SL-A-120 |  | Material Approval for Lighting Fixtures of Street Lighting Network | 0d | 2026-01-22 A | 2026-01-25 A | ENG-MT-MV-ML-S-100 | 100% |  |
|  | 3 | **Distribution Panel Board** |  | 2026-02-21 | 2026-03-23 |  |  |  |
| ENG-MT-SL-DB-A-100 |  | Material Approval for Distrubution Panel Boards of Street Lighting Network | 0d | 2026-02-21 A | 2026-03-23 A | ENG-MT-SL-DB-S-100 | 100% |  |
|  | 4 | **Earthing System Works** |  | 2026-06-30 | 2026-06-30 |  |  |  |
| ENG-MT-SL-ES-A-100 |  | Material Approval for Lighting Earthing of Street Lighting Network | 0d | 2026-06-30 | 2026-06-30 | ENG-MT-SL-ES-S-100 SS |  | 11.5d |
|  | 5 | **Termination and Testing Works** |  | 2026-06-30 | 2026-07-07 |  |  |  |
| ENG-MT-SL-TF-A-100 |  | Material Approval for Fuse Boxes of Street Lighting Network | 7d | 2026-06-30 | 2026-07-07 | ENG-MT-SL-TF-S-100 |  | 0d |
| ENG-MT-SL-TF-A-110 |  | Material Approval for Cable Lugs of Street Lighting Network | 7d | 2026-06-30 | 2026-07-07 | ENG-MT-SL-TF-S-110 |  | 11.5d |
|  | 8 | **Telecom Network** |  | 2026-01-17 | 2026-01-26 |  |  |  |
|  | MS | **Submission of Material** |  | 2026-01-17 | 2026-01-26 |  |  |  |
|  | 1 | **Ducts Works** |  | 2026-01-17 | 2026-01-26 |  |  |  |
| ENG-MT-TE-S-100 |  | Material Submittal for Ducts of Telecom Network | 9.25d | 2026-01-17 A | 2026-01-26 A | MS-CS-PS | 100% |  |
|  | 3 | **Manholes Works** |  | 2026-01-17 | 2026-01-26 |  |  |  |
| ENG-MT-TE-S-110 |  | Material Submittal for Manholes of Telecom Network | 9.25d | 2026-01-17 A | 2026-01-26 A | MS-CS-PS | 100% |  |
|  | 2 | **CCTV System Wroks** |  | 2026-01-17 | 2026-01-26 |  |  |  |
| ENG-MT-CTV-S-100 |  | Material Submittal for Civil and Finishes Works of CCTV Complete System | 9.25d | 2026-01-17 A | 2026-01-26 A | MS-CS-PS | 100% |  |
|  | MA | **Approval of Material** |  | 2026-01-17 | 2026-01-26 |  |  |  |
|  | 1 | **Ducts Works** |  | 2026-01-17 | 2026-01-26 |  |  |  |
| ENG-MT-TE-A-100 |  | Material Approval for Ducts of Telecom Network | 0d | 2026-01-17 A | 2026-01-26 A | ENG-MT-TE-S-100 SS, MS-CS-PS, ENG-MT-TE-S-100 FF | 100% |  |
|  | 3 | **Manholes Works** |  | 2026-01-17 | 2026-01-26 |  |  |  |
| ENG-MT-TE-A-110 |  | Material Approval for Manholes of Telecom Network | 0d | 2026-01-17 A | 2026-01-26 A | ENG-MT-TE-S-110 SS, MS-CS-PS, ENG-MT-TE-S-110 FF | 100% |  |
|  | 2 | **CCTV System Wroks** |  | 2026-01-17 | 2026-01-26 |  |  |  |
| ENG-MT-CTV-A-100 |  | Material Approval for Civil and Finishes Works of CCTV Complete System | 0d | 2026-01-17 A | 2026-01-26 A | ENG-MT-CTV-S-100 SS, MS-CS-PS, ENG-MT-CTV-S-100 FF | 100% |  |
|  | 1 | **Superstructure Works** |  | 2026-01-15 | 2026-06-30 |  |  |  |
|  | SL1111 | **Pump Stations** |  | 2026-01-17 | 2026-01-28 |  |  |  |
|  | 1 | **Submission of Material** |  | 2026-01-17 | 2026-01-26 |  |  |  |
| ENG-MT-PS-CV-S-140 |  | Material Submittal for Civil Works for Sewage Pump Stations | 9.25d | 2026-01-17 A | 2026-01-26 A | MS-CS-PS SS | 100% |  |
|  | 2 | **Approval of Material** |  | 2026-01-18 | 2026-01-28 |  |  |  |
| ENG-MT-PS-CV-A-150 |  | Material Approval for Civil Works for Sewage Pump Stations | 0d | 2026-01-18 A | 2026-01-28 A | ENG-MT-PS-CV-S-140 | 100% |  |
|  | SL | **Lift Station** |  | 2026-01-17 | 2026-01-28 |  |  |  |
|  | 1 | **Submission of Material** |  | 2026-01-17 | 2026-01-27 |  |  |  |
| ENG-MT-SLS-CV-S-100 |  | Material Submittal for Civil Works for Lift Stations | 10.25d | 2026-01-17 A | 2026-01-27 A | MS-CS-PS SS | 100% |  |
|  | 2 | **Approval of Material** |  | 2026-01-17 | 2026-01-28 |  |  |  |
| ENG-MT-SLS-CV-A-110 |  | Material Approval for Civil Works for Sewage Lift Stations | 0d | 2026-01-17 A | 2026-01-28 A | ENG-MT-SLS-CV-S-100 | 100% |  |
|  | TE | **Storm Drainage Ponds** |  | 2026-02-08 | 2026-02-17 |  |  |  |
|  | 1 | **Submission of Material** |  | 2026-02-08 | 2026-02-10 |  |  |  |
| ENG-MT-DPO-CV-S-100 |  | Material Submittal for Civil Works for Storm Drainage Ponds | 3.25d | 2026-02-08 A | 2026-02-10 A | ENG-MT-PS-CV-A-150 SS | 100% |  |
|  | 2 | **Approval of Material** |  | 2026-02-10 | 2026-02-17 |  |  |  |
| ENG-MT-DPO-CV-A-110 |  | Material Approval for Civil Works for Storm Drainage Ponds | 0d | 2026-02-10 A | 2026-02-17 A | ENG-MT-DPO-CV-S-100 | 100% |  |
|  | SL111 | **Storage Tank (TSE)** |  | 2026-02-04 | 2026-06-30 |  |  |  |
|  | 1 | **Submission of Material** |  | 2026-06-23 | 2026-06-30 |  |  |  |
| ENG-MT-TSE-CV-S-130 |  | Material Submittal for Civil Works for Storage Tank (TSE) | 7d | 2026-06-23 | 2026-06-30 | ENG-MT-SLS-CV-S-100 |  | 13.25d |
|  | 2 | **Approval of Material** |  | 2026-02-04 | 2026-02-09 |  |  |  |
| ENG-MT-TSE-CV-A-140 |  | Material Approval for Civil Works for Storage Tank (TSE) | 0d | 2026-02-04 A | 2026-02-09 A | ENG-MT-SLS-CV-S-100 | 100% |  |
|  | SL11 | **Gaurd Room** |  | 2026-02-09 | 2026-02-17 |  |  |  |
|  | 1 | **Submission of Material** |  | 2026-02-09 | 2026-02-10 |  |  |  |
| ENG-MT-GR-CV-S-120 |  | Material Submittal for Civil Works for Gaurd Room | 2.25d | 2026-02-09 A | 2026-02-10 A | MS-CS-PS SS | 100% |  |
|  | 2 | **Approval of Material** |  | 2026-02-10 | 2026-02-17 |  |  |  |
| ENG-MT-GR-CV-A-130 |  | Material Approval for Civil Works for Gaurd Room | 0d | 2026-02-10 A | 2026-02-17 A | ENG-MT-GR-CV-S-120 | 100% |  |
|  | SL1 | **Fence** |  | 2026-01-15 | 2026-03-03 |  |  |  |
|  | 1 | **Submission of Material** |  | 2026-01-15 | 2026-02-28 |  |  |  |
| ENG-MT-FE-CV-S-110 |  | Material Submittal for Civil Works for Fence | 35.12d | 2026-01-15 A | 2026-02-28 A | MS-CS-PS SS | 100% |  |
|  | 2 | **Approval of Material** |  | 2026-01-22 | 2026-03-03 |  |  |  |
| ENG-MT-FE-CV-A-120 |  | Material Approval for Civil Works for Fence | 0d | 2026-01-22 A | 2026-03-03 A | ENG-MT-FE-CV-S-110 | 100% |  |

| ID | WBS | Task | Duration | Start | Finish | Predecessors | Complete | Total float |
| --- | --- | --- | --- | --- | --- | --- | --- | --- |
|  | SL12 | **Softscape and Planting Works** |  | 2026-02-28 | 2026-03-08 |  |  |  |
|  | 1 | **Submission of Material** |  | 2026-02-28 | 2026-03-01 |  |  |  |
| ENG-MT-PL-CV-S-150 |  | Material Submittal for Softscape and Planting Works | 1.25d | 2026-02-28 A | 2026-03-01 A | MS-CS-PS | 100% |  |
|  | 2 | **Approval of Material** |  | 2026-03-01 | 2026-03-08 |  |  |  |
| ENG-MT-PL-CV-A-160 |  | Material Approval for Softscape and Planting Works | 0d | 2026-03-01 A | 2026-03-08 A | ENG-MT-PL-CV-S-150 SS, ENG-MT-PL-CV-S-150 FF | 100% |  |
|  | 1 | **Long Lead Time Items** |  | 2026-01-15 | 2026-07-02 |  |  |  |
|  | 1 | **Infrastructure Networks** |  | 2026-01-15 | 2026-01-22 |  |  |  |
|  | 2 | **CCTV System Wroks of Telecom Network** |  | 2026-01-15 | 2026-01-22 |  |  |  |
|  | 1 | **Submission of Material** |  | 2026-01-15 | 2026-01-18 |  |  |  |
| ENG-MT-CTV-S-110 |  | Material Submittal for Low Current Works of CCTV Complete System with All Accessories | 3.25d | 2026-01-15 A | 2026-01-18 A | ENG-SH-RD-S-100 | 100% |  |
|  | 2 | **Approval of Material** |  | 2026-01-18 | 2026-01-22 |  |  |  |
| ENG-MT-CTV-A-110 |  | Material Approval for Low Current Works of CCTV Complete System with All Accessories | 0d | 2026-01-18 A | 2026-01-22 A | ENG-MT-CTV-S-110 SS, ENG-MT-CTV-S-110 FF | 100% |  |
|  | 2 | **Superstructure Works** |  | 2026-06-24 | 2026-07-02 |  |  |  |
|  | SL | **Pump Stations** |  | 2026-06-24 | 2026-07-02 |  |  |  |
|  | 1 | **Submission of Material** |  | 2026-06-24 | 2026-07-01 |  |  |  |
| ENG-MT-SPS-MC-S-100 |  | Material Submittal for Electromechanical Works for Pump Stations | 7d | 2026-06-24 | 2026-07-01 | ENG-SH-SPS-S-150_R SS, ENG-SH-SPS-S-150_R FF |  | 8.5d |
|  | 2 | **Approval of Material** |  | 2026-06-24 | 2026-07-02 |  |  |  |
| ENG-MT-SPS-MC-A-110 |  | Material Approval for Electromechanical Works for Pump Stations | 8d | 2026-06-24 | 2026-07-02 | ENG-MT-SPS-MC-S-100 SS, ENG-MT-SPS-MC-S-100 FF |  | 8.5d |
|  | SL1 | **Storage Tank (TSE)** |  | 2026-06-24 | 2026-07-02 |  |  |  |
|  | 1 | **Submission of Material** |  | 2026-06-24 | 2026-07-01 |  |  |  |
| ENG-MT-TSE-MC-S-110 |  | Material Submittal for Electromechanical Works for Storage Tank (TSE) | 7d | 2026-06-24 | 2026-07-01 | ENG-MT-SPS-MC-S-100 SS, ENG-MT-SPS-MC-S-100 FF |  | 8.5d |
|  | 2 | **Approval of Material** |  | 2026-06-24 | 2026-07-02 |  |  |  |
| ENG-MT-TSE-MC-A-120 |  | Material Approval for Electromechanical Works for Storage Tank (TSE) | 8d | 2026-06-24 | 2026-07-02 | ENG-MT-TSE-MC-S-110 SS, ENG-MT-TSE-MC-S-110 FF |  | 8.5d |
|  | PROC | **Procurement Cycle** |  | 2026-01-28 | 2027-01-28 |  |  |  |
|  | NLL | **Short Lead Time Items** |  | 2026-01-28 | 2027-01-28 |  |  |  |
|  | INF | **Infrastructure Networks** |  | 2026-01-28 | 2027-01-28 |  |  |  |
|  | RD | **Road Works** |  | 2026-06-23 | 2026-12-05 |  |  |  |
|  | PO | **Issuance of Purchase Orders** |  | 2026-06-23 | 2026-07-30 |  |  |  |
|  | 1 | **Road Works** |  | 2026-06-23 | 2026-07-22 |  |  |  |
| PRO-RD-PO-100 |  | Issuance of Purchase Order for Subgrade of Road Works | 7d | 2026-06-23 | 2026-06-30 | ENG-MT-RD-A-100 |  | 26.75d |
| PRO-RD-PO-110 |  | Issuance of Purchase Order for Aggregate Base Course of Road Works | 7d | 2026-06-23 | 2026-06-30 | ENG-MT-RD-A-110 |  | 32.25d |
| PRO-RD-PO-120 |  | Issuance of Purchase Order for Prime Coat of Road Works | 7d | 2026-07-15 | 2026-07-22 | ENG-MT-RD-A-120, PRO-SW-PO-120 |  | 28.25d |
| PRO-RD-PO-130 |  | Issuance of Purchase Order for Bituminous Base & Wearing Courses of Road Works | 7d | 2026-07-15 | 2026-07-22 | ENG-MT-RD-A-130, PRO-SW-PO-120 |  | 19.25d |
|  | 2 | **Pavement Works** |  | 2026-07-23 | 2026-07-30 |  |  |  |
| PRO-RD-PO-140 |  | Issuance of Purchase Order for Interlock Tiles of Landscaping | 7d | 2026-07-23 | 2026-07-30 | ENG-MT-RD-A-140, PRO-RD-PO-130 |  | 19.25d |
| PRO-RD-PO-150 |  | Issuance of Purchase Order for Curbstones of Landscaping | 7d | 2026-07-23 | 2026-07-30 | ENG-MT-RD-A-150, PRO-RD-PO-130 |  | 32.8d |
|  | 3 | **Traffic Signs Boards and Roads Marking** |  | 2026-07-05 | 2026-07-21 |  |  |  |
| PRO-RD-PO-160 |  | Issuance of Purchase Order for Traffic Signs Boards of Road Works | 7d | 2026-07-05 | 2026-07-13 | ENG-MT-TS-A-100, ENG-SH-TSB-A-100 |  | 52.75d |
| PRO-RD-PO-170 |  | Issuance of Purchase Order for Road Markings of Road Works | 7d | 2026-07-13 | 2026-07-21 | ENG-MT-TS-A-110, ENG-MT-TS-S-110, ENG-SH-MRK-A-110 |  | 55.5d |
|  | MF | **Manufacturing of Material** |  | 2026-07-01 | 2026-11-19 |  |  |  |
|  | 1 | **Road Works** |  | 2026-07-01 | 2026-11-19 |  |  |  |
| PRO-RD-MF-100 |  | Manufacturing of Subgrade for Road Works | 110d | 2026-07-01 | 2026-10-18 | PRO-RD-PO-100 |  | 31.5d |
| PRO-RD-MF-110 |  | Manufacturing of Aggregate Base Course for Road Works | 120d | 2026-07-01 | 2026-10-28 | PRO-RD-PO-110 |  | 38d |
| PRO-RD-MF-120 |  | Manufacturing of Prime Coat for Road Works | 120d | 2026-07-23 | 2026-11-19 | PRO-RD-PO-120 |  | 33d |
| PRO-RD-MF-130 |  | Manufacturing of Bituminous Base & Wearing Courses for Road Works | 120d | 2026-07-23 | 2026-11-19 | PRO-RD-PO-130 |  | 41d |
|  | 2 | **Pavement Works** |  | 2026-07-31 | 2026-10-28 |  |  |  |
| PRO-RD-MF-140 |  | Manufacturing of Interlock Tiles for Landscaping | 90d | 2026-07-31 | 2026-10-28 | PRO-RD-PO-140 |  | 53d |
| PRO-RD-MF-150 |  | Manufacturing of Curbstones for Landscaping | 90d | 2026-07-31 | 2026-10-28 | PRO-RD-PO-150 |  | 38.8d |
|  | 3 | **Traffic Signs Boards and Roads Marking** |  | 2026-07-13 | 2026-11-03 |  |  |  |
| PRO-RD-MF-160 |  | Manufacturing of Traffic Signs Boards for Road Works | 100d | 2026-07-13 | 2026-10-21 | PRO-RD-PO-160 |  | 61.75d |
| PRO-RD-MF-170 |  | Manufacturing of Road Markings for Road Works | 105d | 2026-07-21 | 2026-11-03 | PRO-RD-PO-170 |  | 66.75d |
|  | 1DL | **1st Material Delivery & Site Inspection** |  | 2026-10-19 | 2026-12-03 |  |  |  |
|  | 1 | **Road Works** |  | 2026-10-19 | 2026-12-03 |  |  |  |
| PRO-RD-1DL-100 |  | 1ST Material Delivery for Subgrade of Road Works | 12d | 2026-10-19 | 2026-11-01 | PRO-RD-MF-100 |  | 27.5d |
| PRO-RD-1DL-110 |  | 1ST Material Delivery for Aggregate Base Course of Road Works | 12d | 2026-10-29 | 2026-11-11 | PRO-RD-MF-110 |  | 32d |
| PRO-RD-1DL-120 |  | 1ST Material Delivery for Prime Coat of Road Works | 12d | 2026-11-21 | 2026-12-03 | PRO-RD-MF-120 |  | 28d |
| PRO-RD-1DL-130 |  | 1ST Material Delivery for Bituminous Base & Wearing Courses of Road Works | 12d | 2026-11-21 | 2026-12-03 | PRO-RD-MF-130 |  | 35d |
|  | 2 | **Pavement Works** |  | 2026-10-29 | 2026-11-11 |  |  |  |
| PRO-RD-1DL-140 |  | 1ST Material Delivery for Interlock Tiles of Landscaping | 12d | 2026-10-29 | 2026-11-11 | PRO-RD-MF-140 |  | 45d |
| PRO-RD-1DL-150 |  | 1ST Material Delivery for Curbstones of Landscaping | 12d | 2026-10-29 | 2026-11-11 | PRO-RD-MF-150 |  | 32.8d |
|  | 3 | **Traffic Signs Boards and Roads Marking** |  | 2026-10-21 | 2026-11-25 |  |  |  |
| PRO-RD-1DL-160 |  | 1ST Material Delivery for Traffic Signs Boards of Road Works | 15d | 2026-10-21 | 2026-11-08 | PRO-RD-MF-160 |  | 52.75d |
| PRO-RD-1DL-170 |  | 1ST Material Delivery for Road Markings of Road Works | 15d | 2026-11-08 | 2026-11-25 | PRO-RD-MF-170, PRO-RD-1DL-160 |  | 52.75d |
|  | DL | **Material Delivery & Site Inspection** |  | 2026-11-02 | 2026-12-05 |  |  |  |
|  | 1 | **Pre-Bituminous Construction** |  | 2026-11-02 | 2026-11-12 |  |  |  |
| PRO-R25-RD-DL-100 |  | Material Delivery & Site Inspection for Subgrade of Road Works | 0d | 2026-11-02 | 2026-11-02 | PRO-RD-MF-100, PRO-RD-1DL-100 |  | 27.5d |
| PRO-R25-RD-DL-110 |  | Material Delivery & Site Inspection for Aggregate Base Course of Road Works | 0d | 2026-11-12 | 2026-11-12 | PRO-RD-MF-110 SS, PRO-RD-MF-110, PRO-RD-1DL-110 |  | 32d |
|  | 4 | **Bituminous Construction** |  | 2026-12-05 | 2026-12-05 |  |  |  |
| PRO-R25-RD-DL-160 |  | Material Delivery & Site Inspection for Prime Coat of Road Works | 0d | 2026-12-05 | 2026-12-05 | PRO-RD-MF-120, PRO-RD-MF-120 FF, PRO-RD-1DL-120 |  | 28d |
| PRO-R25-RD-DL-170 |  | Material Delivery & Site Inspection for Bituminous Base & Wearing Courses of Road Works | 0d | 2026-12-05 | 2026-12-05 | PRO-RD-MF-130, PRO-RD-1DL-130 |  | 35d |

| ID | WBS | Task | Duration | Start | Finish | Predecessors | Total float |
| --- | --- | --- | --- | --- | --- | --- | --- |
|  | 2 | **Pavement Works** |  | 2026-11-12 | 2026-11-12 |  |  |
| PRO-R25-RD-DL-120 |  | Material Delivery & Site Inspection of Interlock Tiles for Landscaping | 0d | 2026-11-12 | 2026-11-12 | PRO-RD-MF-140 SS, PRO-RD-MF-140, PRO-RD-1DL-140 | 45d |
| PRO-R25-RD-DL-130 |  | Material Delivery & Site Inspection of Curbstones for Landscaping | 0d | 2026-11-12 | 2026-11-12 | PRO-RD-MF-150, PRO-RD-1DL-150 | 32.8d |
|  | 3 | **Traffic Signs Boards and Roads Marking** |  | 2026-11-08 | 2026-11-25 |  |  |
| PRO-R25-RD-DL-140 |  | Material Delivery & Site Inspection of Traffic Signs Boards For Road Works | 0d | 2026-11-08 | 2026-11-08 | PRO-RD-MF-160, PRO-RD-1DL-160 | 74.75d |
| PRO-R25-RD-DL-150 |  | Material Delivery & Site Inspection of Road Markings For Road Works | 0d | 2026-11-25 | 2026-11-25 | PRO-RD-MF-170, PRO-RD-1DL-170 | 52.75d |
|  | IR1 | **Softscape and Planting Works** |  | 2026-07-11 | 2026-11-10 |  |  |
|  | PO | **Issuance of Purchase Orders** |  | 2026-07-11 | 2026-07-19 |  |  |
|  | 1 | **Main Line Pipes** |  | 2026-07-11 | 2026-07-19 |  |  |
| PRO-IR-PO-150 |  | Issuance of Purchase Order for Site Furnishings (Seating Bench,Stone Boulders and Gravel) | 6d | 2026-07-11 | 2026-07-18 | ENG-MT-IR-ML-A-150 | 16.75d |
| PRO-IR-PO-140 |  | Issuance of Purchase Order for Softscape and Planting Works | 6d | 2026-07-12 | 2026-07-19 | ENG-MT-IR-ML-A-140 | 12.75d |
|  | MF | **Manufacturing of Material** |  | 2026-07-18 | 2026-10-17 |  |  |
|  | 1 | **Main Line Pipes** |  | 2026-07-18 | 2026-10-17 |  |  |
| PRO-IR-MF-150 |  | Manufacturing of Valves for Site Furnishings (Seating Bench,Stone Boulders and Gravel) | 90d | 2026-07-18 | 2026-10-16 | PRO-IR-PO-150 | 18.75d |
| PRO-IR-MF-140 |  | Manufacturing of Softscape and Planting Works | 90d | 2026-07-19 | 2026-10-17 | PRO-IR-PO-140 | 14.75d |
|  | 1DL | **1st Material Delivery & Site Inspection** |  | 2026-10-17 | 2026-10-24 |  |  |
|  | 1 | **Main Line Pipes** |  | 2026-10-17 | 2026-10-24 |  |  |
| PRO-IR-1DL-150 |  | 1ST Material Delivery for Site Furnishings (Seating Bench,Stone Boulders and Gravel) | 6d | 2026-10-17 | 2026-10-22 | PRO-IR-MF-150 | 16d |
| PRO-IR-1DL-140 |  | 1ST Material Delivery for Softscape and Planting Works | 6d | 2026-10-17 | 2026-10-24 | PRO-IR-MF-140 | 12.75d |
|  | DL | **Material Delivery & Site Inspection** |  | 2026-10-24 | 2026-11-10 |  |  |
|  | 1 | **Main Line Pipes** |  | 2026-10-24 | 2026-11-10 |  |  |
| PRO-R25-IR-DL-150 |  | Material Delivery & Site Inspection of Site Furnishings (Seating Bench,Stone Boulders and Gravel) | 16d | 2026-10-24 | 2026-11-10 | PRO-IR-1DL-150 | 16d |
| PRO-R25-IR-DL-140 |  | Material Delivery & Site Inspection of Softscape and Planting Works | 12d | 2026-10-24 | 2026-11-07 | PRO-IR-1DL-140 | 12.75d |
|  | SW | **Sewage Network** |  | 2026-06-23 | 2026-12-28 |  |  |
|  | PO | **Issuance of Purchase Orders** |  | 2026-06-23 | 2026-07-14 |  |  |
|  | 1 | **Main Line Sections** |  | 2026-06-23 | 2026-06-29 |  |  |
| PRO-SW-PO-100 |  | Issuance of Purchase Order for Main Line Pipes of Sewage Network | 6d | 2026-06-23 | 2026-06-29 | ENG-MT-SW-ML-A-110 | 4.5d |
| PRO-SW-PO-110 |  | Issuance of Purchase Order for Manhole of Sewage Network | 6d | 2026-06-23 | 2026-06-29 | ENG-MT-SW-ML-A-100 | 11.5d |
|  | 3 | **Testing and Finishes** |  | 2026-07-08 | 2026-07-14 |  |  |
| PRO-SW-PO-120 |  | Issuance of Purchase Order for Manhole Covers of Sewage Network | 6d | 2026-07-08 | 2026-07-14 | ENG-MT-SW-TF-A-100 | 2d |
|  | MF | **Manufacturing of Material** |  | 2026-06-30 | 2026-11-21 |  |  |
|  | 1 | **Main Line Sections** |  | 2026-06-30 | 2026-08-08 |  |  |
| PRO-SW-MF-100 |  | Manufacturing of Main Line Pipes for Sewage Network | 20d | 2026-06-30 | 2026-07-19 | PRO-SW-PO-100 | 5.25d |
| PRO-SW-MF-110 |  | Manufacturing of Manholes for Sewage Network | 40d | 2026-06-30 | 2026-08-08 | PRO-SW-PO-110 | 13.25d |
|  | 3 | **Testing and Finishes** |  | 2026-07-15 | 2026-11-21 |  |  |
| PRO-SW-MF-120 |  | Manufacturing of Manhole Covers for Sewage Network | 130d | 2026-07-15 | 2026-11-21 | PRO-SW-PO-120 | 2d |
|  | 1DL | **1st Material Delivery & Site Inspection** |  | 2026-07-20 | 2026-11-28 |  |  |
|  | 1 | **Main Line Sections** |  | 2026-07-20 | 2026-08-15 |  |  |
| PRO-SW-1DL-100 |  | 1ST Material Delivery for Main Line Pipes of Sewage Network | 6d | 2026-07-20 | 2026-07-26 | PRO-SW-MF-100 | 4.5d |
| PRO-SW-1DL-110 |  | 1ST Material Delivery for Manholes of Sewage Network | 6d | 2026-08-09 | 2026-08-15 | PRO-SW-MF-110 | 11.5d |
|  | 3 | **Testing and Finishes** |  | 2026-11-22 | 2026-11-28 |  |  |
| PRO-SW-1DL-120 |  | 1ST Material Delivery for Manholes Covers of Sewage Network | 6d | 2026-11-22 | 2026-11-28 | PRO-SW-MF-120 | 2d |
|  | DL | **Material Delivery & Site Inspection** |  | 2026-07-27 | 2026-12-28 |  |  |
|  | 1 | **Main Line Sections** |  | 2026-07-27 | 2026-08-09 |  |  |
| PRO-R25-SW-DL-100 |  | Material Delivery & Site Inspection of Main Line Pipes for Sewage Network | 0d | 2026-07-27 | 2026-07-27 | PRO-SW-1DL-100, PRO-SW-MF-100 SS, PRO-SW-MF-100 FF | 14d |
| PRO-R25-SW-DL-110 |  | Material Delivery & Site Inspection of Manholes for Sewage Network | 0d | 2026-08-09 | 2026-08-09 | PRO-SW-1DL-110 SS, PRO-SW-MF-110 SS, PRO-SW-MF-110 FF | 24.5d |
|  | 3 | **Testing and Finishes** |  | 2026-11-29 | 2026-12-28 |  |  |
| PRO-R25-SW-DL-120 |  | Material Delivery & Site Inspection of Manholes Covers for Sewage Network | 26d | 2026-11-29 | 2026-12-28 | PRO-SW-1DL-120, PRO-SW-MF-120 SS, PRO-SW-MF-120 FF | 2d |
|  | SD | **Storm Drainage Network** |  | 2026-06-23 | 2026-12-10 |  |  |
|  | MF | **Manufacturing of Material** |  | 2026-06-30 | 2026-10-22 |  |  |
|  | 1 | **Main Line Sections** |  | 2026-06-30 | 2026-08-08 |  |  |
| PRO-SD-MF-100 |  | Manufacturing of Materials for Manholes of Storm Drainage Network | 40d | 2026-06-30 | 2026-08-08 | PRO-SD-PO-100 | 0d |
| PRO-SD-MF-110 |  | Manufacturing of Materials for Main Line Pipes of Storm Drainage Network | 8d | 2026-07-01 | 2026-07-09 | PRO-SD-PO-110 | 6d |
|  | 2 | **Catch Basin Sections** |  | 2026-06-30 | 2026-07-19 |  |  |
| PRO-SD-MF-130 |  | Manufacturing of Materials for Catch Basins of Storm Drainage Network | 20d | 2026-06-30 | 2026-07-19 | PRO-SD-PO-130 | 30d |
| PRO-SD-MF-150 |  | Manufacturing of Materials for Catch Basin Pipes of Storm Drainage Network | 20d | 2026-06-30 | 2026-07-19 | PRO-SD-PO-150 | 30d |
|  | 3 | **Testing and Finishes** |  | 2026-07-15 | 2026-10-22 |  |  |
| PRO-SD-MF-120 |  | Manufacturing of Materials for Manhole Covers of Storm Drainage Network | 100d | 2026-07-15 | 2026-10-22 | PRO-SD-PO-120 | 31d |
| PRO-SD-MF-140 |  | Manufacturing of Materials for Catch Basin Covers of Storm Drainage Network | 100d | 2026-07-15 | 2026-10-22 | PRO-SD-PO-140 | 26d |
|  | PO | **Issuance of Purchase Orders** |  | 2026-06-23 | 2026-07-14 |  |  |
|  | 1 | **Main Line Sections** |  | 2026-06-23 | 2026-07-01 |  |  |
| PRO-SD-PO-100 |  | Issuance of Purchase Order for Manholes of Storm Drainage Network | 6.2d | 2026-06-23 | 2026-06-30 | ENG-MT-SD-ML-A-100 | 0.05d |
| PRO-SD-PO-110 |  | Issuance of Purchase Order for Main Line Pipes of Storm Drainage Network | 3d | 2026-06-28 | 2026-07-01 | ENG-MT-SD-ML-A-110, MS-CS-PS SS, ENG-SH-SD-CB-S-100_R | 0.75d |
|  | 2 | **Catch Basin Sections** |  | 2026-06-23 | 2026-06-29 |  |  |
| PRO-SD-PO-130 |  | Issuance of Purchase Order for Catch Basins of Storm Drainage Network | 6d | 2026-06-23 | 2026-06-29 | ENG-MT-SD-CB-A-100 | 26.25d |
| PRO-SD-PO-150 |  | Issuance of Purchase Order for Catch Basin Pipes of Storm Drainage Network | 6d | 2026-06-23 | 2026-06-29 | ENG-MT-SD-CB-A-110 | 26.25d |
|  | 3 | **Testing and Finishes** |  | 2026-07-08 | 2026-07-14 |  |  |
| PRO-SD-PO-120 |  | Issuance of Purchase Order for Manhole Covers of Storm Drainage Network | 6d | 2026-07-08 | 2026-07-14 | ENG-MT-SD-TF-A-100 | 26.25d |
| PRO-SD-PO-140 |  | Issuance of Purchase Order for Catch Basin Covers of Storm Drainage Network | 6d | 2026-07-08 | 2026-07-14 | ENG-MT-SD-TF-A-110 | 22.25d |
|  | 1DL | **1st Material Delivery & Site Inspection** |  | 2026-07-09 | 2026-10-29 |  |  |

| ID | WBS | Task | Duration | Start | Finish | Predecessors | Complete | Total float |
| --- | --- | --- | --- | --- | --- | --- | --- | --- |
|  | 1 | **Main Line Sections** |  | 2026-07-09 | 2026-07-16 |  |  |  |
| PRO-SD-1DL-110 |  | 1ST Material Delivery for Main Line Pipes of Storm Drainage Network | 6d | 2026-07-09 | 2026-07-16 | PRO-SD-MF-110 |  | 5d |
|  | 2 | **Catch Basin Sections** |  | 2026-07-20 | 2026-07-26 |  |  |  |
| PRO-SD-1DL-120 |  | 1ST Material Delivery for Catch Basin Pipes of Storm Drainage Network | 6d | 2026-07-20 | 2026-07-26 | PRO-SD-MF-150 |  | 26d |
| PRO-SD-1DL-130 |  | 1ST Material Delivery for Catch Basins of Storm Drainage Network | 6d | 2026-07-20 | 2026-07-26 | PRO-SD-MF-130 |  | 26d |
|  | 3 | **Testing and Finishes** |  | 2026-10-24 | 2026-10-29 |  |  |  |
| PRO-SD-1DL-140 |  | 1ST Material Delivery for Manholes Covers of Storm Drainage Network | 6d | 2026-10-24 | 2026-10-29 | PRO-SD-MF-120 |  | 26d |
| PRO-SD-1DL-150 |  | 1ST Material Delivery for Catch Basin Covers of Storm Drainage Network | 6d | 2026-10-24 | 2026-10-29 | PRO-SD-MF-140 |  | 22d |
|  | DL | **Material Delivery & Site Inspection** |  | 2026-07-16 | 2026-12-10 |  |  |  |
|  | 1 | **Main Line Sections** |  | 2026-07-16 | 2026-08-09 |  |  |  |
| PRO-R25-SD-DL-120 |  | Material Delivery & Site Inspection of Main Line Pipes of Storm Drainage Network | 0d | 2026-07-16 | 2026-07-16 | PRO-SD-1DL-110, PRO-SD-MF-110 |  | 5d |
| PRO-R25-SD-DL-100 |  | Material Delivery & Site Inspection of Manholes of Storm Drainage Network | 0d | 2026-08-09 | 2026-08-09 | PRO-SD-MF-100 |  | 0d |
|  | 2 | **Catch Basin Sections** |  | 2026-07-27 | 2026-07-27 |  |  |  |
| PRO-R25-SD-DL-110 |  | Material Delivery & Site Inspection of Catch Basin Pipes for Storm Drainage Network | 0d | 2026-07-27 | 2026-07-27 | PRO-SD-1DL-120, PRO-SD-MF-150 SS, PRO-SD-MF-150 FF |  | 36d |
| PRO-R25-SD-DL-130 |  | Material Delivery & Site Inspection of Catch Basins for Storm Drainage Network | 0d | 2026-07-27 | 2026-07-27 | PRO-SD-1DL-130, PRO-SD-MF-130 SS, PRO-SD-MF-130 FF |  | 36d |
|  | 3 | **Testing and Finishes** |  | 2026-10-31 | 2026-12-10 |  |  |  |
| PRO-R25-SD-DL-150 |  | Material Delivery & Site Inspection of Catch Basin Covers for Storm Drainage Network | 20d | 2026-10-31 | 2026-11-22 | PRO-SD-1DL-150, PRO-SD-MF-140 |  | 22d |
| PRO-R25-SD-DL-140 |  | Material Delivery & Site Inspection of Manholes Covers for Storm Drainage Network | 26d | 2026-11-11 | 2026-12-10 | PRO-SD-1DL-140, PRO-SD-MF-120, PRO-R25-IR-DL-150 |  | 16d |
|  | PW | **Potable Water Network** |  | 2026-04-01 | 2026-12-13 |  |  |  |
|  | PO | **Issuance of Purchase Orders** |  | 2026-04-02 | 2026-07-19 |  |  |  |
|  | 1 | **Main Line Sections** |  | 2026-04-02 | 2026-07-14 |  |  |  |
| PRO-PW-PO-100 |  | Issuance of Purchase Order for Main Line Pipes of Potable Water Network(Completed) | 60.5d | 2026-04-02 A | 2026-06-15 A | ENG-MT-PW-ML-A-100 | 100% |  |
| PRO-PW-PO-100_R |  | Issuance of Purchase Order for Main Line Pipes of Potable Water Network(Remaining) | 5d | 2026-07-01 | 2026-07-07 | ENG-MT-PW-ML-A-100 FF, PRO-PW-PO-100, PRO-SD-PO-110 |  | 0.75d |
| PRO-PW-PO-110 |  | Issuance of Purchase Order for Valves of Potable Water Network | 6d | 2026-07-08 | 2026-07-14 | ENG-MT-PW-ML-A-110 |  | 19.75d |
|  | 3 | **Fire Hydrant** |  | 2026-07-08 | 2026-07-19 |  |  |  |
| PRO-PW-PO-120 |  | Issuance of Purchase Order for Fire Hydrants of Potable Water Network | 10d | 2026-07-08 | 2026-07-19 | ENG-MT-PW-FH-A-100 |  | 34.75d |
|  | 4 | **Testing and Finishes** |  | 2026-07-08 | 2026-07-19 |  |  |  |
| PRO-PW-PO-130 |  | Issuance of Purchase Order for Surface Box of Potable Water Network | 10d | 2026-07-08 | 2026-07-19 | ENG-MT-PW-TF-A-100 |  | 30.25d |
|  | MF | **Manufacturing of Material** |  | 2026-04-04 | 2026-11-06 |  |  |  |
|  | 1 | **Main Line Sections** |  | 2026-04-04 | 2026-10-12 |  |  |  |
| PRO-PW-MF-100 |  | Manufacturing of Main Line Pipes for Potable Water Network(Completed) | 30d | 2026-04-04 A | 2026-06-15 A | PRO-PW-PO-100 SS | 100% |  |
| PRO-PW-MF-100_R |  | Manufacturing of Main Line Pipes for Potable Water Network(Remaining) | 96.5d | 2026-07-07 | 2026-10-11 | PRO-PW-PO-100_R, PRO-PW-MF-100 |  | 0.75d |
| PRO-PW-MF-110 |  | Manufacturing of Valves for Potable Water Network | 90d | 2026-07-15 | 2026-10-12 | PRO-PW-PO-110, PRO-R25-PW-DL-120 FF |  | 22.5d |
|  | 3 | **Fire Hydrant** |  | 2026-07-20 | 2026-09-17 |  |  |  |
| PRO-PW-MF-120 |  | Manufacturing of Fire Hydrants for Potable Water Network | 60d | 2026-07-20 | 2026-09-17 | PRO-PW-PO-120 |  | 40.5d |
|  | 4 | **Testing and Finishes** |  | 2026-07-20 | 2026-11-06 |  |  |  |
| PRO-PW-MF-130 |  | Manufacturing for Surface Box of Potable Water Network | 110d | 2026-07-20 | 2026-11-06 | PRO-PW-PO-130 |  | 35d |
|  | 1DL | **1st Material Delivery & Site Inspection** |  | 2026-04-05 | 2026-11-12 |  |  |  |
|  | 1 | **Main Line Sections** |  | 2026-04-05 | 2026-10-19 |  |  |  |
| PRO-PW-1DL-100 |  | 1ST Material Delivery for Main Line Pipes of Potable Water Network(Completed) | 58.5d | 2026-04-05 A | 2026-06-15 A | PRO-PW-MF-100 SS | 100% |  |
| PRO-PW-1DL-100_R |  | 1ST Material Delivery for Main Line Pipes of Potable Water Network(Remaining) | 70.5d | 2026-07-07 | 2026-09-28 | PRO-PW-MF-100_R SS, PRO-PW-1DL-100 |  | 11.5d |
| PRO-PW-1DL-110 |  | 1ST Material Delivery for Valves of Potable Water Network | 6d | 2026-10-13 | 2026-10-19 | PRO-PW-MF-110 |  | 19.5d |
|  | 3 | **Fire Hydrant** |  | 2026-09-19 | 2026-09-26 |  |  |  |
| PRO-PW-1DL-120 |  | 1ST Material Delivery for Fire Hydrants of Potable Water Network | 6d | 2026-09-19 | 2026-09-26 | PRO-PW-MF-120 |  | 33.5d |
|  | 4 | **Testing and Finishes** |  | 2026-11-07 | 2026-11-12 |  |  |  |
| PRO-PW-1DL-130 |  | 1ST Material Delivery for Finishes of Potable Water Network | 6d | 2026-11-07 | 2026-11-12 | PRO-PW-MF-130 |  | 30d |
|  | DL | **Material Delivery & Site Inspection** |  | 2026-04-01 | 2026-12-13 |  |  |  |
|  | 1 | **Main Line Sections** |  | 2026-04-01 | 2026-10-20 |  |  |  |
| PRO-R25-PW-DL-100 |  | Material Delivery & Site Inspection of Main Line Pipes for Potable Water Network(Completed) | 0d | 2026-04-01 A | 2026-06-15 A | PRO-PW-1DL-100 SS | 100% |  |
| PRO-R25-PW-DL-100_R |  | Material Delivery & Site Inspection of Main Line Pipes for Potable Water Network(Remaining) | 0d | 2026-09-29 | 2026-09-29 | PRO-PW-1DL-100_R, PRO-R25-PW-DL-100 |  | 11.5d |
| PRO-R25-PW-DL-110 |  | Material Delivery & Site Inspection of Valves for Potable Water Network | 0d | 2026-10-20 | 2026-10-20 | PRO-PW-1DL-110 |  | 25.5d |
|  | 3 | **Fire Hydrant** |  | 2026-09-27 | 2026-09-27 |  |  |  |
| PRO-R25-PW-DL-120 |  | Material Delivery & Site Inspection of Fire Hydrants for Potable Water Network | 0d | 2026-09-27 | 2026-09-27 | PRO-PW-1DL-120 |  | 33.5d |
|  | 4 | **Testing and Finishes** |  | 2026-11-14 | 2026-12-13 |  |  |  |
| PRO-R25-PW-DL-130 |  | Material Delivery & Site Inspection for Finishes of Potable Water Network | 26d | 2026-11-14 | 2026-12-13 | PRO-PW-1DL-130 |  | 30d |
|  | IR | **Irrigation Network** |  | 2026-01-28 | 2026-10-27 |  |  |  |
|  | PO | **Issuance of Purchase Orders** |  | 2026-01-28 | 2026-07-21 |  |  |  |
|  | 1 | **Main Line Pipes** |  | 2026-01-28 | 2026-07-21 |  |  |  |
| PRO-IR-PO-100 |  | Issuance of Purchase Order for Main Line Pipes of Irrigation Network(Completed) | 105.25d | 2026-01-28 A | 2026-06-15 A | ENG-MT-IR-ML-A-100 | 100% |  |
| PRO-IR-PO-100_R |  | Issuance of Purchase Order for Main Line Pipes of Irrigation Network(Remaining) | 3.3d | 2026-07-07 | 2026-07-11 | ENG-MT-IR-ML-A-100, PRO-IR-PO-100, PRO-PW-PO-100_R |  | 16.45d |
| PRO-IR-PO-110 |  | Issuance of Purchase Order for Valves of Irrigation Network | 6d | 2026-07-15 | 2026-07-21 | ENG-MT-IR-ML-A-110, ENG-SH-HS-S-100, PRO-PW-PO-110 |  | 21.75d |
|  | MF | **Manufacturing of Material** |  | 2026-07-11 | 2026-10-19 |  |  |  |
|  | 1 | **Main Line Pipes** |  | 2026-07-11 | 2026-10-19 |  |  |  |
| PRO-IR-MF-100 |  | Manufacturing of Main Line Pipes for Irrigation Network | 86d | 2026-07-11 | 2026-10-05 | PRO-IR-PO-100_R |  | 18.2d |
| PRO-IR-MF-110 |  | Manufacturing of Valves for Irrigation Network | 90d | 2026-07-22 | 2026-10-19 | PRO-IR-PO-110 |  | 25.5d |
|  | 1DL | **1st Material Delivery & Site Inspection** |  | 2026-10-05 | 2026-10-26 |  |  |  |
|  | 1 | **Main Line Pipes** |  | 2026-10-05 | 2026-10-26 |  |  |  |
| PRO-IR-1DL-100 |  | 1ST Material Delivery for Main Line Pipes of Irrigation Network | 5d | 2026-10-05 | 2026-10-11 | PRO-IR-MF-100 |  | 15.2d |
| PRO-IR-1DL-110 |  | 1ST Material Delivery for Valves of Irrigation Network | 6d | 2026-10-20 | 2026-10-26 | PRO-IR-MF-110 |  | 21.5d |
|  | DL | **Material Delivery & Site Inspection** |  | 2026-10-11 | 2026-10-27 |  |  |  |

| ID | WBS | Task | Duration | Start | Finish | Predecessors | Complete | Total float |
| --- | --- | --- | --- | --- | --- | --- | --- | --- |
|  | 1 | **Main Line Pipes** |  | 2026-10-11 | 2026-10-27 |  |  |  |
| PRO-R25-IR-DL-100 |  | Material Delivery & Site Inspection of Main Line Pipes for Irrigation Network | 0d | 2026-10-11 | 2026-10-11 | PRO-IR-1DL-100, PRO-IR-MF-100 SS, PRO-IR-MF-100 FF |  | 15.2d |
| PRO-R25-IR-DL-110 |  | Material Delivery & Site Inspection of Valves for Irrigation Network | 0d | 2026-10-27 | 2026-10-27 | PRO-IR-1DL-110, PRO-IR-MF-110 |  | 21.5d |
|  | TSE | **Treated Sewage Effluent (Tse)** |  | 2026-04-01 | 2026-10-10 |  |  |  |
|  | PO | **Issuance of Purchase Orders** |  | 2026-06-27 | 2026-07-04 |  |  |  |
|  | 1 | **Main Line Pipes** |  | 2026-06-27 | 2026-07-04 |  |  |  |
| PRO-TSE-PO-120 |  | Issuance of Purchase Order for Main Line Pipes of Treated Sewage Effluent (Tse) | 6d | 2026-06-27 | 2026-07-04 | ENG-MT-IR-ML-A-120, ENG-SH-HS-S-100 |  | 19.25d |
| PRO-TSE-PO-130 |  | Issuance of Purchase Order for Valves of Treated Sewage Effluent (Tse) | 6d | 2026-06-27 | 2026-07-04 | ENG-MT-IR-ML-A-130, ENG-SH-HS-S-100 |  | 38.25d |
|  | MF | **Manufacturing of Material** |  | 2026-07-04 | 2026-10-02 |  |  |  |
|  | 1 | **Main Line Pipes** |  | 2026-07-04 | 2026-10-02 |  |  |  |
| PRO-TSE-MF-120 |  | Manufacturing of Main Line Pipes for Treated Sewage Effluent (Tse) | 90d | 2026-07-04 | 2026-10-02 | PRO-TSE-PO-120 |  | 22.25d |
| PRO-TSE-MF-130 |  | Manufacturing of Valves for Treated Sewage Effluent (Tse) | 90d | 2026-07-04 | 2026-10-02 | PRO-TSE-PO-130 |  | 44.25d |
|  | 1DL | **1st Material Delivery & Site Inspection** |  | 2026-10-03 | 2026-10-08 |  |  |  |
|  | 1 | **Main Line Pipes** |  | 2026-10-03 | 2026-10-08 |  |  |  |
| PRO-TSE-1DL-120 |  | 1ST Material Delivery for Main Line Pipes of Treated Sewage Effluent (Tse) | 6d | 2026-10-03 | 2026-10-08 | PRO-TSE-MF-120 |  | 18.5d |
| PRO-TSE-1DL-130 |  | 1ST Material Delivery for Valves of Treated Sewage Effluent (Tse) | 6d | 2026-10-03 | 2026-10-08 | PRO-TSE-MF-130 |  | 37.5d |
|  | DL | **Material Delivery & Site Inspection** |  | 2026-04-01 | 2026-10-10 |  |  |  |
|  | 1 | **Main Line Pipes** |  | 2026-04-01 | 2026-10-10 |  |  |  |
| PRO-R25-TSE-DL-120 |  | Material Delivery & Site Inspection of Main Line Pipes for Treated Sewage Effluent (Tse)(Completed) | 0d | 2026-04-01 A | 2026-06-15 A | PRO-IR-PO-100 | 100% |  |
| PRO-R25-TSE-DL-120_R |  | Material Delivery & Site Inspection of Main Line Pipes for Treated Sewage Effluent (Tse)(Remaining) | 0d | 2026-10-10 | 2026-10-10 | PRO-TSE-MF-120 FF, PRO-TSE-1DL-120 FF, PRO-R25-TSE-DL-120 |  | 18.5d |
| PRO-R25-TSE-DL-130 |  | Material Delivery & Site Inspection of Valves for Treated Sewage Effluent (Tse) | 0d | 2026-10-10 | 2026-10-10 | PRO-TSE-MF-130, PRO-TSE-1DL-130 |  | 37.5d |
|  | MV | **Medium Voltage Network** |  | 2026-06-23 | 2026-12-05 |  |  |  |
|  | PO | **Issuance of Purchase Orders** |  | 2026-06-23 | 2026-07-21 |  |  |  |
|  | 1 | **Cabling Works** |  | 2026-06-23 | 2026-07-06 |  |  |  |
| PRO-MV-PO-100 |  | Issuance of Purchase Order for Medium Voltage Cables of Medium Voltage Network | 12d | 2026-06-23 | 2026-07-06 | ENG-MT-MV-ML-A-100 |  | 36.75d |
|  | 3 | **Termination and Testing Works** |  | 2026-07-08 | 2026-07-21 |  |  |  |
| PRO-MV-PO-120 |  | Issuance of Purchase Order for Termination and Joints Kits of Medium Voltage Network | 12d | 2026-07-08 | 2026-07-21 | ENG-MT-MV-TF-A-100 |  | 16.25d |
|  | MF | **Manufacturing of Material** |  | 2026-07-07 | 2026-10-19 |  |  |  |
|  | 1 | **Cabling Works** |  | 2026-07-07 | 2026-09-04 |  |  |  |
| PRO-MV-MF-100 |  | Manufacturing of Medium Voltage Cables for Medium Voltage Network | 60d | 2026-07-07 | 2026-09-04 | PRO-MV-PO-100 |  | 42.5d |
|  | 3 | **Termination and Testing Works** |  | 2026-07-22 | 2026-10-19 |  |  |  |
| PRO-MV-MF-110 |  | Manufacturing of Termination and Joints Kits for Medium Voltage Network | 90d | 2026-07-22 | 2026-10-19 | PRO-MV-PO-120 |  | 19d |
|  | 1DL | **1st Material Delivery & Site Inspection** |  | 2026-09-05 | 2026-11-04 |  |  |  |
|  | 1 | **Cabling Works** |  | 2026-09-05 | 2026-09-17 |  |  |  |
| PRO-MV-1DL-100 |  | 1ST Material Delivery for Medium Voltage Cables of Medium Voltage Network | 12d | 2026-09-05 | 2026-09-17 | PRO-MV-MF-100 |  | 35.5d |
|  | 3 | **Termination and Testing Works** |  | 2026-10-20 | 2026-11-04 |  |  |  |
| PRO-MV-1DL-120 |  | 1ST Material Delivery for Termination and Joints Kits of Medium Voltage Network | 14d | 2026-10-20 | 2026-11-04 | PRO-MV-MF-110 |  | 16d |
|  | DL | **Material Delivery & Site Inspection** |  | 2026-09-19 | 2026-12-05 |  |  |  |
|  | 1 | **Cabling Works** |  | 2026-09-19 | 2026-09-19 |  |  |  |
| PRO-MV-DL-100 |  | Material Delivery & Site Inspection of Medium Voltage Cables for Medium Voltage Network | 0d | 2026-09-19 | 2026-09-19 | PRO-MV-1DL-100, PRO-MV-MF-100 SS, PRO-MV-MF-100 FF |  | 35.5d |
|  | 3 | **Termination and Testing Works** |  | 2026-11-05 | 2026-12-05 |  |  |  |
| PRO-MV-DL-110 |  | Material Delivery & Site Inspection of Termination and Joints Kits for Medium Voltage Network | 26d | 2026-11-05 | 2026-12-05 | PRO-MV-1DL-120, PRO-MV-MF-110 SS, PRO-MV-MF-110 FF |  | 16d |
|  | SL | **Low Voltage and Street Lighting Network** |  | 2026-06-23 | 2027-01-28 |  |  |  |
|  | PO | **Issuance of Purchase Orders** |  | 2026-06-23 | 2026-08-06 |  |  |  |
|  | 1 | **Cabling Works** |  | 2026-06-23 | 2026-06-29 |  |  |  |
| PRO-SL-PO-100 |  | Issuance of Purchase Order for Lighting Cables of Street Lighting Network | 6d | 2026-06-23 | 2026-06-29 | ENG-MT-SL-ML-A-100, ENG-MT-SL-ML-S-100 |  | 36.75d |
|  | 2 | **Lighting Poles Works** |  | 2026-06-23 | 2026-08-06 |  |  |  |
| PRO-SL-PO-110 |  | Issuance of Purchase Order for Lighting Poles Foundations of Street Lighting Network | 6d | 2026-06-23 | 2026-06-29 | ENG-MT-SL-S-100, ENG-MT-SL-A-100 |  | 7.75d |
| PRO-SL-PO-120 |  | Issuance of Purchase Order for Lighting Poles of Street Lighting Network | 6d | 2026-06-23 | 2026-06-29 | ENG-MT-SL-S-110, ENG-MT-SL-A-110 |  | 41.75d |
| PRO-SL-PO-140 |  | Issuance of Purchase Order for Lighting Fixtures of Street Lighting Network | 6d | 2026-08-01 | 2026-08-06 | ENG-MT-SL-S-120, ENG-MT-SL-A-120, PRO-RD-PO-140 |  | 19.25d |
|  | 3 | **Distribution Panel Board** |  | 2026-06-23 | 2026-07-04 |  |  |  |
| PRO-SL-PO-160 |  | Issuance of Purchase Order for Distrubution Panel Boards of Street Lighting Network | 10d | 2026-06-23 | 2026-07-04 | ENG-MT-SL-DB-S-100, ENG-MT-SL-DB-A-100 |  | 52.25d |
|  | 4 | **Earthing System Works** |  | 2026-07-07 | 2026-07-15 |  |  |  |
| PRO-SL-PO-150 |  | Issuance of Purchase Order for Lighting Earthing of Street Lighting Network | 8d | 2026-07-07 | 2026-07-15 | ENG-MT-SL-ES-S-100, ENG-MT-SL-ES-A-100 |  | 28.25d |
|  | 5 | **Termination and Testing Works** |  | 2026-07-08 | 2026-07-16 |  |  |  |
| PRO-SL-PO-130 |  | Issuance of Purchase Order for Fuse Boxes of Street Lighting Network | 8d | 2026-07-08 | 2026-07-16 | ENG-MT-SL-TF-S-100, ENG-MT-SL-TF-A-100 |  | 0d |
| PRO-SL-PO-170 |  | Issuance of Purchase Order for Cable Lugs of Street Lighting Network | 8d | 2026-07-08 | 2026-07-16 | ENG-MT-SL-TF-S-110, ENG-MT-SL-TF-A-110 |  | 30.25d |
|  | MF | **Manufacturing of Material** |  | 2026-06-30 | 2026-12-12 |  |  |  |
|  | 1 | **Cabling Works** |  | 2026-06-30 | 2026-09-27 |  |  |  |
| PRO-SL-MF-100 |  | Manufacturing of Lighting Cables for Street Lighting Network | 90d | 2026-06-30 | 2026-09-27 | PRO-SL-PO-100 |  | 42.5d |
|  | 2 | **Lighting Poles Works** |  | 2026-06-30 | 2026-12-12 |  |  |  |
| PRO-SL-MF-110 |  | Manufacturing of Lighting Poles Foundations for Street Lighting Network | 90d | 2026-06-30 | 2026-09-27 | PRO-SL-PO-110 |  | 8.62d |
| PRO-SL-MF-120 |  | Manufacturing of Lighting Poles for Street Lighting Network | 90d | 2026-06-30 | 2026-09-27 | PRO-SL-PO-120 |  | 48.5d |
| PRO-SL-MF-140 |  | Manufacturing of Lighting Fixtures for Street Lighting Network | 128d | 2026-08-07 | 2026-12-12 | PRO-SL-PO-140 |  | 23d |
|  | 3 | **Distribution Panel Board** |  | 2026-07-05 | 2026-10-22 |  |  |  |
| PRO-SL-MF-160 |  | Manufacturing of Distrubution Panel Boards for Street Lighting Network | 110d | 2026-07-05 | 2026-10-22 | PRO-SL-PO-160 |  | 60d |
|  | 4 | **Earthing System Works** |  | 2026-07-16 | 2026-12-02 |  |  |  |
| PRO-SL-MF-150 |  | Manufacturing of Lighting Earthing for Street Lighting Network | 140d | 2026-07-16 | 2026-12-02 | PRO-SL-PO-150 |  | 33d |
|  | 5 | **Termination and Testing Works** |  | 2026-07-17 | 2026-12-12 |  |  |  |
| PRO-SL-MF-130 |  | Manufacturing of Fuse Boxes for Street Lighting Network | 149d | 2026-07-17 | 2026-12-12 | PRO-SL-PO-130 |  | 0d |

| ID | WBS | Task | Duration | Start | Finish | Predecessors | Complete | Total float |
| --- | --- | --- | --- | --- | --- | --- | --- | --- |
| PRO-SL-MF-170 |  | Manufacturing of Cable Lugs for Street Lighting Network | 110d | 2026-07-17 | 2026-11-03 | PRO-SL-PO-170 |  | 36d |
|  | 1DL | **1st Material Delivery & Site Inspection** |  | 2026-09-28 | 2026-12-29 |  |  |  |
|  | 1 | **Cabling Works** |  | 2026-09-28 | 2026-10-04 |  |  |  |
| PRO-SL-1DL-100 |  | 1ST Material Delivery for Lighting Cables of Street Lighting Network | 6d | 2026-09-28 | 2026-10-04 | PRO-SL-MF-100 |  | 36.5d |
|  | 2 | **Lighting Poles Works** |  | 2026-09-28 | 2026-12-19 |  |  |  |
| PRO-SL-1DL-110 |  | 1ST Material Delivery for Lighting Poles Foundations of Street Lighting Network | 6d | 2026-09-28 | 2026-10-04 | PRO-SL-MF-110 |  | 7.5d |
| PRO-SL-1DL-120 |  | 1ST Material Delivery for Lighting Poles of Street Lighting Network | 6d | 2026-09-28 | 2026-10-04 | PRO-SL-MF-120 |  | 41.5d |
| PRO-SL-1DL-140 |  | 1ST Material Delivery for Lighting Fixtures of Street Lighting Network | 6d | 2026-12-13 | 2026-12-19 | PRO-SL-MF-140 |  | 20d |
|  | 3 | **Distribution Panel Board** |  | 2026-10-24 | 2026-10-29 |  |  |  |
| PRO-SL-1DL-160 |  | 1ST Material Delivery for Distrubution Panel Boards of Street Lighting Network | 6d | 2026-10-24 | 2026-10-29 | PRO-SL-MF-160 |  | 51d |
|  | 5 | **Termination and Testing Works** |  | 2026-11-03 | 2026-12-29 |  |  |  |
| PRO-SL-1DL-170 |  | 1ST Material Delivery for Cable Lugs of Street Lighting Network | 15d | 2026-11-03 | 2026-11-21 | PRO-SL-MF-170 |  | 31.12d |
| PRO-SL-1DL-130 |  | 1ST Material Delivery for Fuse Boxes of Street Lighting Network | 15d | 2026-12-13 | 2026-12-29 | PRO-SL-MF-130 |  | 0d |
|  | 4 | **Earthing System Works** |  | 2026-12-03 | 2026-12-09 |  |  |  |
| PRO-SL-1DL-150 |  | 1ST Material Delivery for Lighting Earthing of Street Lighting Network | 6d | 2026-12-03 | 2026-12-09 | PRO-SL-MF-150 |  | 28d |
|  | DL | **Material Delivery & Site Inspection** |  | 2026-10-05 | 2027-01-28 |  |  |  |
|  | 1 | **Cabling Works** |  | 2026-10-05 | 2026-10-05 |  |  |  |
| PRO-R25-SL-DL-100 |  | Material Delivery & Site Inspection of Lighting Cables for Street Lighting Network | 0d | 2026-10-05 | 2026-10-05 | PRO-SL-MF-100 SS, PRO-SL-MF-100 FF, PRO-SL-1DL-100 |  | 36.5d |
|  | 2 | **Lighting Poles Works** |  | 2026-10-05 | 2026-12-20 |  |  |  |
| PRO-R25-SL-DL-110 |  | Material Delivery & Site Inspection of Lighting Poles Foundations for Street Lighting Network | 18d | 2026-10-05 | 2026-10-25 | PRO-SL-MF-110 SS, PRO-SL-MF-110 FF, PRO-SL-1DL-110 |  | 7.5d |
| PRO-R25-SL-DL-120 |  | Material Delivery & Site Inspection of Lighting Poles for Street Lighting Network | 0d | 2026-10-05 | 2026-10-05 | PRO-SL-1DL-120, PRO-SL-MF-120 |  | 41.5d |
| PRO-R25-SL-DL-140 |  | Material Delivery & Site Inspection of Lighting Fixtures for Street Lighting Network | 0d | 2026-12-20 | 2026-12-20 | PRO-SL-MF-140, PRO-SL-1DL-140 |  | 20d |
|  | 3 | **Distribution Panel Board** |  | 2026-10-31 | 2026-10-31 |  |  |  |
| PRO-R25-SL-DL-160 |  | Material Delivery & Site Inspection of Distrubution Panel Boards for Street Lighting Network | 0d | 2026-10-31 | 2026-10-31 | PRO-SL-MF-160, PRO-SL-1DL-160 |  | 51d |
|  | 4 | **Termination and Testing Works** |  | 2026-11-21 | 2027-01-28 |  |  |  |
| PRO-R25-SL-DL-170 |  | Material Delivery & Site Inspection of Cable Lugs for Street Lighting Network | 26d | 2026-11-21 | 2026-12-21 | PRO-SL-MF-170, PRO-SL-1DL-170 |  | 31.12d |
| PRO-R25-SL-DL-130 |  | Material Delivery & Site Inspection of Fuse Boxes for Street Lighting Network | 26d | 2026-12-30 | 2027-01-28 | PRO-SL-MF-130, PRO-SL-1DL-130 |  | 0d |
|  | 5 | **Earthing System Works** |  | 2026-12-10 | 2026-12-10 |  |  |  |
| PRO-R25-SL-DL-150 |  | Material Delivery & Site Inspection of Lighting Earthing for Street Lighting Network | 0d | 2026-12-10 | 2026-12-10 | PRO-SL-MF-150, PRO-SL-1DL-150 |  | 28d |
|  | TE | **Telecom Network** |  | 2026-07-07 | 2026-10-24 |  |  |  |
|  | PO | **Issuance of Purchase Orders** |  | 2026-07-07 | 2026-07-13 |  |  |  |
|  | 1 | **Ducts Works** |  | 2026-07-07 | 2026-07-13 |  |  |  |
| PRO-TE-PO-100 |  | Issuance of Purchase Order for Ducts forTelecom Network | 6d | 2026-07-07 | 2026-07-13 | ENG-MT-TE-A-100, ENG-SH-CTV-S-100 |  | 48.25d |
|  | 3 | **Manholes Works** |  | 2026-07-07 | 2026-07-13 |  |  |  |
| PRO-TE-PO-110 |  | Issuance of Purchase Order for Manholes forTelecom Network | 6d | 2026-07-07 | 2026-07-13 | ENG-MT-TE-A-110, ENG-SH-CTV-S-100 |  | 30.25d |
|  | 2 | **CCTV System Wroks** |  | 2026-07-07 | 2026-07-13 |  |  |  |
| PRO-CTV-PO-100 |  | Issuance of Purchase Order for Civil and Finishes Works of CCTV Complete System | 6d | 2026-07-07 | 2026-07-13 | ENG-MT-CTV-A-100, ENG-SH-CTV-S-100 |  | 45d |
|  | MF | **Manufacturing of Material** |  | 2026-07-14 | 2026-10-11 |  |  |  |
|  | 1 | **Ducts Works** |  | 2026-07-14 | 2026-09-11 |  |  |  |
| PRO-TE-MF-100 |  | Manufacturing of Ducts for Telecom Network | 60d | 2026-07-14 | 2026-09-11 | PRO-TE-PO-100 |  | 56d |
|  | 3 | **Manholes Works** |  | 2026-07-14 | 2026-10-11 |  |  |  |
| PRO-TE-MF-110 |  | Manufacturing of Manholes for Telecom Network | 90d | 2026-07-14 | 2026-10-11 | PRO-TE-PO-110 |  | 35d |
|  | 2 | **CCTV System Wroks** |  | 2026-07-14 | 2026-10-11 |  |  |  |
| PRO-CTV-MF-100 |  | Manufacturing of Civil and Finishes Works for CCTV Complete System | 90d | 2026-07-14 | 2026-10-11 | PRO-CTV-PO-100 |  | 52d |
|  | 1DL | **1st Material Delivery & Site Inspection** |  | 2026-09-12 | 2026-10-22 |  |  |  |
|  | 1 | **Ducts Works** |  | 2026-09-12 | 2026-09-17 |  |  |  |
| PRO-TE-1DL-100 |  | 1ST Material Delivery for Ducts of Telecom Network | 6d | 2026-09-12 | 2026-09-17 | PRO-TE-MF-100 |  | 47d |
|  | 3 | **Manholes Works** |  | 2026-10-12 | 2026-10-18 |  |  |  |
| PRO-TE-1DL-110 |  | 1ST Material Delivery for Manholes of Telecom Network | 6d | 2026-10-12 | 2026-10-18 | PRO-TE-MF-110 |  | 30d |
|  | 2 | **CCTV System Wroks** |  | 2026-10-12 | 2026-10-22 |  |  |  |
| PRO-CTV-1DL-100 |  | 1ST Material Delivery for Civil and Finishes Works of CCTV Complete System | 10d | 2026-10-12 | 2026-10-22 | PRO-CTV-MF-100 |  | 45d |
|  | DL | **Material Delivery & Site Inspection** |  | 2026-09-19 | 2026-10-24 |  |  |  |
|  | 1 | **Ducts Works** |  | 2026-09-19 | 2026-09-19 |  |  |  |
| PRO-R25-TE-DL-100 |  | Material Delivery & Site Inspection for Ducts of Telecom Network | 0d | 2026-09-19 | 2026-09-19 | PRO-TE-MF-100 SS+13d, PRO-TE-MF-100 FF, PRO-TE-1DL-100 |  | 47d |
|  | 3 | **Manholes Works** |  | 2026-10-19 | 2026-10-19 |  |  |  |
| PRO-R25-TE-DL-110 |  | Material Delivery & Site Inspection of Manholes for Telecom Network | 0d | 2026-10-19 | 2026-10-19 | PRO-TE-MF-110 SS+15d, PRO-TE-MF-110 FF, PRO-TE-1DL-110 |  | 30d |
|  | 2 | **CCTV System Wroks** |  | 2026-10-24 | 2026-10-24 |  |  |  |
| PRO-R25-CTV-DL-100 |  | Material Delivery & Site Inspection of for Civil and Finishes Works of CCTV Complete System | 0d | 2026-10-24 | 2026-10-24 | PRO-CTV-MF-100, PRO-CTV-1DL-100, PRO-CTV-1DL-100 FF |  | 45d |
|  | 1 | **Superstructure Works** |  | 2026-01-29 | 2026-10-11 |  |  |  |
|  | 1 | **Issuance of Purchase Orders** |  | 2026-01-29 | 2026-07-13 |  |  |  |
|  | SL | **Pump Stations** |  | 2026-01-29 | 2026-02-01 |  |  |  |
| PRO-SPS-CV-PO-10 |  | Issuance of Purchase Order for Civil Works for Pump Stations | 3.25d | 2026-01-29 A | 2026-02-01 A | ENG-MT-PS-CV-A-150 | 100% |  |
|  | SL1 | **Lift Station** |  | 2026-01-29 | 2026-02-01 |  |  |  |
| PRO-LS-CV-PO-20 |  | Issuance of Purchase Order for Civil Works for Lift Stations | 3.25d | 2026-01-29 A | 2026-02-01 A | ENG-MT-SLS-CV-A-110 | 100% |  |
|  | SL11 | **Storage Tank (TSE)** |  | 2026-07-01 | 2026-07-13 |  |  |  |
| PRO-TSE-CV-PO-30 |  | Issuance of Purchase Order for Civil Works for Storage Tank (TSE) | 11d | 2026-07-01 | 2026-07-13 | ENG-MT-TSE-CV-A-140, ENG-MT-TSE-CV-S-130 |  | 13.25d |
|  | TE | **Storm Drainage Ponds** |  | 2026-06-23 | 2026-07-04 |  |  |  |
| PRO-DPO-CV-PO-10 |  | Issuance of Purchase Order for Civil Works for Storm Drainage Ponds | 10d | 2026-06-23 | 2026-07-04 | ENG-MT-DPO-CV-A-110 |  | 14.25d |
|  | SL12 | **Gaurd Room** |  | 2026-06-23 | 2026-07-05 |  |  |  |
| PRO-GR-CV-PO-40 |  | Issuance of Purchase Order for Civil Works for Gaurd Room | 10.5d | 2026-06-23 | 2026-07-05 | ENG-MT-GR-CV-A-130 |  | 25.75d |

| ID | WBS | Task | Duration | Start | Finish | Predecessors | Total float |
| --- | --- | --- | --- | --- | --- | --- | --- |
|  | SL121 | **Fence** |  | 2026-06-23 | 2026-07-04 |  |  |
| PRO-FE-CV-PO-50 |  | Issuance of Purchase Order for Civil Works for Fence | 9.85d | 2026-06-23 | 2026-07-04 | ENG-MT-FE-CV-A-120 | -0.85d |
|  | 2 | **Manufacturing of Material** |  | 2026-06-23 | 2026-10-11 |  |  |
|  | SL | **Pump Stations** |  | 2026-06-23 | 2026-08-01 |  |  |
| PRO-SPS-CV-MF-10 |  | Manufacturing of Civil Works for Pump Stations | 40d | 2026-06-23 | 2026-08-01 | PRO-SPS-CV-PO-10 | 28d |
|  | SL1 | **Lift Station** |  | 2026-06-23 | 2026-08-01 |  |  |
| PRO-LS-CV-MF-30 |  | Manufacturing of Civil Works for Civil Works for Lift Stations | 40d | 2026-06-23 | 2026-08-01 | PRO-LS-CV-PO-20 | 45d |
|  | TE | **Storm Drainage Ponds** |  | 2026-07-05 | 2026-09-02 |  |  |
| PRO-DPO-CV-MF-10 |  | Manufacturing of Civil Works for Storm Drainage Ponds | 60d | 2026-07-05 | 2026-09-02 | PRO-DPO-CV-PO-10 | 16d |
|  | SL11 | **Storage Tank (TSE)** |  | 2026-07-14 | 2026-08-22 |  |  |
| PRO-TSE-CV-MF-40 |  | Manufacturing of Civil Works for Civil Works for Storage Tank (TSE) | 40d | 2026-07-14 | 2026-08-22 | PRO-TSE-CV-PO-30 | 15d |
|  | SL12 | **Gaurd Room** |  | 2026-07-05 | 2026-08-14 |  |  |
| PRO-GR-CV-MF-50 |  | Manufacturing of Civil Works for Civil Works for Gaurd Room | 40d | 2026-07-05 | 2026-08-14 | PRO-GR-CV-PO-40 | 29.75d |
|  | SL121 | **Fence** |  | 2026-07-04 | 2026-07-24 |  |  |
| PRO-FE-CV-MF-60 |  | Manufacturing of Civil Works for Civil Works for Fence | 20d | 2026-07-04 | 2026-07-24 | PRO-FE-CV-PO-50 | -1d |
|  | SL1211 | **Softscape and Planting Works** |  | 2026-07-13 | 2026-10-11 |  |  |
| PRO-FE-CV-MF-70 |  | Manufacturing of Civil Works for Softscape and Planting Works | 90d | 2026-07-13 | 2026-10-11 | ENG-MT-PL-CV-A-160, ENG-SH-MRK-A-110 | 41.75d |
|  | 3 | **1st Material Delivery & Site Inspection** |  | 2026-08-02 | 2026-10-08 |  |  |
|  | SL | **Pump Stations** |  | 2026-08-02 | 2026-08-03 |  |  |
| PRO-SPS-CV-1DL-10 |  | 1ST Material Delivery for Civil Works for Pump Stations | 2d | 2026-08-02 | 2026-08-03 | PRO-SPS-CV-MF-10 | 24.04d |
|  | SL1 | **Lift Station** |  | 2026-08-02 | 2026-08-02 |  |  |
| PRO-LS-CV-1DL-40 |  | 1ST Material Delivery for Civil Works for Civil Works for Lift Stations | 1d | 2026-08-02 | 2026-08-02 | PRO-LS-CV-MF-30 | 39d |
|  | TE | **Drainage Ponds** |  | 2026-09-03 | 2026-10-08 |  |  |
| PRO-DPO-CV-1DL-10 |  | 1ST Material Delivery for Civil Works for Drainage Ponds | 30d | 2026-09-03 | 2026-10-08 | PRO-DPO-CV-MF-10 | 13d |
|  | SL11 | **Storage Tank (TSE)** |  | 2026-08-23 | 2026-08-23 |  |  |
| PRO-TSE-CV-1DL-50 |  | 1ST Material Delivery for Civil Works for Civil Works for Storage Tank (TSE) | 1d | 2026-08-23 | 2026-08-23 | PRO-TSE-CV-MF-40 | 13d |
|  | SL12 | **Gaurd Room** |  | 2026-08-15 | 2026-08-27 |  |  |
| PRO-GR-CV-1DL-60 |  | 1ST Material Delivery for Civil Works for Civil Works for Gaurd Room | 12d | 2026-08-15 | 2026-08-27 | PRO-GR-CV-MF-50 | 25d |
|  | SL121 | **Fence** |  |  |  |  |  |
|  | 4 | **Material Delivery & Site Inspection** |  | 2026-07-25 | 2026-10-11 |  |  |
|  | SL | **Pump Stations** |  | 2026-08-04 | 2026-08-04 |  |  |
| PRO-SPS-CV-DL-10 |  | Material Delivery & Site Inspection for Civil Works for Pump Stations | 0d | 2026-08-04 | 2026-08-04 | PRO-SPS-CV-MF-10, PRO-SPS-CV-1DL-10 | 24.04d |
|  | SL1 | **Lift Station** |  | 2026-08-03 | 2026-08-03 |  |  |
| PRO-LS-CV-DL-50 |  | Material Delivery & Site Inspection for Civil Works for Lift Stations | 0d | 2026-08-03 | 2026-08-03 | PRO-LS-CV-MF-30, PRO-LS-CV-1DL-40 | 39d |
|  | TE | **Storm Drainage Ponds** |  | 2026-10-10 | 2026-10-10 |  |  |
| PRO-DPO-CV-DL-10 |  | Material Delivery & Site Inspection for Civil Works for Storm Drainage Ponds | 0d | 2026-10-10 | 2026-10-10 | PRO-DPO-CV-MF-10, PRO-DPO-CV-MF-10 SS, PRO-DPO-CV-1DL-10 | 28d |
|  | SL11 | **Storage Tank (TSE)** |  | 2026-08-23 | 2026-08-23 |  |  |
| PRO-TSE-CV-DL-60 |  | Material Delivery & Site Inspection for Civil Works for Storage Tank (TSE) | 0d | 2026-08-23 | 2026-08-23 | PRO-TSE-CV-MF-40 | 14d |
|  | SL12 | **Gaurd Room** |  | 2026-08-29 | 2026-08-29 |  |  |
| PRO-GR-CV-DL-70 |  | Material Delivery & Site Inspection for Civil Works for Gaurd Room | 0d | 2026-08-29 | 2026-08-29 | PRO-GR-CV-MF-50 SS+2d, PRO-GR-CV-MF-50 FF, PRO-GR-CV-1DL-60 | 25d |
|  | SL121 | **Fence** |  | 2026-07-25 | 2026-07-25 |  |  |
| PRO-FE-CV-DL-80 |  | Material Delivery & Site Inspection for Civil Works for Fence | 0d | 2026-07-25 | 2026-07-25 | PRO-FE-CV-MF-60 SS+10d, PRO-FE-CV-MF-60 FF | -0.15d |
|  | SL1211 | **Softscape and Planting Works** |  | 2026-10-11 | 2026-10-11 |  |  |
| PRO-FE-CV-DL-90 |  | Material Delivery & Site Inspection for Softscape and Planting Works | 0d | 2026-10-11 | 2026-10-11 | PRO-FE-CV-MF-70 | 35.75d |
|  | LL | **Long Lead Time Items** |  | 2026-06-23 | 2026-12-23 |  |  |
|  | 2 | **Infrastructure Networks** |  | 2026-06-23 | 2026-10-31 |  |  |
|  | 2 | **CCTV System Wroks of Telecom Network** |  | 2026-06-23 | 2026-10-31 |  |  |
|  | 3 | **Issuance of Purchase Orders** |  | 2026-06-23 | 2026-07-15 |  |  |
| PRO-CTV-LL-PO-10 |  | Issuance of Purchase Order for Low Current Works of CCTV Complete System with All Accessories | 20d | 2026-06-23 | 2026-07-15 | ENG-MT-CTV-A-110 | 43d |
|  | 1 | **Manufacturing of Material** |  | 2026-07-16 | 2026-10-13 |  |  |
| PRO-CTV-LL-MF-10 |  | Manufacturing of Low Current Works for CCTV Complete System with All Accessories | 90d | 2026-07-16 | 2026-10-13 | PRO-CTV-LL-PO-10 | 50d |
|  | 2 | **Material Shipping/Custom Clearance/Delivery** |  | 2026-10-13 | 2026-10-31 |  |  |
| PRO-CTV-LL-SH/DL-10 |  | Material Delivery for Low Current Works of CCTV Complete System with All Accessories | 15d | 2026-10-13 | 2026-10-31 | PRO-CTV-LL-MF-10 | 43.12d |
|  | 4 | **Material Site Inspection** |  | 2026-10-31 | 2026-10-31 |  |  |
| PRO-CTV-LL-MSI-10 |  | Material Site Inspection for Low Current Works of CCTV Complete System with All Accessories | 0d | 2026-10-31 | 2026-10-31 | PRO-CTV-LL-SH/DL-10 | 43.12d |
|  | 1 | **Superstructure Works** |  | 2026-07-04 | 2026-12-23 |  |  |
|  | SL | **Pump Stations** |  | 2026-07-04 | 2026-12-20 |  |  |
|  | 1 | **Issuance of Purchase Orders** |  | 2026-07-04 | 2026-08-06 |  |  |
| PRO-SPS-LL-PO-10 |  | Issuance of Purchase Order for Electromechanical Works for Pump Stations | 30d | 2026-07-04 | 2026-08-06 | ENG-MT-SPS-MC-A-110 | 31.25d |
|  | 2 | **Manufacturing of Material** |  | 2026-08-07 | 2026-10-05 |  |  |
| PRO-SPS-LL-MF-10 |  | Manufacturing of Electromechanical Works for Pump Stations | 60d | 2026-08-07 | 2026-10-05 | PRO-SPS-LL-PO-10 | 37d |
|  | 3 | **Material Shipping/Custom Clearance/Delivery** |  | 2026-10-06 | 2026-11-09 |  |  |
| PRO-SPS-LL-SH/DL-10 |  | Material Delivery for Electromechanical Works for Pump Stations | 30d | 2026-10-06 | 2026-11-09 | PRO-SPS-LL-MF-10 | 32d |
|  | 4 | **Material Site Inspection** |  | 2026-11-10 | 2026-12-20 |  |  |
| PRO-SPS-LL-MSI-10 |  | Material Site Inspection for Electromechanical Works for Pump Stations | 35d | 2026-11-10 | 2026-12-20 | PRO-SPS-LL-SH/DL-10 | 32d |
|  | SL1 | **Lift Stations** |  | 2026-07-04 | 2026-12-23 |  |  |
|  | 1 | **Issuance of Purchase Orders** |  | 2026-07-04 | 2026-08-06 |  |  |
| PRO-LS-LL-PO-20 |  | Issuance of Purchase Order for Electromechanical Works for Lift Stations | 30d | 2026-07-04 | 2026-08-06 | ENG-MT-SPS-MC-A-110 | 18.25d |
|  | 2 | **Manufacturing of Material** |  | 2026-08-07 | 2026-10-05 |  |  |
| PRO-LS-LL-MF-20 |  | Manufacturing of Electromechanical Works for Lift Stations | 60d | 2026-08-07 | 2026-10-05 | PRO-LS-LL-PO-20 | 22d |

| ID | WBS | Task | Duration | Start | Finish | Predecessors | Complete | Total float |
| --- | --- | --- | --- | --- | --- | --- | --- | --- |
|  | 3 | **Material Shipping/Custom Clearance/Delivery** |  | 2026-10-06 | 2026-11-09 |  |  |  |
| PRO-LS-LL-SH/DL-20 |  | Material Delivery for Electromechanical Works for Lift Stations | 30d | 2026-10-06 | 2026-11-09 | PRO-LS-LL-MF-20 |  | 19d |
|  | 4 | **Material Site Inspection** |  | 2026-11-10 | 2026-12-23 |  |  |  |
| PRO-LS-LL-MSI-20 |  | Material Site Inspection for Electromechanical Works for Lift Stations | 38d | 2026-11-10 | 2026-12-23 | PRO-LS-LL-SH/DL-20 |  | 19d |
|  | SL2 | **Storage Tank (TSE)** |  | 2026-07-04 | 2026-12-23 |  |  |  |
|  | 1 | **Issuance of Purchase Orders** |  | 2026-07-04 | 2026-08-06 |  |  |  |
| PRO-TSE-LL-PO-30 |  | Issuance of Purchase Order for Electromechanical Works for Storage Tank (TSE) | 30d | 2026-07-04 | 2026-08-06 | ENG-MT-TSE-MC-A-120 |  | 18.25d |
|  | 2 | **Manufacturing of Material** |  | 2026-08-07 | 2026-10-05 |  |  |  |
| PRO-TSE-LL-MF-30 |  | Manufacturing of Electromechanical Works for Storage Tank (TSE) | 60d | 2026-08-07 | 2026-10-05 | PRO-TSE-LL-PO-30 |  | 22d |
|  | 3 | **Material Shipping/Custom Clearance/Delivery** |  | 2026-10-06 | 2026-11-09 |  |  |  |
| PRO-TSE-LL-SH/DL-30 |  | Material Delivery for Electromechanical Works for Storage Tank (TSE) | 30d | 2026-10-06 | 2026-11-09 | PRO-TSE-LL-MF-30 |  | 19d |
|  | 4 | **Material Site Inspection** |  | 2026-11-10 | 2026-12-23 |  |  |  |
| PRO-TSE-LL-MSI-30 |  | Material Site Inspection for Electromechanical Works for Storage Tank (TSE) | 38d | 2026-11-10 | 2026-12-23 | PRO-TSE-LL-SH/DL-30 |  | 19d |
|  | CON | **Construction Works** |  | 2026-03-07 | 2027-02-23 |  |  |  |
|  | INF | **Infrastructure Networks** |  | 2026-03-07 | 2027-02-14 |  |  |  |
|  | EW | **Earthworks** |  | 2026-03-07 | 2026-08-01 |  |  |  |
|  | EW | **Earthworks** |  | 2026-03-07 | 2026-08-01 |  |  |  |
| CO-EW-200 |  | Excavation Works Upto Design Level for Earthworks-P1(Completed) | 77d | 2026-03-07 A | 2026-06-15 A | MS-CS-PS SS, MOB-30, MOB-20, MOB-80, MOB-40, MOB-50, MOB-60 FF+15d, MOB-10, MOB-70, PRE-CON-MDC-10, PRE-CON-MDC-20, PRE-CON-MDC-30, PRE-CON-MDC-40, PRE-CON-MDC-50, PRE-CON-MDC-60, PRE-CON-MDC-70, PRE-CON-MDC-80 | 100% |  |
| CO-EW-210 |  | Excavation Works Upto Design Level for Earthworks-P2(Completed) | 59.25d | 2026-04-02 A | 2026-06-15 A | CO-EW-200 SS | 100% |  |
| CO-EW-220 |  | Excavation Works Upto Design Level for Earthworks-P3(Completed) | 59.25d | 2026-04-02 A | 2026-06-15 A | CO-EW-210 SS | 100% |  |
| CO-EW-110 |  | Embankments Works Upto Design Level for Earthworks(Completed) | 38d | 2026-04-28 A | 2026-06-15 A | CO-EW-200 SS+10d, CO-EW-220 SS, CO-EW-220 FF | 100% |  |
| CO-EW-200_R |  | Excavation Works Upto Design Level for Earthworks-P1(Remaining) | 10d | 2026-07-01 | 2026-07-13 | MS-CF-EBL FF, MS-CF-ENG FF, MS-CS-PS SS, MOB-30, MOB-20, MOB-80, MOB-40, MOB-50, MOB-60 FF+15d, MOB-10, MOB-70, PRE-CON-MDC-10, PRE-CON-MDC-20, PRE-CON-MDC-30, PRE-CON-MDC-40, PRE-CON-MDC-50, PRE-CON-MDC-60, PRE-CON-MDC-70, PRE-CON-MDC-80, CO-EW-200 |  | 0d |
| CO-EW-210_R |  | Excavation Works Upto Design Level for Earthworks-P2(Remaining) | 10d | 2026-07-01 | 2026-07-13 | MS-CF-MOB FF, CO-EW-200_R SS, CO-EW-210, ENG-SH-HS-S-100 FS+4.35d, ENG-SH-LS-S-160_R |  | 4.65d |
| CO-EW-220_R |  | Excavation Works Upto Design Level for Earthworks-P3(Remaining) | 11.52d | 2026-07-01 | 2026-07-15 | CO-EW-210_R SS, CO-EW-220 |  | 9.65d |
| CO-EW-110_R |  | Embankments Works Upto Design Level for Earthworks(Remaining) | 16d | 2026-07-13 | 2026-08-01 | CO-EW-200_R SS+10d, CO-EW-220_R SS, CO-EW-220_R FF, CO-EW-110 |  | 0d |
|  | SD | **Storm Drainage Network** |  | 2026-07-13 | 2026-11-01 |  |  |  |
|  | MH25-MH12 | **FROM MH-25:MH-12** |  | 2026-07-13 | 2026-09-30 |  |  |  |
|  | ML | **Main Line Sections** |  | 2026-07-13 | 2026-08-03 |  |  |  |
| CO-SD-ML-100 |  | Trench Excavation and Bedding Works for Main Lines of Storm Drainage Network | 3d | 2026-07-13 | 2026-07-16 | CO-EW-200_R SS+10d, CO-EW-110_R SS, ENG-SH-SD-ML-A-110, ENG-MT-SD-ML-A-110, PRO-SD-1DL-110 SS, CO-EW-220_R SS, CO-EW-210_R |  | 4.65d |
| CO-SD-ML-120 |  | Pipes Laying Works for Main Lines of Storm Drainage Network | 5d | 2026-07-16 | 2026-07-22 | CO-SD-ML-100, PRO-R25-SD-DL-120, CO-EW-210_R |  | 4.65d |
| CO-SD-ML-130 |  | Trench Backfilling and Compaction Works for Main Lines of Storm Drainage Network | 10d | 2026-07-22 | 2026-08-03 | CO-SD-ML-120, CO-EW-210_R, CO-EW-220_R, PRO-R25-SD-DL-120 |  | 4.65d |
|  | MH | **Manholes** |  | 2026-08-09 | 2026-09-06 |  |  |  |
| CO-SD-MH-180 |  | Trench Excavation and Bedding Works for Manholes of Storm Drainage Network | 7d | 2026-08-09 | 2026-08-16 | CO-SD-ML-120, ENG-MT-SD-ML-A-100, PRO-R25-SD-DL-100 SS, PRO-SD-MF-100, CO-EW-210_R, CO-EW-220_R, CO-EW-110_R |  | 0d |
| CO-SD-MH-190 |  | Install RC Footing Works for Manholes of Storm Drainage Network | 7d | 2026-08-17 | 2026-08-24 | CO-SD-MH-180, PRO-R25-SD-DL-100 |  | 0d |
| CO-SD-MH-200 |  | Install RC Wall Rings & Slab Works for Manholes of Storm Drainage Network | 4d | 2026-08-25 | 2026-08-29 | CO-SD-MH-190, PRO-R25-SD-DL-100 |  | 0d |
| CO-SD-MH-220 |  | Backfilling Works for Manholes of Storm Drainage Network | 7d | 2026-08-30 | 2026-09-06 | CO-SD-MH-200, CO-SD-ML-130 FF |  | 0d |
|  | CB | **Catch Basin Sections** |  | 2026-08-17 | 2026-09-30 |  |  |  |
| CO-SD-CB-140 |  | Trench Excavation and Bedding Works for Catch Basins of Storm Drainage Network | 10d | 2026-08-17 | 2026-08-27 | CO-SD-MH-180, ENG-MT-SD-CB-A-110, PRO-SD-1DL-120, PRO-SD-1DL-130, PRO-R25-SD-DL-100 |  | 8d |
| CO-SD-CB-150 |  | Installation and Pipes Laying Connection Works for Catch Basins of Storm Drainage Network | 10d | 2026-09-07 | 2026-09-17 | CO-SD-CB-140, PRO-R25-SD-DL-110, PRO-R25-SD-DL-130, CO-SD-MH-220 |  | 0d |
| CO-SD-CB-170 |  | Trench Backfilling and Compaction Works for Catch Basins of Storm Drainage Network | 10d | 2026-09-19 | 2026-09-30 | CO-SD-CB-150, CO-SD-ML-130 FF, CO-SD-MH-220 |  | 0d |
|  | MH25-MH121 | **FROM MH-12:MH-01** |  | 2026-08-01 | 2026-11-01 |  |  |  |
|  | ML | **Main Line Sections** |  | 2026-08-01 | 2026-09-27 |  |  |  |
| CO-SD-ML-140 |  | Trench Excavation and Bedding Works for Main Lines of Storm Drainage Network | 14d | 2026-08-01 | 2026-08-17 | CO-SD-ML-100, PRO-R25-SW-DL-100, CO-SD-ML-120 SS, CO-EW-220_R, CO-EW-110_R |  | 9.5d |
| CO-SD-ML-150 |  | Pipes Laying Works for Main Lines of Storm Drainage Network | 14d | 2026-08-17 | 2026-09-02 | CO-SD-ML-140, CO-SD-ML-120 |  | 9.5d |
| CO-SD-ML-160 |  | Trench Backfilling and Compaction Works for Main Lines of Storm Drainage Network | 20d | 2026-09-02 | 2026-09-27 | CO-SD-ML-150, CO-SD-ML-130 |  | 21.5d |
|  | MH | **Manholes** |  | 2026-09-02 | 2026-10-11 |  |  |  |
| CO-SD-MH-230 |  | Trench Excavation and Bedding Works for Manholes of Storm Drainage Network | 9d | 2026-09-02 | 2026-09-13 | CO-SD-ML-150, CO-SD-MH-180, PRO-R25-SD-DL-100 |  | 9.5d |
| CO-SD-MH-240 |  | Install RC Footing Works for Manholes of Storm Drainage Network | 7d | 2026-09-13 | 2026-09-21 | CO-SD-MH-230, CO-SD-MH-190, PRO-R25-SD-DL-100 |  | 9.5d |
| CO-SD-MH-250 |  | Install RC Wall Rings & Slab Works for Manholes of Storm Drainage Network | 7d | 2026-09-21 | 2026-09-30 | CO-SD-MH-240, CO-SD-MH-200 |  | 9.5d |
| CO-SD-MH-260 |  | Backfilling Works for Manholes of Storm Drainage Network | 9d | 2026-09-30 | 2026-10-11 | CO-SD-MH-250, CO-SD-ML-160 FF, CO-SD-MH-220 |  | 9.5d |
|  | CB | **Catch Basin Sections** |  | 2026-10-01 | 2026-11-01 |  |  |  |
| CO-SD-CB-180 |  | Trench Excavation and Bedding Works for Catch Basins of Storm Drainage Network | 9d | 2026-10-01 | 2026-10-11 | CO-SD-MH-230, CO-SD-CB-140, CO-SD-CB-170 |  | 0d |
| CO-SD-CB-190 |  | Installation and Pipes Laying Connection Works for Catch Basins of Storm Drainage Network | 9d | 2026-10-12 | 2026-10-21 | CO-SD-CB-180, CO-SD-CB-150 |  | 0d |
| CO-SD-CB-200 |  | Trench Backfilling and Compaction Works for Catch Basins of Storm Drainage Network | 9d | 2026-10-22 | 2026-11-01 | CO-SD-CB-190, CO-SD-ML-160 FF, CO-SD-CB-170, CO-SD-MH-260 |  | 0d |
|  | SW | **Sewage Network** |  | 2026-08-01 | 2026-10-12 |  |  |  |
|  | 2 | **FROM MH-18:MH-10** |  | 2026-08-01 | 2026-10-03 |  |  |  |
|  | ML | **Main Line Sections** |  | 2026-08-01 | 2026-09-21 |  |  |  |
| CO-SW-ML-100 |  | Trench Excavation and Bedding Works for Main Lines of Sewage Network | 12d | 2026-08-01 | 2026-08-15 | ENG-SH-SW-ML-A-110, ENG-MT-SW-ML-A-110, PRO-SW-1DL-100, CO-SD-ML-130 SS+3d, CO-EW-220_R, CO-EW-110_R |  | 0d |
| CO-SW-ML-120 |  | Pipes Laying Works for Main Lines of Sewage Network | 12d | 2026-08-15 | 2026-08-29 | CO-SW-ML-100 |  | 0d |
| CO-SW-ML-130 |  | Trench Backfilling and Compaction Works for Main Lines of Sewage Network | 20d | 2026-08-29 | 2026-09-21 | CO-SW-ML-120 |  | 3d |
|  | 1 | **Manholes** |  | 2026-08-29 | 2026-10-03 |  |  |  |
| CO-SW-MH-160 |  | Excavation Works for Main Line Manholes of Sewage Network | 7d | 2026-08-29 | 2026-09-06 | CO-SW-ML-120, ENG-MT-SW-ML-A-100, PRO-SW-1DL-110 |  | 0d |
| CO-SW-MH-170 |  | Installation RC Footing Works for Main Line Manholes of Sewage Network | 7d | 2026-09-06 | 2026-09-14 | CO-SW-MH-160, CO-SW-ML-120 FF |  | 1d |
| CO-SW-MH-180 |  | Install Grp Liner Wall Works for Main Line Manholes of Sewage Network | 7d | 2026-09-14 | 2026-09-22 | CO-SW-MH-170 |  | 1d |
| CO-SW-MH-190 |  | Pouring Grp Liner Wall Works for Main Line Manholes of Sewage Network | 4d | 2026-09-22 | 2026-09-28 | CO-SW-MH-180 |  | 4d |
| CO-SW-MH-200 |  | Backfilling Works for Main Line Manholes of Sewage Network | 4d | 2026-09-28 | 2026-10-03 | CO-SW-MH-190, CO-SW-ML-130 FF, CO-SW-ML-130 |  | 4d |
|  | 1 | **FROM MH-10:MH-01** |  | 2026-08-15 | 2026-10-12 |  |  |  |
|  | ML | **Main Line Sections** |  | 2026-08-15 | 2026-09-13 |  |  |  |
| CO-SW-ML-140 |  | Trench Excavation and Bedding Works for Main Lines of Sewage Network | 6d | 2026-08-15 | 2026-08-22 | CO-SW-ML-100, PRO-R25-SW-DL-100 SS |  | 1.54d |
| CO-SW-ML-150 |  | Pipes Laying Works for Main Lines of Sewage Network | 7d | 2026-08-22 | 2026-08-30 | CO-SW-ML-140, CO-SW-ML-120 SS |  | 1.54d |

| ID | WBS | Task | Duration | Start | Finish | Predecessors | Total float |
| --- | --- | --- | --- | --- | --- | --- | --- |
| CO-SW-ML-160 |  | Trench Backfilling and Compaction Works for Main Lines of Sewage Network | 12d | 2026-08-30 | 2026-09-13 | CO-SW-ML-150, CO-SW-ML-130 SS | 2d |
|  | 1 | **Manholes** |  | 2026-09-06 | 2026-10-12 |  |  |
| CO-SW-MH-210 |  | Excavation Works for Main Line Manholes of Sewage Network | 8d | 2026-09-06 | 2026-09-15 | CO-SW-ML-150, CO-SW-MH-160, PRO-R25-SW-DL-110 | 0d |
| CO-SW-MH-220 |  | Installation RC Footing Works for Main Line Manholes of Sewage Network | 7d | 2026-09-15 | 2026-09-24 | CO-SW-MH-210, CO-SW-MH-170, CO-SW-ML-160 | 0d |
| CO-SW-MH-230 |  | Install Grp Liner Wall Works for Main Line Manholes of Sewage Network | 7d | 2026-09-24 | 2026-10-03 | CO-SW-MH-220, CO-SW-MH-180 | 0d |
| CO-SW-MH-240 |  | Pouring Grp Liner Wall Works for Main Line Manholes of Sewage Network | 4d | 2026-10-03 | 2026-10-07 | CO-SW-MH-230, CO-SW-MH-190 | 0d |
| CO-SW-MH-250 |  | Backfilling Works for Main Line Manholes of Sewage Network | 4d | 2026-10-07 | 2026-10-12 | CO-SW-MH-240, CO-SW-ML-160, CO-SW-MH-200 | 0d |
|  | PW | **Potable Water Network** |  | 2026-10-12 | 2026-12-22 |  |  |
|  | ML | **Main Line Sections** |  | 2026-10-12 | 2026-11-09 |  |  |
| CO-PW-ML-100 |  | Trench Excavation and Bedding Works for Main Lines of Potable Water Network | 8d | 2026-10-12 | 2026-10-21 | ENG-SH-PW-ML-A-110, ENG-MT-PW-ML-A-100, PRO-PW-1DL-100_R, PRO-R25-PW-DL-100_R, CO-SW-ML-130, CO-SW-MH-250, PRO-PW-MF-100_R, CO-SW-MH-250 FF | 0d |
| CO-PW-ML-110 |  | Pipes Laying and accessories for Main Lines of Potable Water Network | 8d | 2026-10-21 | 2026-10-31 | CO-PW-ML-100 | 0d |
| CO-PW-ML-130 |  | Trench Backfilling and Compaction Works for Main Lines of Potable Water Network | 8d | 2026-10-31 | 2026-11-09 | CO-PW-ML-110 | 2d |
|  | VC | **Valve Chamber** |  | 2026-11-09 | 2026-11-28 |  |  |
| CO-PW-VC-170 |  | Excavation Works for Main Line Valves and Valve Chambers of Potable Water Network | 2d | 2026-11-09 | 2026-11-11 | CO-PW-ML-110, ENG-MT-PW-ML-A-110, PRO-PW-1DL-110, CO-PW-ML-130 | 2d |
| CO-PW-VC180 |  | Installation Works for Valve Chambers of Potable Water Network | 4d | 2026-11-11 | 2026-11-16 | CO-PW-VC-170 | 2d |
| CO-PW-VC-190 |  | Installation Works for Valves of Potable Water Network | 7d | 2026-11-16 | 2026-11-24 | CO-PW-VC180, PRO-PW-1DL-110, PRO-R25-PW-DL-110 | 2d |
| CO-PW-VC-220 |  | Backfilling Works for Main Line Valves and Valve Chambers of Potable Water Network | 3d | 2026-11-24 | 2026-11-28 | CO-PW-VC-190, CO-PW-ML-130 FF | 2d |
|  | FH | **Fire Hydrant** |  | 2026-11-28 | 2026-12-22 |  |  |
| CO-PW-FH-140 |  | Excavation Works for Fire Hydrants of Potable Water Network | 7d | 2026-11-28 | 2026-12-06 | CO-PW-VC-170, ENG-SH-PW-FH-A-110, ENG-MT-PW-FH-A-100, PRO-PW-1DL-120, CO-PW-ML-130, CO-PW-VC180, CO-PW-VC-220, PRO-R25-PW-DL-120 | 2d |
| CO-PW-FH-150 |  | Installation Works for Fire Hydrant of Potable Water Network | 7d | 2026-12-06 | 2026-12-14 | CO-PW-FH-140 | 2d |
| CO-PW-FH-160 |  | Trench Backfilling and Compaction Works for Fire Hydrants of Potable Water Network | 7d | 2026-12-14 | 2026-12-22 | CO-PW-FH-150, CO-PW-VC-220 FF | 2d |
|  | IR | **Irrigation Network** |  | 2026-10-21 | 2026-12-19 |  |  |
|  | ML | **Main Line Pipes** |  | 2026-10-21 | 2026-12-19 |  |  |
| CO-IR-ML-100 |  | Trench Excavation and Bedding Works for Main Lines of Irrigation Network | 10d | 2026-10-21 | 2026-11-02 | ENG-SH-IR-ML-A-110, ENG-MT-IR-ML-A-100, PRO-IR-1DL-100, PRO-R25-IR-DL-100, CO-PW-ML-100, ENG-SH-HS-S-100 | 6.5d |
| CO-IR-ML-110 |  | Pipes Laying Works for Main Lines of Irrigation Network | 9.5d | 2026-11-02 | 2026-11-12 | CO-IR-ML-100, PRO-IR-1DL-100, CO-PW-ML-110 | 6.5d |
| CO-IR-ML-120 |  | Installation Works for Main Line Valves of Irrigation Network | 9d | 2026-11-14 | 2026-11-23 | CO-IR-ML-110, ENG-MT-IR-ML-A-110, PRO-IR-1DL-110, PRO-R25-IR-DL-110 SS, CO-SW-MH-250, CO-PW-ML-130, PRO-R25-IR-DL-110 FF | 6.5d |
| CO-IR-ML-130 |  | Trench Backfilling and Compaction Works for Main Lines of Irrigation Network | 9d | 2026-11-28 | 2026-12-08 | CO-IR-ML-120, CO-PW-FH-140 SS, CO-PW-FH-140 FF | 3d |
| CO-IR-ML-140 |  | Installation Works for Bulbblers And Sprinklers of Irrigation Network | 9d | 2026-12-08 | 2026-12-19 | CO-IR-ML-130 | 10d |
|  | TSE | **Treated Sewage Effluent (Tse)** |  | 2026-10-21 | 2026-12-19 |  |  |
|  | ML | **Main Line Pipes** |  | 2026-10-21 | 2026-12-19 |  |  |
| CO-TSE-ML-150 |  | Trench Excavation and Bedding Works for Main Lines of Treated Sewage Effluent (Tse) | 9d | 2026-10-21 | 2026-11-01 | ENG-SH-TSE-ML-A-120, ENG-MT-IR-ML-A-120, PRO-TSE-1DL-120, PRO-R25-TSE-DL-120_R, CO-IR-ML-100 SS, CO-PW-ML-100 | 8d |
| CO-TSE-ML-160 |  | Pipes Laying Works for Main Lines of Treated Sewage Effluent (Tse) | 9d | 2026-11-02 | 2026-11-12 | CO-TSE-ML-150, PRO-TSE-1DL-120, CO-IR-ML-110 SS | 8d |
| CO-TSE-ML-170 |  | Installation Works for Main Line Valves of Treated Sewage Effluent (Tse) | 8d | 2026-11-14 | 2026-11-22 | CO-TSE-ML-160, ENG-MT-IR-ML-A-130, PRO-TSE-1DL-130, PRO-R25-TSE-DL-130, CO-IR-ML-120 SS | 7.5d |
| CO-TSE-ML-180 |  | Trench Backfilling and Compaction Works for Treated Sewage Effluent (Tse) | 9d | 2026-11-28 | 2026-12-08 | CO-TSE-ML-170, CO-IR-ML-130 SS | 3d |
| CO-TSE-ML-190 |  | Installation Works for Valve and Washout Chambers of Treated Sewage Effluent (Tse) | 9d | 2026-12-08 | 2026-12-19 | CO-TSE-ML-180, CO-IR-ML-140 SS | 22d |
|  | MV | **Medium Voltage Network** |  | 2026-10-31 | 2026-12-20 |  |  |
|  | CW | **Cabling Works** |  | 2026-10-31 | 2026-12-20 |  |  |
| CO-MV-ML-250 |  | Trench Excavation and Bedding Works for Medium Voltage Network | 11d | 2026-10-31 | 2026-11-12 | ENG-SH-MV-A-110, ENG-MT-MV-ML-A-100, PRO-MV-1DL-100, PRO-MV-DL-100, CO-TSE-ML-150 SS, CO-SW-TF-100, CO-SD-ML-130, CO-SD-MH-220, CO-SD-CB-170, CO-SD-ML-160, CO-SD-MH-260, CO-SD-CB-200 SS, CO-SW-ML-130, CO-SW-MH-200, CO-SW-ML-160, CO-SW-MH-250, CO-PW-ML-110 | 0d |
| CO-MV-ML-260 |  | Cable Laying Works for Medium Voltage Network | 16d | 2026-11-12 | 2026-12-01 | CO-MV-ML-250 | 0d |
| CO-MV-ML-270 |  | Trench Backfilling and Compaction Works for Medium Voltage Network | 16d | 2026-12-01 | 2026-12-20 | CO-MV-ML-260 | 0d |
|  | SL | **Street Lighting Network** |  | 2026-10-31 | 2027-01-17 |  |  |
|  | LP | **Lighting Poles Works** |  | 2026-10-31 | 2026-12-10 |  |  |
| CO-SL-LP-300 |  | Foundation Excavation Works for Lighting Poles of Street Lighting Network | 8d | 2026-10-31 | 2026-11-09 | ENG-SH-LV-A-120, ENG-SH-SL-A-110, ENG-MT-SL-A-100, PRO-R25-SL-DL-110, CO-MV-ML-250 SS, CO-SD-CB-200 SS+2d, CO-SD-MH-260, CO-SD-ML-160, CO-SW-ML-130, CO-SW-MH-200, CO-SW-ML-160, CO-SW-MH-250 | 3d |
| CO-SL-LP-310 |  | Installation Works for Lighting Poles Foundation of Street Lighting Network | 8d | 2026-11-09 | 2026-11-18 | CO-SL-LP-300 | 3d |
| CO-SL-LP-320 |  | Installation Works for Lighting Poles of Street Lighting Network | 9d | 2026-11-18 | 2026-11-29 | CO-SL-LP-310, ENG-MT-SL-A-110, PRO-R25-SL-DL-120 | 3d |
| CO-SL-LP-210 |  | Backfilling Works for Lighting Poles of Street Lighting Network | 10d | 2026-11-29 | 2026-12-10 | CO-SL-LP-320 | 3d |
|  | CW | **Cabling Works** |  | 2026-11-09 | 2026-12-08 |  |  |
| CO-SL-CL-250 |  | Trench Excavation and Bedding Works for Street Lighting Network | 7d | 2026-11-09 | 2026-11-17 | CO-SL-LP-310 SS, ENG-SH-LV-A-120, ENG-SH-SL-A-110, ENG-MT-SL-ML-A-100, PRO-SL-1DL-100, PRO-R25-SL-DL-100, CO-SL-LP-300 | 6d |
| CO-SL-CL-260 |  | Cable Laying Works for Street Lighting Network | 7d | 2026-11-17 | 2026-11-25 | CO-SL-CL-250, CO-SL-LP-300 | 6d |
| CO-SL-CL-270 |  | Trench Backfilling and Compaction Works for Street Lighting Network | 8d | 2026-11-29 | 2026-12-08 | CO-SL-CL-260, CO-SL-LP-210 SS | 3d |
|  | DPB | **Distrubution Panel Boards** |  | 2026-12-20 | 2027-01-17 |  |  |
| CO-SL-DB-250 |  | Foundation Excavation Works For Panel Boards of Street Lighting Network | 6d | 2026-12-20 | 2026-12-27 | CO-SL-LP-210, CO-SL-CL-270, ENG-MT-SL-DB-A-100, CO-MV-ML-270, CO-TSE-ML-180 | 1.5d |
| CO-SL-DB-260 |  | Installation Works for Panel Board Concrete Foundations of Street Lighting Network | 6d | 2026-12-27 | 2027-01-03 | CO-SL-DB-250, PRO-R25-SL-DL-160 | 1.5d |
| CO-SL-DB-270 |  | Installation Works for Lighting Panel Boards of Street Lighting Network | 6d | 2027-01-03 | 2027-01-10 | CO-SL-DB-260 | 1.5d |
| CO-SL-DB-220 |  | A wall of concrete blocks to install the KWH meter of Street Lighting Network | 6d | 2027-01-10 | 2027-01-17 | CO-SL-DB-270 | 8.5d |
|  | TE | **Telecom Network** |  | 2026-11-12 | 2026-12-31 |  |  |
|  | PD | **Ducts Works** |  | 2026-11-12 | 2026-12-13 |  |  |
| CO-TE-DW-100 |  | Trench Excavation and Bedding Works for Ducts of Telecom Network | 4d | 2026-11-12 | 2026-11-17 | ENG-SH-TE-A-110, ENG-MT-TE-A-100, PRO-TE-1DL-100, PRO-R25-TE-DL-100, CO-MV-ML-250 | 0.5d |
| CO-TE-DW-110 |  | Pipes Laying Works for Ducts of Telecom Network | 4d | 2026-11-17 | 2026-11-22 | CO-TE-DW-100 | 0.5d |
| CO-TE-DW-130 |  | Trench Backfilling and Compaction Works for Ducts of Telecom Network | 8d | 2026-11-22 | 2026-12-01 | CO-TE-DW-110 | 1.5d |
| CO-TE-DW-120 |  | Pouring Road Crossing Concrete Encasement | 10d | 2026-12-01 | 2026-12-13 | CO-TE-DW-130 | 1.5d |
|  | MH | **Manholes Works** |  | 2026-11-22 | 2026-12-14 |  |  |
| CO-TE-MH-140 |  | Excavation Works for Manholes of Telecom Network | 5d | 2026-11-22 | 2026-11-28 | CO-TE-DW-110, ENG-SH-TE-A-110, ENG-MT-TE-A-110, PRO-TE-1DL-110, PRO-R25-TE-DL-110 | 0.5d |
| CO-TE-MH-150 |  | Installation Works for Manholes of Telecom Network | 7d | 2026-11-28 | 2026-12-06 | CO-TE-MH-140 | 0.5d |
| CO-TE-MH-160 |  | Backfilling Works for Manholes of Telecom Network | 7d | 2026-12-06 | 2026-12-14 | CO-TE-MH-150, CO-TE-DW-120 FF | 0.5d |
|  | DD | **CCTV System Wroks** |  | 2026-12-14 | 2026-12-31 |  |  |
| CO-TE-CTV-100 |  | Digging and Pulling Trenches PVC ducts , Backfilling, Excavations, of Power Cable | 5d | 2026-12-14 | 2026-12-20 | CO-TE-MH-160, CO-TE-DW-120, ENG-SH-MSN-A-120, ENG-SH-CTV-A-110, ENG-MT-CTV-A-100, PRO-CTV-1DL-100, PRO-R25-CTV-DL-100, PRO-CTV-LL-MSI-10 FF | 0.5d |
| CO-TE-CTV-110 |  | Installation of Network Cable Cat.6A from Network switch to CCTV Camera and ACS Device | 5d | 2026-12-20 | 2026-12-26 | CO-TE-CTV-100 | 0.5d |
| CO-TE-CTV-130 |  | Installation of Access Control System | 5d | 2026-12-26 | 2026-12-31 | CO-TE-CTV-110 | 0.5d |
|  | RD | **Road Works** |  | 2026-12-03 | 2027-01-31 |  |  |

| ID | WBS | Task | Duration | Start | Finish | Predecessors | Total float |
| --- | --- | --- | --- | --- | --- | --- | --- |
|  | 3 | **ST+1000:ST+1531** |  | 2026-12-03 | 2027-01-04 |  |  |
|  | RD | **Pre-Bituminous Construction** |  | 2026-12-03 | 2027-01-04 |  |  |
| CO-RD-PB-140 |  | Subgrade Layer for Road Works | 13.5d | 2026-12-03 | 2026-12-19 | CO-EW-200_R, CO-EW-110_R, CO-SD-ML-130, CO-SD-MH-220, CO-SD-CB-170, CO-SW-ML-130, CO-SW-MH-200, CO-PW-ML-130, CO-PW-VC-220, CO-IR-ML-130 SS, CO-TSE-ML-180 SS+2d, CO-MV-ML-270 SS+2d, CO-SL-LP-210 SS+1d, CO-SL-CL-270 SS+1d, CO-TE-DW-120 SS, PRO-R25-RD-DL-100, CO-EW-220_R, CO-MV-ML-260, CO-TE-DW-130 | 0d |
| CO-RD-PB-150 |  | Aggregate Base Course Layer for Road Works | 14d | 2026-12-20 | 2027-01-04 | CO-RD-PB-140, PRO-R25-RD-DL-110, CO-TSE-ML-180 | 0d |
|  | 2 | **ST+500:ST+1000** |  | 2026-12-20 | 2027-01-17 |  |  |
|  | RD | **Pre-Bituminous Construction** |  | 2026-12-20 | 2027-01-17 |  |  |
| CO-RD-PB-120 |  | Subgrade Layer for Road Works | 10.8d | 2026-12-20 | 2027-01-02 | CO-RD-PB-140, CO-SD-ML-160, CO-SD-MH-260, CO-SD-CB-200, CO-SW-ML-160, CO-SW-MH-250, CO-PW-ML-130, CO-PW-VC-220, CO-PW-FH-160 SS+2d, CO-TSE-ML-180 SS+2d, CO-IR-ML-130 SS+2d, CO-MV-ML-270, CO-SL-LP-210, CO-SL-CL-270, CO-TE-DW-120, CO-TE-MH-160, CO-TE-DW-130, CO-TSE-ML-180 | 0.7d |
| CO-RD-PB-130 |  | Aggregate Base Course Layer for Road Works | 11d | 2027-01-05 | 2027-01-17 | CO-RD-PB-120, CO-RD-PB-150 | 0d |
|  | 1 | **ST+01:ST+500** |  | 2027-01-02 | 2027-01-31 |  |  |
|  | RD | **Pre-Bituminous Construction** |  | 2027-01-02 | 2027-01-31 |  |  |
| CO-RD-PB-100 |  | Subgrade Layer for Road Works | 12d | 2027-01-02 | 2027-01-16 | CO-RD-PB-120, CO-TE-DW-130, CO-TE-MH-160, CO-SL-CL-270, CO-MV-ML-270, CO-TSE-ML-180, CO-IR-ML-130, CO-PW-FH-160 | 0.7d |
| CO-RD-PB-110 |  | Aggregate Base Course Layer for Road Works | 12d | 2027-01-18 | 2027-01-31 | CO-RD-PB-100, CO-RD-PB-130 | 0d |
|  | 3 | **Finishes for Infrastructure Networks** |  | 2026-10-12 | 2027-02-14 |  |  |
|  | 11 | **Storm Drainage Network** |  | 2026-11-02 | 2027-01-05 |  |  |
|  | TF | **Testing and Finishes** |  | 2026-11-02 | 2027-01-05 |  |  |
| CO-SD-ML-TF-100 |  | Testing Work for Pipes of Storm Drainage Network | 10d | 2026-11-02 | 2026-11-12 | CO-SD-ML-130, CO-SD-CB-200, CO-SD-MH-220, CO-SD-CB-170, CO-SD-ML-160, CO-SD-MH-260 | 0d |
| CO-SD-CB-TF-130 |  | Catch Basin Internal Finishes (Benching ) for Storm Drainage Network | 10d | 2026-11-14 | 2026-11-24 | CO-SD-CB-170, CO-SD-CB-200, CO-SD-ML-TF-100 | 0d |
| CO-SD-CB-TF-160 |  | Testing Works for Catch Basins of Storm Drainage Network | 10d | 2026-11-25 | 2026-12-06 | CO-SD-CB-170, CO-SD-ML-TF-100, CO-SD-CB-TF-130, CO-SD-CB-200 | 0d |
| CO-SD-CB-TF-110 |  | Install Catch Basin Cover Works for External Finishes of Storm Drainage Network | 10d | 2026-12-07 | 2026-12-17 | CO-SD-CB-TF-130, PRO-SD-1DL-150, PRO-R25-SD-DL-150 FF, CO-SD-CB-TF-160 | 0d |
| CO-SD-MH-TF-120 |  | Main Manhole Internal Finishes (Benching ) for Storm Drainage Network | 10d | 2026-12-19 | 2026-12-29 | CO-SD-MH-220, PRO-SD-1DL-140, CO-SD-CB-200, CO-SD-CB-TF-160, CO-SD-CB-TF-110 | 0d |
| CO-SD-MH-TF-210 |  | Testing Works for Manholes of Storm Drainage Network | 6d | 2026-12-30 | 2027-01-05 | CO-SD-MH-220, CO-SD-ML-TF-100, CO-SD-MH-TF-120, PRO-R25-SD-DL-140, CO-SD-CB-TF-110, CO-SD-MH-260 | 0d |
|  | 10 | **Sewage Network** |  | 2026-10-12 | 2027-01-13 |  |  |
|  | TF | **Testing and Finishes** |  | 2026-10-12 | 2027-01-13 |  |  |
| CO-SW-TF-100 |  | Final Testing For Main Line of Sewage Network | 9d | 2026-10-12 | 2026-10-22 | CO-SW-ML-130, CO-SW-MH-250, CO-SW-MH-200, CO-SW-ML-160 | 7d |
| CO-SW-TF-130 |  | Main Manhole Internal Finishes (Benching + Insulation) of Sewage Network | 21d | 2026-10-22 | 2026-11-16 | CO-SW-MH-200, CO-SW-TF-100, CO-SW-MH-250 | 38.5d |
| CO-SW-TF-110 |  | Install Manhole Cover Works for External Finishes of Sewage Network | 10d | 2026-12-29 | 2027-01-09 | CO-SW-TF-130, PRO-SW-1DL-120, PRO-R25-SW-DL-120 | 2d |
| CO-SW-TF-210 |  | Testing Works for Main Line Manholes of Sewage Network | 4d | 2027-01-10 | 2027-01-13 | CO-SW-TF-130, CO-SW-TF-110 | 2d |
|  | 9 | **Potable Water Network** |  | 2026-12-22 | 2027-01-26 |  |  |
|  | TF | **Testing and Finishes** |  | 2026-12-22 | 2027-01-26 |  |  |
| CO-PW-TF-110 |  | Testing Work for Main Line of Potable Water Network | 10.5d | 2026-12-22 | 2027-01-03 | CO-PW-ML-130, CO-PW-FH-160, CO-PW-VC180, CO-PW-FH-160 FF | 2d |
| CO-PW-TF-120 |  | Fire Hydrant Finishies (S.Box + Safety + Marker Post ) of Potable Water Network | 10d | 2027-01-04 | 2027-01-14 | CO-PW-FH-160, ENG-MT-PW-TF-A-100, CO-PW-TF-110 | 2d |
| CO-PW-TF-100 |  | Final Finishes works and Covers for Valves and Valve Chambers of Potable Water Network | 10d | 2027-01-16 | 2027-01-26 | CO-PW-VC-220, ENG-MT-PW-TF-A-100, PRO-PW-1DL-130, PRO-R25-PW-DL-130, CO-PW-TF-110, CO-PW-TF-120 | 2d |
|  | 13 | **Irrigation Network** |  | 2026-12-19 | 2027-01-02 |  |  |
|  | TF | **Testing and Finishes** |  | 2026-12-19 | 2027-01-02 |  |  |
| CO-IR-TF-160 |  | Final Testing (pressure tests) of Irrigation Network | 12d | 2026-12-19 | 2027-01-02 | CO-IR-ML-140, CO-IR-ML-130 | 10d |
|  | 1 | **Treated Sewage Effluent (Tse)** |  | 2027-01-02 | 2027-01-14 |  |  |
|  | TF | **Testing and Finishes** |  | 2027-01-02 | 2027-01-14 |  |  |
| CO-TSE-TF-170 |  | Final Testing (pressure tests) of Treated Sewage Effluent (Tse) | 11.5d | 2027-01-02 | 2027-01-14 | CO-TSE-ML-190, CO-IR-TF-160, CO-TSE-ML-180 | 10d |
|  | 14 | **Medium Voltage Network** |  | 2026-12-20 | 2027-01-10 |  |  |
|  | TT | **Termination and Testing Works** |  | 2026-12-20 | 2027-01-10 |  |  |
| CO-MV-TF-220 |  | Termination Works of Medium Voltage Network | 18d | 2026-12-20 | 2027-01-10 | CO-MV-ML-270, ENG-MT-MV-TF-A-100, PRO-MV-DL-110 | 3.5d |
|  | 12 | **Street Lighting Network** |  | 2027-01-10 | 2027-02-03 |  |  |
|  | TR | **Termination and Testing Works** |  | 2027-01-10 | 2027-02-03 |  |  |
| CO-SL-LP-330 |  | Installation Works for Lighting Fixtures With Drop Wire of Street Lighting Network | 7d | 2027-01-10 | 2027-01-18 | CO-SL-DB-270, CO-SL-LP-210, ENG-MT-SL-A-120, PRO-R25-SL-DL-140 | 1.5d |
| CO-SL-TF-220 |  | Termination Works For Lighting Poles Cables of Street Lighting Network | 7d | 2027-01-18 | 2027-01-26 | CO-SL-DB-270, CO-SL-LP-330, CO-SL-ES-230 | 7.5d |
| CO-SL-TF-230 |  | Termination Works For Panel Board Cables of Street Lighting Network | 7d | 2027-01-18 | 2027-01-26 | CO-SL-DB-270, CO-SL-LP-330, CO-SL-ES-230, PRO-R25-SL-DL-170, CO-SL-DB-220, PRO-SPS-LL-MSI-10 | 7.5d |
| CO-SL-TF-380 |  | Testing Works For Panel Board Cables of Street Lighting Network | 2d | 2027-01-18 | 2027-01-20 | CO-SL-DB-270, CO-SL-LP-330, CO-SL-ES-230 | 12.5d |
| CO-SL-TF-200 |  | Testing Works for Lighting Poles of Street Lighting Network | 5d | 2027-01-30 | 2027-02-03 | CO-SL-DB-270, CO-SL-LP-330, CO-SL-ES-230, PRO-R25-SL-DL-130 | 0d |
|  | ES | **Earthing System Works** |  | 2027-01-10 | 2027-01-18 |  |  |
| CO-SL-ES-220 |  | Install Earthing System Works for Lighting Poles of Street Lighting Network | 7d | 2027-01-10 | 2027-01-18 | CO-SL-LP-330 SS, ENG-MT-SL-ES-A-100, PRO-R25-SL-DL-150 | 1.5d |
| CO-SL-ES-230 |  | Install Earthing System Works for Lighting Panel Boards of Street Lighting Network | 7d | 2027-01-10 | 2027-01-18 | CO-SL-ES-220 SS | 1.5d |
|  | 3 | **Telecom Network** |  | 2026-12-31 | 2027-01-19 |  |  |
|  | 1 | **Testing and Finishes** |  | 2026-12-31 | 2027-01-19 |  |  |
| CO-TE-CTV-TF-110 |  | Smart Card Printer | 4d | 2026-12-31 | 2027-01-05 | CO-TE-CTV-130 | 0.5d |
| CO-TE-CTV-TF-120 |  | Card Issue Work Station | 4d | 2027-01-05 | 2027-01-10 | CO-TE-CTV-TF-110 | 0.5d |
| CO-TE-CTV-TF-130 |  | Photographic Camera with stand | 4d | 2027-01-10 | 2027-01-14 | CO-TE-CTV-TF-120 | 0.5d |
| CO-TE-CTV-TF-140 |  | Interface modules with CCTV, Fire and other systems | 4d | 2027-01-14 | 2027-01-19 | CO-TE-CTV-TF-130, PRO-LS-LL-MSI-20, PRO-TSE-LL-MSI-30 | 0.5d |
|  | 2 | **Road Works** |  | 2026-12-20 | 2027-02-14 |  |  |
|  | 3 | **ST+1000:ST+1531** |  | 2026-12-20 | 2027-02-06 |  |  |
|  | 1 | **Bituminous Construction** |  | 2027-01-05 | 2027-01-20 |  |  |
| CO-RD-B-150 |  | Application of Prime Coat Layer for Road Works | 7d | 2027-01-05 | 2027-01-12 | CO-RD-PV-160, PRO-R25-RD-DL-160, CO-RD-PB-150 | 1d |
| CO-RD-B-160 |  | Bituminous Base Courses Layers for Road Works- | 7d | 2027-01-13 | 2027-01-20 | CO-RD-B-150, PRO-R25-RD-DL-170, CO-RD-PV-160 | 1d |
|  | LS | **Pavement Works** |  | 2026-12-20 | 2027-01-16 |  |  |
| CO-RD-PV-160 |  | Fixing of Curbstone for Sidewalks Pavement | 12.2d | 2026-12-20 | 2027-01-03 | CO-RD-PB-140, PRO-R25-RD-DL-130 | 0.8d |
| CO-RD-PV-170 |  | Fixing of Interlock Tiles for Sidewalks Pavement | 11d | 2027-01-03 | 2027-01-16 | CO-RD-PV-160, PRO-R25-RD-DL-120 | 0.8d |
|  | TS | **Traffic Signs Boards and Roads Marking** |  | 2027-01-21 | 2027-02-06 |  |  |
| CO-RD-F-RM-180 |  | Application of Road Marking Works For Road Works | 7d | 2027-01-21 | 2027-01-28 | CO-RD-B-160, CO-RD-PV-170, PRO-R25-RD-DL-150 | 4d |
| CO-RD-F-TS-120 |  | Installation Works of Traffic Signs Boards For Road Works | 7d | 2027-01-30 | 2027-02-06 | CO-RD-F-RM-180, PRO-R25-RD-DL-140 | 4d |
|  | 1 | **ST+500:ST+1000** |  | 2027-01-03 | 2027-02-11 |  |  |
|  | 1 | **Bituminous Construction** |  | 2027-01-21 | 2027-01-30 |  |  |

| ID | WBS | Task | Duration | Start | Finish | Predecessors | Total float |
| --- | --- | --- | --- | --- | --- | --- | --- |
| CO-RD-B-130 |  | Application of Prime Coat Layer for Road Works | 4d | 2027-01-21 | 2027-01-25 | CO-RD-PV-140, CO-RD-PB-130, CO-RD-B-150, CO-RD-B-160 | 1d |
| CO-RD-B-140 |  | Bituminous Base Courses Layers for Road Works- | 4d | 2027-01-26 | 2027-01-30 | CO-RD-B-130 | 1d |
|  | LS | **Pavement Works** |  | 2027-01-03 | 2027-01-28 |  |  |
| CO-RD-PV-140 |  | Fixing of Curbstone for Sidewalks Pavement | 11d | 2027-01-03 | 2027-01-16 | CO-RD-PB-120, CO-RD-PV-160 | 0.8d |
| CO-RD-PV-150 |  | Fixing of Interlock Tiles for Sidewalks Pavement | 11d | 2027-01-16 | 2027-01-28 | CO-RD-PV-140, CO-RD-PV-170 | 0.8d |
|  | TS | **Traffic Signs Boards and Roads Marking** |  | 2027-02-01 | 2027-02-11 |  |  |
| CO-RD-F-RM-170 |  | Application of Road Marking Works For Road Works | 5d | 2027-02-01 | 2027-02-06 | CO-RD-B-140, CO-RD-PV-150, CO-RD-PB-110, CO-RD-PB-130 | 0d |
| CO-RD-F-TS-110 |  | Installation Works of Traffic Signs Boards For Road Works | 4d | 2027-02-07 | 2027-02-11 | CO-RD-F-RM-170 | 0d |
|  | 2 | **ST+01:ST+500** |  | 2027-01-16 | 2027-02-14 |  |  |
|  | 1 | **Bituminous Construction** |  | 2027-02-01 | 2027-02-11 |  |  |
| CO-RD-B-110 |  | Application of Prime Coat Layer for Road Works | 5d | 2027-02-01 | 2027-02-06 | CO-RD-PV-120, CO-RD-PB-110, CO-RD-B-130 | 0d |
| CO-RD-B-120 |  | Bituminous Base Courses Layers for Road Works- | 4d | 2027-02-07 | 2027-02-11 | CO-RD-B-110 | 0d |
|  | LS | **Pavement Works** |  | 2027-01-16 | 2027-02-11 |  |  |
| CO-RD-PV-120 |  | Fixing of Curbstone for Sidewalks Pavement | 11d | 2027-01-16 | 2027-01-28 | CO-RD-PB-100, CO-RD-PB-100 FF, CO-RD-PV-140 | 0.7d |
| CO-RD-PV-130 |  | Fixing of Interlock Tiles for Sidewalks Pavement | 11d | 2027-01-28 | 2027-02-11 | CO-RD-PV-120, CO-RD-PV-150 | 0.7d |
|  | TS | **Traffic Signs Boards and Roads Marking** |  | 2027-02-13 | 2027-02-14 |  |  |
| CO-RD-F-RM-160 |  | Application of Road Marking Works For Road Works | 1d | 2027-02-13 | 2027-02-14 | CO-RD-B-120, CO-RD-PV-130 | 3d |
| CO-RD-F-TS-100 |  | Installation Works of Traffic Signs Boards For Road Works | 1d | 2027-02-13 | 2027-02-14 | CO-RD-F-RM-160 SS | 3d |
|  | GEN | **Superstructure Work** |  | 2026-07-28 | 2027-02-23 |  |  |
|  | 4 | **Utility Buildings** |  | 2026-08-24 | 2027-01-27 |  |  |
|  | 6 | **Storm Drainage Ponds** |  | 2026-10-22 | 2027-01-03 |  |  |
| CO-SD-PO-100-P1 |  | Excavation & Filling Works - PART 1 | 15d | 2026-10-22 | 2026-11-08 | ENG-SH-DPO-A-120, ENG-MT-DPO-CV-A-110, PRO-DPO-CV-1DL-10, PRO-DPO-CV-DL-10 FF, CO-SD-CB-190, CO-SD-MH-260, CO-SD-ML-160, CO-SD-CB-170, CO-SD-MH-220, CO-SD-ML-130, CO-SW-ML-130, CO-SW-MH-200, CO-SW-ML-160, CO-SW-MH-250 | 2d |
| CO-SD-PO-110-P1 |  | Finished Grouted Riprap - PART 1 | 16d | 2026-11-09 | 2026-11-26 | CO-SD-PO-100-P1 | 2d |
| CO-SD-PO-100-P2 |  | Excavation & Filling Works - PART 2 | 16d | 2026-11-28 | 2026-12-15 | CO-SD-PO-100-P1, CO-SD-PO-110-P1 | 2d |
| CO-SD-PO-110-P2 |  | Finished Grouted Riprap - PART 2 | 16d | 2026-12-16 | 2027-01-03 | CO-SD-PO-100-P2, CO-SD-PO-110-P1 | 2d |
|  | 4 | **Pump Station** |  | 2026-08-30 | 2027-01-27 |  |  |
|  | 1 | **Civil work** |  | 2026-08-30 | 2026-12-01 |  |  |
|  | 1 | **Sup Structure** |  | 2026-08-30 | 2026-10-17 |  |  |
| CO-UB-PS-100 |  | Excavation Work for for Pump station building | 8d | 2026-08-30 | 2026-09-08 | ENG-SH-SPS-A-160, PRO-SPS-CV-1DL-10, PRO-SPS-CV-DL-10 FF, PRO-SPS-CV-DL-10, CO-SW-ML-150 | 1.54d |
| CO-UB-PS-110 |  | pouring P.C Conceret for Pump station building | 3d | 2026-09-08 | 2026-09-12 | CO-UB-PS-100 | 1.54d |
| CO-UB-PS-120 |  | Formwork for Foundation for Pump station building | 9d | 2026-09-12 | 2026-09-22 | CO-UB-PS-110 | 1.54d |
| CO-UB-PS-130 |  | Steel fixing for Foundation for Pump station building | 9d | 2026-09-22 | 2026-10-04 | CO-UB-PS-120 | 1.54d |
| CO-UB-PS-140 |  | pouring for Foundation for Pump station building | 1d | 2026-10-04 | 2026-10-05 | CO-UB-PS-130 | 1.54d |
| CO-UB-PS-150 |  | curing and deshuttering formwork Pump station building | 3d | 2026-10-05 | 2026-10-08 | CO-UB-PS-140 | 1.54d |
| CO-UB-PS-160 |  | Backfilling and compaction work for pump station | 7d | 2026-10-08 | 2026-10-17 | CO-UB-PS-150 | 1.54d |
|  | 2 | **Super structure** |  | 2026-10-17 | 2026-12-01 |  |  |
| CO-UB-PS-170 |  | Formwork for Wall and columns for Pump station building | 9.21d | 2026-10-17 | 2026-10-27 | CO-UB-PS-160 | 1.54d |
| CO-UB-PS-180 |  | Steel fixing for Wall columns | 7d | 2026-10-27 | 2026-11-04 | CO-UB-PS-170 | 1.54d |
| CO-UB-PS-190 |  | pouring for Wall columns | 1d | 2026-11-04 | 2026-11-05 | CO-UB-PS-180 | 1.54d |
| CO-UB-PS-200 |  | curing and deshuttering formwork for Wall columns | 2d | 2026-11-05 | 2026-11-08 | CO-UB-PS-190 | 1.54d |
| CO-UB-PS-210 |  | Waterproofing for Walls columns | 4.75d | 2026-11-08 | 2026-11-14 | CO-UB-PS-200 | 1.54d |
| CO-UB-PS-220 |  | Formwork for pump roof | 6d | 2026-11-14 | 2026-11-21 | CO-UB-PS-210 | 1.54d |
| CO-UB-PS-230 |  | Steel fixing for pump roof | 6d | 2026-11-21 | 2026-11-28 | CO-UB-PS-220 | 1.54d |
| CO-UB-PS-240 |  | pouring for pump roof | 1d | 2026-11-28 | 2026-11-29 | CO-UB-PS-230 | 1.54d |
| CO-UB-PS-250 |  | curing and deshuttering formwork for pump roof | 2d | 2026-11-29 | 2026-12-01 | CO-UB-PS-240 | 1.54d |
|  | 2 | **Architectural work** |  | 2026-12-01 | 2027-01-11 |  |  |
| CO-UB-PS-260 |  | Executing Masonry Works for Pump station building | 5d | 2026-12-01 | 2026-12-07 | CO-UB-PS-250 | 1.54d |
| CO-UB-PS-270 |  | Executing Plastering Works for Pump station building | 5d | 2026-12-07 | 2026-12-13 | CO-UB-PS-260 | 1.54d |
| CO-UB-PS-280 |  | Executing Painting Works for Pump station building | 5d | 2026-12-13 | 2026-12-19 | CO-UB-PS-270 | 1.54d |
| CO-UB-PS-320 |  | Doors and windows Fixing &Stair Tiles | 7d | 2027-01-03 | 2027-01-11 | CO-UB-PS-280, CO-UB-PS-310 | 5.54d |
|  | 3 | **Electrical work** |  | 2026-12-19 | 2027-01-21 |  |  |
| CO-UB-PS-290 |  | Lighting system for pump house | 5d | 2026-12-19 | 2026-12-24 | CO-UB-PS-280 | 1.54d |
| CO-UB-PS-300 |  | Wiring connection for pump house | 5d | 2026-12-24 | 2026-12-30 | CO-UB-PS-290 | 1.54d |
| CO-UB-PS-310 |  | Sockets and switches for pump house | 3d | 2026-12-30 | 2027-01-03 | CO-UB-PS-300 | 1.54d |
| CO-UB-PS-330 |  | Installation for Distribution boards for pump house | 8d | 2027-01-03 | 2027-01-12 | CO-UB-PS-310 | 1.54d |
| CO-UB-PS-370 |  | Executing Earthing and bonding for the entire system | 8d | 2027-01-12 | 2027-01-21 | CO-UB-PS-330, CO-MV-TF-220 | 1.54d |
|  | 4 | **Mechanical work** |  | 2027-01-03 | 2027-01-27 |  |  |
| CO-UB-PS-340 |  | Executing HVAC System for Pump station building | 14d | 2027-01-03 | 2027-01-19 | CO-UB-PS-270, CO-UB-PS-310 | 3.54d |
| CO-UB-PS-350 |  | Executing Fire Alarm System for Pump station building | 5d | 2027-01-03 | 2027-01-09 | CO-UB-PS-270, CO-UB-PS-310 | 2.54d |
| CO-UB-PS-360 |  | Executing Fire fighting institution works(piping and wire installation) for Pump station building | 5d | 2027-01-09 | 2027-01-14 | CO-UB-PS-350 | 2.54d |
| CO-UB-PS-380 |  | Executing Fire fighting finishing works for Pump station building | 5d | 2027-01-14 | 2027-01-20 | CO-UB-PS-360, CO-UB-PS-320 | 2.54d |
| CO-UB-PS-390 |  | Installation of pumps | 5d | 2027-01-21 | 2027-01-27 | CO-UB-PS-380, CO-UB-PS-370, CO-UB-PS-340 | 1.54d |
|  | 3 | **Lift Station** |  | 2026-09-08 | 2027-01-20 |  |  |
|  | 1 | **Civil work** |  | 2026-09-08 | 2026-11-26 |  |  |
|  | 1 | **Sup Structure** |  | 2026-09-08 | 2026-10-13 |  |  |
| CO-UB-LS-220 |  | Excavation Work for for Lift Station | 6d | 2026-09-08 | 2026-09-15 | CO-UB-PS-100, ENG-SH-LS-A-170, PRO-LS-CV-1DL-40, PRO-LS-CV-DL-50 | 7.5d |
| CO-UB-LS-230 |  | pouring P.C Conceret for Lift Station | 5d | 2026-09-15 | 2026-09-21 | CO-UB-LS-220 | 7.5d |
| CO-UB-LS-240 |  | Formwork for Foundation for Lift Station | 5d | 2026-09-21 | 2026-09-28 | CO-UB-LS-230 | 7.5d |
| CO-UB-LS-250 |  | Steel fixing for Foundation for Lift Station | 6d | 2026-09-28 | 2026-10-05 | CO-UB-LS-240 | 7.5d |
| CO-UB-LS-260 |  | pouring for Foundation for Lift Station | 1d | 2026-10-05 | 2026-10-06 | CO-UB-LS-250 | 7.5d |

| ID | WBS | Task | Duration | Start | Finish | Predecessors | Total float |
| --- | --- | --- | --- | --- | --- | --- | --- |
| CO-UB-LS-270 |  | curing and deshuttering formwork Lift Station | 2d | 2026-10-06 | 2026-10-08 | CO-UB-LS-260 | 7.5d |
| CO-UB-LS-280 |  | Backfilling and compaction work for pump station | 4d | 2026-10-08 | 2026-10-13 | CO-UB-LS-270 | 7.5d |
|  | 2 | **Super structure** |  | 2026-10-13 | 2026-11-26 |  |  |
| CO-UB-LS-290 |  | Formwork for Wall and columns for Lift Station | 7d | 2026-10-13 | 2026-10-21 | CO-UB-LS-280 | 7.5d |
| CO-UB-LS-300 |  | Steel fixing for Wall columns | 9d | 2026-10-21 | 2026-11-01 | CO-UB-LS-290 | 7.5d |
| CO-UB-LS-310 |  | pouring for Wall columns | 1d | 2026-11-01 | 2026-11-02 | CO-UB-LS-300 | 7.5d |
| CO-UB-LS-320 |  | curing and deshuttering formwork for Wall columns | 2d | 2026-11-02 | 2026-11-04 | CO-UB-LS-310 | 7.5d |
| CO-UB-LS-330 |  | Waterproofing for Walls columns | 4d | 2026-11-04 | 2026-11-09 | CO-UB-LS-320 | 7.5d |
| CO-UB-LS-340 |  | Formwork for pump roof | 5d | 2026-11-09 | 2026-11-15 | CO-UB-LS-330 | 7.5d |
| CO-UB-LS-350 |  | Steel fixing for pump roof | 6d | 2026-11-15 | 2026-11-22 | CO-UB-LS-340 | 7.5d |
| CO-UB-LS-360 |  | pouring for pump roof | 1d | 2026-11-22 | 2026-11-23 | CO-UB-LS-350 | 7.5d |
| CO-UB-LS-370 |  | curing and deshuttering formwork for pump roof | 3d | 2026-11-23 | 2026-11-26 | CO-UB-LS-360 | 7.5d |
|  | 2 | **Architectural work** |  | 2026-11-26 | 2026-12-14 |  |  |
| CO-UB-LS-380 |  | Executing Masonry Works for Pump station building | 7d | 2026-11-26 | 2026-12-05 | CO-UB-LS-370 | 7.5d |
| CO-UB-LS-390 |  | Executing Plastering Works for Pump station building | 8d | 2026-12-05 | 2026-12-14 | CO-UB-LS-380 | 7.5d |
|  | 3 | **Electrical work** |  | 2026-12-14 | 2027-01-20 |  |  |
| CO-UB-LS-400 |  | Lighting system for pump house | 8d | 2026-12-14 | 2026-12-23 | CO-UB-LS-390 | 7.5d |
| CO-UB-LS-420 |  | Wiring connection for pump house | 6d | 2026-12-23 | 2026-12-30 | CO-UB-LS-400 | 7.5d |
| CO-UB-LS-440 |  | Sockets and switches for pump house | 6d | 2026-12-30 | 2027-01-06 | CO-UB-LS-420 | 7.5d |
| CO-UB-LS-460 |  | Installation for Distribution boards for pump house | 6d | 2027-01-06 | 2027-01-13 | CO-UB-LS-440 | 7.5d |
| CO-UB-LS-480 |  | Executing Earthing and bonding for the entire system | 6d | 2027-01-13 | 2027-01-20 | CO-UB-LS-460 | 7.5d |
|  | 4 | **Mechanical work** |  | 2026-12-14 | 2027-01-18 |  |  |
| CO-UB-LS-410 |  | Internal pipe installation | 8d | 2026-12-14 | 2026-12-23 | CO-UB-LS-390 | 9.5d |
| CO-UB-LS-430 |  | Guide rails & lifting chains installation | 7d | 2026-12-23 | 2026-12-31 | CO-UB-LS-410 | 9.5d |
| CO-UB-LS-450 |  | ExeValve installation | 7d | 2026-12-31 | 2027-01-09 | CO-UB-LS-430 | 9.5d |
| CO-UB-LS-470 |  | Installation of pumps | 8d | 2027-01-09 | 2027-01-18 | CO-UB-LS-450 | 9.5d |
|  | 5 | **Potable Water Tank** |  | 2026-08-24 | 2026-11-09 |  |  |
|  | 1 | **Eearth Work** |  | 2026-08-24 | 2026-09-06 |  |  |
| CO-UB-PWT-100 |  | Excavation work for tank foundation tank formation level | 7d | 2026-08-24 | 2026-08-31 | ENG-SH-ST-A-180, PRO-TSE-CV-1DL-50, PRO-TSE-CV-DL-60 | 13d |
| CO-UB-PWT-110 |  | Soil replacement Up to tank formation level | 5d | 2026-09-01 | 2026-09-06 | CO-UB-PWT-100 | 13d |
|  | 2 | **Structural Work** |  | 2026-09-07 | 2026-09-24 |  |  |
| CO-UB-PWT-120 |  | Plain Concrete works | 3d | 2026-09-07 | 2026-09-09 | CO-UB-PWT-110 | 13d |
| CO-UB-PWT-130 |  | Form work for Tank Foundation | 5d | 2026-09-10 | 2026-09-15 | CO-UB-PWT-120 | 13d |
| CO-UB-PWT-140 |  | Steel Reinforcement work for Tank Foundation | 6d | 2026-09-16 | 2026-09-22 | CO-UB-PWT-130 | 13d |
| CO-UB-PWT-150 |  | Casting concrete for Tank Foundation | 1d | 2026-09-24 | 2026-09-24 | CO-UB-PWT-140 | 13d |
|  | 3 | **Tank Shell Erection&Roof Installation** |  | 2026-09-26 | 2026-10-20 |  |  |
| CO-UB-PWT-160 |  | Bottom ring installation | 6d | 2026-09-26 | 2026-10-01 | CO-UB-PWT-150 | 13d |
| CO-UB-PWT-170 |  | shell erection | 8d | 2026-10-03 | 2026-10-11 | CO-UB-PWT-160 | 13d |
| CO-UB-PWT-180 |  | Aluminum dome / steel roof installation | 8d | 2026-10-12 | 2026-10-20 | CO-UB-PWT-170 | 13d |
|  | 4 | **Mechanical Work&Accessories** |  | 2026-10-21 | 2026-11-09 |  |  |
| CO-UB-PWT-190 |  | Inlet / outlet piping connections | 6d | 2026-10-21 | 2026-10-27 | CO-UB-PWT-180 | 13d |
| CO-UB-PWT-200 |  | installation Valves | 6d | 2026-10-28 | 2026-11-03 | CO-UB-PWT-190 | 13d |
| CO-UB-PWT-210 |  | Ladders, platforms & handrails | 5d | 2026-11-04 | 2026-11-09 | CO-UB-PWT-200 | 13d |
|  | 2 | **IrrigationTank** |  | 2026-11-10 | 2027-01-11 |  |  |
|  | 1 | **Eearth Work** |  | 2026-11-10 | 2026-11-22 |  |  |
| CO-UB-IRT-140 |  | Excavation work for tank foundation tank formation level | 6d | 2026-11-10 | 2026-11-16 | CO-UB-PWT-100, CO-UB-PWT-210 | 13d |
| CO-UB-IRT-150 |  | Soil replacement Up to tank formation level | 5d | 2026-11-17 | 2026-11-22 | CO-UB-IRT-140 | 13d |
|  | 2 | **Structural Work** |  | 2026-11-23 | 2026-12-09 |  |  |
| CO-UB-IRT-160 |  | Plain Concrete works | 3d | 2026-11-23 | 2026-11-25 | CO-UB-IRT-150 | 13d |
| CO-UB-IRT-170 |  | Form work for Tank Foundation | 6d | 2026-11-26 | 2026-12-02 | CO-UB-IRT-160 | 13d |
| CO-UB-IRT-180 |  | Steel Reinforcement work for Tank Foundation | 5d | 2026-12-03 | 2026-12-08 | CO-UB-IRT-170 | 13d |
| CO-UB-IRT-190 |  | Casting concrete for Tank Foundation | 1d | 2026-12-09 | 2026-12-09 | CO-UB-IRT-180 | 13d |
|  | 3 | **Tank Shell Erection&Roof Installation** |  | 2026-12-10 | 2026-12-30 |  |  |
| CO-UB-IRT-200 |  | Bottom ring installation | 6d | 2026-12-10 | 2026-12-16 | CO-UB-IRT-190 | 13d |
| CO-UB-IRT-210 |  | shell erection | 6d | 2026-12-17 | 2026-12-23 | CO-UB-IRT-200 | 13d |
| CO-UB-IRT-220 |  | Aluminum dome / steel roof installation | 6d | 2026-12-24 | 2026-12-30 | CO-UB-IRT-210 | 13d |
|  | 4 | **Mechanical Work&Accessories** |  | 2026-12-31 | 2027-01-11 |  |  |
| CO-UB-IRT-230 |  | Inlet / outlet piping connections | 4d | 2026-12-31 | 2027-01-04 | CO-UB-IRT-220 | 13d |
| CO-UB-IRT-240 |  | installation Valves | 4d | 2027-01-05 | 2027-01-09 | CO-UB-IRT-230 | 13d |
| CO-UB-IRT-250 |  | Ladders, platforms & handrails | 2d | 2027-01-10 | 2027-01-11 | CO-UB-IRT-240 | 13d |
|  | 1 | **Control Room** |  | 2026-09-15 | 2027-01-20 |  |  |
|  | 5 | **Civil Work** |  | 2026-09-15 | 2026-11-04 |  |  |
| CO-UB-CR-100 |  | Excavation Work For Control Room Foundation | 7d | 2026-09-15 | 2026-09-24 | CO-UB-LS-220 | 25.5d |
| CO-UB-CR-110 |  | Pouring for Plain Concrete | 5d | 2026-09-24 | 2026-09-30 | CO-UB-CR-100 | 25.5d |
| CO-UB-CR-120 |  | Pouring R.C Footing For Control Room | 14d | 2026-09-30 | 2026-10-17 | CO-UB-CR-110 | 25.5d |
| CO-UB-CR-130 |  | Pouring R.C Columns For Control Room | 8d | 2026-10-17 | 2026-10-26 | CO-UB-CR-120 | 25.5d |
| CO-UB-CR-140 |  | Pouring Beams and Slab For Control Room | 8d | 2026-10-26 | 2026-11-04 | CO-UB-CR-130 | 25.5d |
|  | 6 | **Finishing Work** |  | 2026-11-04 | 2027-01-20 |  |  |
|  | 1 | **Architictural work** |  | 2026-11-04 | 2026-12-21 |  |  |
| CO-UB-CR-150 |  | Brick Work For Control Room | 9d | 2026-11-04 | 2026-11-15 | CO-UB-CR-140 | 25.5d |

| ID | WBS | Task | Duration | Start | Finish | Predecessors | Total float |
| --- | --- | --- | --- | --- | --- | --- | --- |
| CO-UB-CR-160 |  | Thermal & Moisture Protection Work for Control Room | 7d | 2026-11-15 | 2026-11-23 | CO-UB-CR-150 | 25.5d |
| CO-UB-CR-200 |  | Install For Curtian Wall and Windows and Doors | 8d | 2026-11-23 | 2026-12-02 | CO-UB-CR-160 | 25.5d |
| CO-UB-CR-240 |  | External Finshing Work (Walls and Floor) | 8d | 2026-12-02 | 2026-12-12 | CO-UB-CR-200 | 25.5d |
| CO-UB-CR-250 |  | Internal Finshing Work (Walls,Floor and Ceiling) | 8d | 2026-12-12 | 2026-12-21 | CO-UB-CR-240 | 25.5d |
|  | 3 | **Mechanical Work** |  | 2026-11-15 | 2027-01-02 |  |  |
|  | 3 | **HVAC System** |  | 2026-11-15 | 2027-01-02 |  |  |
| CO-UB-CR-170 |  | Install of Refrigerant Piping ( fabricated metal ducts with flanges complete with supports, vanes, dampers ) | 4d | 2026-11-15 | 2026-11-19 | CO-UB-CR-150 | 38.5d |
| CO-UB-CR-260 |  | Install of Mini split actual capacity 2 Ton and Ducted split actual capacity 4 Ton | 7d | 2026-12-21 | 2026-12-29 | CO-UB-CR-250, CO-UB-CR-170 | 36.5d |
| CO-UB-CR-310 |  | Install of Air Grills 150mm x150mm and Air Diffuser 600mm x 600mm | 3d | 2026-12-29 | 2027-01-02 | CO-UB-CR-260, CO-UB-CR-170 | 36.5d |
|  | 4 | **Fire Fitting System** |  | 2026-11-19 | 2026-12-24 |  |  |
| CO-UB-CR-180 |  | Installation & Testing of 2 hours Fire rated system for closing the openings between rooms with help of Rock wool | 4d | 2026-11-19 | 2026-11-24 | CO-UB-CR-170 | 38.5d |
| CO-UB-CR-270 |  | Install Fire Extinguishers | 3d | 2026-12-21 | 2026-12-24 | CO-UB-CR-180, CO-UB-CR-250 | 43.5d |
|  | 4 | **Electrical Work** |  | 2026-11-24 | 2027-01-14 |  |  |
|  | 1 | **LV Power** |  | 2026-12-21 | 2027-01-07 |  |  |
| CO-UB-CR-190 |  | Install of Distribution board For Control Room | 5d | 2026-12-21 | 2026-12-27 | CO-UB-CR-170, CO-UB-CR-150, CO-UB-CR-250 | 31.5d |
| CO-UB-CR-220 |  | Install of Earting Cable for Control Room | 5d | 2026-12-27 | 2027-01-02 | CO-UB-CR-190 | 31.5d |
| CO-UB-CR-280 |  | Install of Socket outlet and LED Lighting | 5d | 2027-01-02 | 2027-01-07 | CO-UB-CR-190, CO-UB-CR-250, CO-UB-CR-220 | 31.5d |
|  | 3 | **Fire Detection And Alarm System** |  | 2026-11-24 | 2027-01-14 |  |  |
| CO-UB-CR-210 |  | Install of 2C x 1.5 Sqm FR Rated Armored - Cable For Loop Wiring | 5d | 2026-11-24 | 2026-11-30 | CO-UB-CR-170, CO-UB-CR-180 | 38.5d |
| CO-UB-CR-230 |  | Install of Transmission Communication cable - Fiber Optics 12Core | 5d | 2026-11-30 | 2026-12-06 | CO-UB-CR-210 | 38.5d |
| CO-UB-CR-290 |  | Install of power supply system for fire alarm control panel | 5d | 2026-12-21 | 2026-12-27 | CO-UB-CR-230, CO-UB-CR-250 | 25.5d |
| CO-UB-CR-300 |  | Install of Fire Alarm Control panel | 6d | 2026-12-27 | 2027-01-03 | CO-UB-CR-250 FF, CO-UB-CR-210, CO-UB-CR-230, CO-UB-CR-290 | 25.5d |
| CO-UB-CR-320 |  | Installation of the addressable manual call point with operation safety glass breaking | 3d | 2027-01-03 | 2027-01-06 | CO-UB-CR-300, CO-UB-CR-250 | 25.5d |
| CO-UB-CR-330 |  | Install of the photoelectric heat & smoke detector | 3d | 2027-01-06 | 2027-01-10 | CO-UB-CR-320 | 25.5d |
| CO-UB-CR-340 |  | Install of Sounder With Beacon | 3d | 2027-01-06 | 2027-01-10 | CO-UB-CR-330 SS, CO-UB-CR-330 FF | 25.5d |
| CO-UB-CR-350 |  | Install of Addressable Control module | 4d | 2027-01-10 | 2027-01-14 | CO-UB-CR-340 | 25.5d |
|  | 2 | **Furnitures work** |  | 2027-01-14 | 2027-01-20 |  |  |
| CO-UB-CR-360 |  | Office Chairs,Tables and Stand | 5d | 2027-01-14 | 2027-01-20 | CO-UB-CR-350, CO-UB-CR-280, CO-UB-CR-270, CO-UB-CR-310 | 25.5d |
|  | ML | **Softscape and Planting Works** |  | 2026-11-07 | 2026-12-22 |  |  |
|  | 1 | **Planting Beds Preparation** |  | 2026-11-07 | 2026-12-01 |  |  |
| CO-LS-PL-100 |  | Excavation of planting beds | 7d | 2026-11-07 | 2026-11-15 | PRO-FE-CV-DL-90, PRO-R25-IR-DL-140 | 12.75d |
| CO-LS-PL-110 |  | Supply & placement of suitable topsoil | 7d | 2026-11-15 | 2026-11-23 | CO-LS-PL-100 | 12.75d |
| CO-LS-PL-120 |  | Soil improvement (fertilizer, compost, additives) | 7d | 2026-11-23 | 2026-12-01 | CO-LS-PL-110 | 12.75d |
|  | 2 | **Supports & Protection** |  | 2026-12-01 | 2026-12-08 |  |  |
| CO-LS-PL-130 |  | installation of plant supports / stakes | 3d | 2026-12-01 | 2026-12-05 | CO-LS-PL-120 | 12.75d |
| CO-LS-PL-140 |  | Ties and protection materials | 3d | 2026-12-05 | 2026-12-08 | CO-LS-PL-130 | 12.75d |
|  | 3 | **Plant Supply** |  | 2026-12-08 | 2026-12-12 |  |  |
| CO-LS-PL-150 |  | installation of trees | 3d | 2026-12-08 | 2026-12-12 | CO-LS-PL-140 | 12.75d |
|  | 4 | **Site Furnishings** |  | 2026-12-12 | 2026-12-22 |  |  |
| CO-LS-PL-160 |  | installation of Seating benches | 3d | 2026-12-12 | 2026-12-15 | CO-LS-PL-150 | 12.75d |
| CO-LS-PL-170 |  | tone boulders placement & fixing Works | 3d | 2026-12-15 | 2026-12-19 | CO-LS-PL-160 | 12.75d |
| CO-LS-PL-180 |  | Gravel Works | 3d | 2026-12-19 | 2026-12-22 | CO-LS-PL-170 | 12.75d |
|  | 1 | **Fence and Gaurd Room** |  | 2026-07-28 | 2027-02-23 |  |  |
|  | 1 | **Gaurd Room Work** |  | 2026-08-29 | 2027-01-20 |  |  |
|  | 1 | **Civil Work** |  | 2026-08-29 | 2026-10-15 |  |  |
| A1000 |  | Excavation Work For Gaurd Room Foundation | 7d | 2026-08-29 | 2026-09-05 | MS-CF-MOB, ENG-SH-GR-A-190, PRO-GR-CV-1DL-60, PRO-GR-CV-DL-70 | 25d |
| A1010 |  | Pouring for Plain Concrete | 4d | 2026-09-06 | 2026-09-09 | A1000 | 25d |
| A1020 |  | Pouring R.C Footing For Gaurd Room | 11d | 2026-09-10 | 2026-09-22 | A1010 | 25d |
| A1030 |  | Pouring R.C Columns For Gaurd Room | 10d | 2026-09-24 | 2026-10-05 | A1020 | 25d |
| A1040 |  | Pouring Beams and Slab For Gaurd Room | 9d | 2026-10-06 | 2026-10-15 | A1030 | 25d |
|  | 2 | **Finishing Work** |  | 2026-10-17 | 2027-01-20 |  |  |
|  | 1 | **Architictural work** |  | 2026-10-17 | 2026-12-08 |  |  |
| A1050 |  | Brick Work For Gaurd Room | 9d | 2026-10-17 | 2026-10-26 | A1040 | 25d |
| A1060 |  | Thermal & Moisture Protection Work for Gaurd Room | 7d | 2026-10-27 | 2026-11-03 | A1050 | 31d |
| A1070 |  | Install For Curtian Wall and Windows and Doors | 8d | 2026-11-11 | 2026-11-19 | A1060, A1130, A1150 | 25d |
| A1080 |  | External Finshing Work (Walls and Floor) | 8d | 2026-11-21 | 2026-11-29 | A1070 | 25d |
| A1090 |  | Internal Finshing Work (Walls,Floor and Ceiling) | 8d | 2026-11-30 | 2026-12-08 | A1080 | 25d |
|  | 3 | **Mechanical Work** |  | 2026-10-27 | 2026-12-20 |  |  |
|  | 1 | **Sanitary Drainage & Plumbing System** |  | 2026-10-27 | 2026-11-10 |  |  |
| A1110 |  | Install Sanitary Piping System (UPVC) | 4d | 2026-10-27 | 2026-10-31 | A1050 | 25d |
| A1120 |  | Install Base mounted flush tank water Western water closet system | 6d | 2026-11-01 | 2026-11-07 | A1110 | 25d |
| A1130 |  | Install 1 meter length 10mm diameter Flexible Hose and Gate Valves and Slow Closing Valve | 3d | 2026-11-08 | 2026-11-10 | A1120 | 25d |
|  | 2 | **Water Supply System** |  | 2026-10-27 | 2026-12-10 |  |  |
| A1240 |  | Install GRP water tanks capacity of each 1000 liter | 3d | 2026-10-27 | 2026-10-29 | A1050 | 26d |
| A1140 |  | Install for Cold Water Pipe complete with joints, angles, reducer etc. | 5d | 2026-10-31 | 2026-11-04 | A1240 | 26d |
| A1150 |  | Install for Hot Water Pipe complete with joints, angles, reducer etc. | 4d | 2026-11-05 | 2026-11-09 | A1140 | 26d |
| A1160 |  | Install for Isolation Valve,Spray Head,Roof Drain,Floor Drain,Gully teap,Vend on Roof to exhaust air | 3d | 2026-11-10 | 2026-11-12 | A1150 | 45d |
| A1170 |  | Install of Inspection chamber, size 800x900x1000 | 2d | 2026-11-14 | 2026-11-15 | A1160 | 45d |
| A1180 |  | Install OF Electric Water Heater set with connection and Water meter complete with accessories | 2d | 2026-12-09 | 2026-12-10 | A1170, A1090 | 25d |
|  | 3 | **HVAC System** |  | 2026-11-01 | 2026-12-20 |  |  |

| ID | WBS | Task | Duration | Start | Finish | Predecessors | Total float |
| --- | --- | --- | --- | --- | --- | --- | --- |
| A1200 |  | Install of Refrigerant Piping ( fabricated metal ducts with flanges complete with supports, vanes, dampers ) | 4d | 2026-11-01 | 2026-11-04 | A1050, A1110 | 46d |
| A1190 |  | Install of Mini split actual capacity 2 Ton and Ducted split actual capacity 4 Ton | 7d | 2026-12-09 | 2026-12-16 | A1090, A1200 | 47d |
| A1210 |  | Install of Air Grills 150mm x150mm and Air Diffuser 600mm x 600mm | 3d | 2026-12-17 | 2026-12-20 | A1190, A1200 | 47d |
|  | 4 | **Fire Fitting System** |  | 2026-11-05 | 2026-12-15 |  |  |
| A1220 |  | Installation & Testing of 2 hours Fire rated system for closing the openings between rooms with help of Rock wool | 6d | 2026-11-05 | 2026-11-11 | A1200 | 46d |
| A1230 |  | Install Fire Extinguishers | 6d | 2026-12-09 | 2026-12-15 | A1220, A1090 | 51d |
|  | 4 | **Electrical Work** |  | 2026-11-05 | 2027-01-14 |  |  |
|  | 1 | **LV Power** |  | 2026-11-05 | 2026-12-14 |  |  |
| A1250 |  | Install of Distribution board For Gaurd Room | 5d | 2026-11-05 | 2026-11-10 | A1200, A1050 | 46d |
| A1270 |  | Install of Earting Cable for Gaurd Room | 5d | 2026-11-11 | 2026-11-16 | A1250 | 46d |
| A1260 |  | Install of Socket outlet and LED Lighting | 5d | 2026-12-09 | 2026-12-14 | A1250, A1090, A1270 | 52d |
|  | 3 | **Fire Detection And Alarm System** |  | 2026-11-12 | 2027-01-02 |  |  |
| A1340 |  | Install of 2C x 1.5 Sqm FR Rated Armored - Cable For Loop Wiring | 5d | 2026-11-12 | 2026-11-17 | A1200, A1220 | 46d |
| A1350 |  | Install of Transmission Communication cable - Fiber Optics 12Core | 5d | 2026-11-18 | 2026-11-23 | A1340 | 46d |
| A1360 |  | Install of power supply system for fire alarm control panel | 5d | 2026-12-09 | 2026-12-14 | A1350, A1090 | 33d |
| A1280 |  | Install of Fire Alarm Control panel | 6d | 2026-12-15 | 2026-12-21 | A1090 FF, A1340, A1350, A1360 | 33d |
| A1290 |  | Installation of the addressable manual call point with operation safety glass breaking | 3d | 2026-12-22 | 2026-12-24 | A1280, A1090 | 33d |
| A1300 |  | Install of the photoelectric heat & smoke detector | 3d | 2026-12-26 | 2026-12-28 | A1290 | 33d |
| A1310 |  | Install of Sounder With Beacon | 3d | 2026-12-26 | 2026-12-28 | A1300 SS, A1300 FF | 33d |
| A1320 |  | Install of Addressable Control module | 4d | 2026-12-29 | 2027-01-02 | A1310 | 33d |
|  | 2 | **Security System** |  | 2026-12-12 | 2027-01-14 |  |  |
| A1580 |  | Install 8 Port Industrial PoE Switch 10/100BaseT (0 deg to +70 deg. Celsius) | 5d | 2026-12-12 | 2026-12-16 | A1250, A1090, A1180, A1270 | 25d |
| A1590 |  | Optical Fiber,48 Core Splice Closure | 3d | 2026-12-17 | 2026-12-20 | A1580 | 26d |
| A1650 |  | Pole/Bollard mounted IP( PoE) and 12U rack dimension | 4d | 2026-12-17 | 2026-12-21 | A1580 | 25d |
| A1600 |  | Boom Barrier at Security Guard Room | 5d | 2026-12-22 | 2026-12-27 | A1590, A1650 | 25d |
| A1610 |  | Pedestrian turnstile at Security Guard Room | 5d | 2026-12-28 | 2027-01-02 | A1600 | 25d |
| A1620 |  | Access Control Unit and Access Card Reader | 4d | 2027-01-03 | 2027-01-06 | A1610 | 25d |
| A1630 |  | Magnetic Lock and Break Glass and Exit Push button | 4d | 2027-01-07 | 2027-01-11 | A1620 | 25d |
| A1640 |  | Door Sensor and Biometrics Reader | 3d | 2027-01-12 | 2027-01-14 | A1630, A1320 | 25d |
|  | 2 | **Furnitures work** |  | 2027-01-16 | 2027-01-20 |  |  |
| A1100 |  | Office Chairs,Tables and Stand | 5d | 2027-01-16 | 2027-01-20 | A1640, A1320, A1260, A1230, A1210, A1180 | 25d |
|  | 2 | **Fence Work** |  | 2026-07-28 | 2027-02-23 |  |  |
|  | 1 | **Northern Fence N01:N03** |  | 2026-07-28 | 2027-01-17 |  |  |
|  | 1 | **Civil Work** |  | 2026-07-28 | 2026-09-01 |  |  |
| CO-SU-FE-N-CI-100 |  | Excavation Work For Northern Fence | 4d | 2026-07-28 | 2026-08-01 | ENG-SH-GR-A-200_R, PRO-FE-CV-DL-80 SS+3d, CO-EW-110_R SS+5d, PRO-FE-CV-MF-60 SS | -0.15d |
| CO-SU-FE-N-CI-110 |  | Pouring for Plain Concrete Northern Fence | 3.5d | 2026-08-02 | 2026-08-05 | CO-SU-FE-N-CI-100 | -0.15d |
| CO-SU-FE-N-CI-120 |  | Pouring R.C Footing For Northern Fence | 6d | 2026-08-05 | 2026-08-12 | CO-SU-FE-N-CI-110 | -0.15d |
| CO-SU-FE-N-CI-130 |  | Pouring R.C Columns For Northern Fence | 5d | 2026-08-12 | 2026-08-18 | CO-SU-FE-N-CI-120 | -0.15d |
| CO-SU-FE-N-CI-140 |  | Pouring Beams For Northern Fence | 4d | 2026-08-29 | 2026-09-01 | CO-SU-FE-N-CI-130, CO-SU-FE-N-AR-100 | 0.35d |
|  | 5 | **Finishing Work** |  | 2026-08-18 | 2027-01-17 |  |  |
|  | 3 | **Electrical Work** |  | 2026-08-29 | 2026-12-08 |  |  |
| CO-SU-FE-N-EL-100 |  | Trench excavation to receive 2 nos 50mm diameter PVC Conduit | 8d | 2026-08-29 | 2026-09-06 | CO-SU-FE-N-AR-100 | 1d |
| CO-SU-FE-N-EL-110 |  | Trench excavation to receive 3 nos 50mm diameter PVC Conduit | 8d | 2026-08-29 | 2026-09-06 | CO-SU-FE-N-EL-100 SS | 1d |
| CO-SU-FE-N-EL-120 |  | Fixing of Control cable,CAT6A cable | 9d | 2026-09-07 | 2026-09-16 | CO-SU-FE-N-EL-100, CO-SU-FE-N-EL-110 | 1d |
| CO-SU-FE-N-EL-130 |  | Install 800mm x 800mm x 800mm height concrete handhole | 9d | 2026-09-07 | 2026-09-16 | CO-SU-FE-N-EL-100, CO-SU-FE-N-EL-110 | 1d |
| CO-SU-FE-N-EL-140 |  | Hot dipped galvanized cable conduits for CAT6A cable and Control Cables embedded to wall | 8d | 2026-09-07 | 2026-09-15 | CO-SU-FE-N-EL-100, CO-SU-FE-N-EL-110 | 2d |
| CO-SU-FE-N-EL-150 |  | Fixing Earthing Work (Earth Pit,Grounding rod,Tinned Copper wire) | 8d | 2026-09-17 | 2026-09-27 | CO-SU-FE-N-EL-120, CO-SU-FE-N-EL-130, CO-SU-FE-N-EL-140 | 1d |
| CO-SU-FE-N-EL-160 |  | Field Equipment Cabinet enclosed outdoor complete with precast concrete footing, | 8d | 2026-09-28 | 2026-10-06 | CO-SU-FE-N-EL-150 | 1d |
| CO-SU-FE-N-EL-170 |  | Fence Lightining 400V, 3PH, 60Hz lighting control panel (LCP-02) | 8d | 2026-09-28 | 2026-10-06 | CO-SU-FE-N-EL-150 | 1d |
| CO-SU-FE-N-EL-180 |  | Install of direct buried armored cable 4C-16mm2 ,10mm2 | 9d | 2026-10-07 | 2026-10-17 | CO-SU-FE-N-EL-160, CO-SU-FE-N-EL-170 | 1d |
| CO-SU-FE-N-EL-190 |  | Install 16mm2,10mm2 CU/PVC wire | 9d | 2026-10-07 | 2026-10-17 | CO-SU-FE-N-EL-160, CO-SU-FE-N-EL-170 | 1d |
| CO-SU-FE-N-EL-200 |  | FEC-CCTV ( 4C-16mm2 CU/XLPE/PVC direct buried armored cable,16mm2 CU/PVC wire | 8d | 2026-10-07 | 2026-10-15 | CO-SU-FE-N-EL-160, CO-SU-FE-N-EL-170 | 2d |
| CO-SU-FE-N-EL-210 |  | Junction Box for lighting fixture | 8d | 2026-10-18 | 2026-10-26 | CO-SU-FE-N-EL-180, CO-SU-FE-N-EL-190 | 3d |
| CO-SU-FE-N-EL-220 |  | IR Intrusion Detection System Quad Beams | 8d | 2026-11-19 | 2026-11-29 | CO-SU-FE-N-EL-180, CO-SU-FE-N-EL-190, CO-SU-FE-N-EL-200, CO-SU-FE-N-EL-210, CO-SU-FE-N-AR-130, CO-SU-FE-N-AR-140, CO-SU-FE-N-AR-120, CO-SU-FE-EP2-AR-400 | 38.5d |
| CO-SU-FE-N-EL-230 |  | Install of 38W, 230V, 1PH, 60Hz fence, led linear uplight lighting, IP66 | 9d | 2026-11-19 | 2026-11-30 | CO-SU-FE-N-EL-190, CO-SU-FE-N-EL-200, CO-SU-FE-N-EL-210, CO-SU-FE-N-AR-120, CO-SU-FE-N-AR-130, CO-SU-FE-N-AR-140, CO-SU-FE-EP2-AR-400 | 37.5d |
| CO-SU-FE-N-EL-240 |  | Install, fixings, testing and commissioning 80W LED | 7d | 2026-11-30 | 2026-12-08 | CO-SU-FE-N-EL-220, CO-SU-FE-N-EL-230 | 37.5d |
|  | 4 | **Architictural work** |  | 2026-08-18 | 2027-01-17 |  |  |
| CO-SU-FE-N-AR-100 |  | Install Brick Work For Northern Fence | 8.5d | 2026-08-18 | 2026-08-27 | CO-SU-FE-N-CI-130 | 0.35d |
| CO-SU-FE-N-AR-110 |  | External plastering to walls and columns | 7d | 2026-10-18 | 2026-10-25 | CO-SU-FE-N-AR-100, CO-SU-FE-N-CI-140, CO-SU-FE-N-EL-200, CO-SU-FE-N-EL-190, CO-SU-FE-N-EL-180 | 1d |
| CO-SU-FE-N-AR-120 |  | Install 50mm thick random cut stone cladding | 7d | 2026-10-26 | 2026-11-02 | CO-SU-FE-N-AR-110 | 1d |
| CO-SU-FE-N-AR-130 |  | Install 2 coats of weatherproof paint at walls | 6d | 2026-11-03 | 2026-11-09 | CO-SU-FE-N-AR-120 | 1d |
| CO-SU-FE-N-AR-140 |  | Install Stone coping 500mm,525mm | 4d | 2026-11-10 | 2026-11-14 | CO-SU-FE-N-AR-130 | 1d |
| CO-SU-FE-N-AR-150 |  | Install MODON Signage | 7d | 2027-01-09 | 2027-01-17 | CO-SU-FE-N-AR-140, CO-SU-FE-WP2-AR-260 | -0.15d |
|  | 2 | **Western Fence P1 ( W01:W06 )** |  | 2026-08-18 | 2027-01-26 |  |  |
|  | 1 | **Civil Work** |  | 2026-08-18 | 2026-11-01 |  |  |
| CO-SU-FE-WP1-CI-150 |  | Excavation Work For Northern Fence | 8d | 2026-08-18 | 2026-08-27 | CO-SU-FE-N-CI-120, CO-SU-FE-N-CI-130, CO-SU-FE-N-CI-130 FF | -0.15d |
| CO-SU-FE-WP1-CI-160 |  | Pouring for Plain Concrete Northern Fence | 5d | 2026-08-27 | 2026-09-02 | CO-SU-FE-WP1-CI-150 | -0.15d |
| CO-SU-FE-WP1-CI-170 |  | Pouring R.C Footing For Northern Fence | 8d | 2026-09-02 | 2026-09-12 | CO-SU-FE-WP1-CI-160, CO-SU-FE-N-CI-140 | -0.15d |
| CO-SU-FE-WP1-CI-180 |  | Pouring R.C Columns For Northern Fence | 16d | 2026-09-12 | 2026-10-01 | CO-SU-FE-WP1-CI-170 | -0.15d |
| CO-SU-FE-WP1-CI-190 |  | Pouring Beams For Northern Fence | 17d | 2026-10-12 | 2026-11-01 | CO-SU-FE-WP1-CI-180, CO-SU-FE-WP1-AR-160 | 19.5d |

| ID | WBS | Task | Duration | Start | Finish | Predecessors | Total float |
| --- | --- | --- | --- | --- | --- | --- | --- |
|  | 5 | **Finishing Work** |  | 2026-10-01 | 2027-01-26 |  |  |
|  | 3 | **Electrical Work** |  | 2026-10-12 | 2027-01-20 |  |  |
| CO-SU-FE-WP1-EL-260 |  | Trench excavation to receive 2 nos 50mm diameter PVC Conduit | 14d | 2026-10-12 | 2026-10-28 | CO-SU-FE-WP1-AR-160, CO-SU-FE-N-EL-100 | 1.5d |
| CO-SU-FE-WP1-EL-320 |  | Trench excavation to receive 3 nos 50mm diameter PVC Conduit | 14d | 2026-10-12 | 2026-10-28 | CO-SU-FE-WP1-EL-260 SS, CO-SU-FE-N-EL-110 | 1.5d |
| CO-SU-FE-WP1-EL-300 |  | Fixing of Control cable,CAT6A cable | 14d | 2026-10-28 | 2026-11-14 | CO-SU-FE-WP1-EL-260, CO-SU-FE-WP1-EL-320, CO-SU-FE-N-EL-120 | 1.5d |
| CO-SU-FE-WP1-EL-310 |  | Install 800mm x 800mm x 800mm height concrete handhole | 14d | 2026-10-28 | 2026-11-14 | CO-SU-FE-WP1-EL-260, CO-SU-FE-WP1-EL-320, CO-SU-FE-N-EL-130, CO-SU-FE-N-EL-210 | 1.5d |
| CO-SU-FE-WP1-EL-330 |  | Hot dipped galvanized cable conduits for CAT6A cable and Control Cables embedded to wall | 14d | 2026-10-28 | 2026-11-14 | CO-SU-FE-WP1-EL-260, CO-SU-FE-WP1-EL-320, CO-SU-FE-N-EL-140 | 1.5d |
| CO-SU-FE-WP1-EL-280 |  | Fixing Earthing Work (Earth Pit,Grounding rod,Tinned Copper wire) | 11d | 2026-11-15 | 2026-11-26 | CO-SU-FE-WP1-EL-300, CO-SU-FE-WP1-EL-310, CO-SU-FE-WP1-EL-330, CO-SU-FE-N-EL-150, CO-SU-FE-N-AR-140, CO-SU-FE-N-EL-210 | 1d |
| CO-SU-FE-WP1-EL-340 |  | Field Equipment Cabinet enclosed outdoor complete with precast concrete footing, | 9d | 2026-11-28 | 2026-12-07 | CO-SU-FE-WP1-EL-280, CO-SU-FE-N-EL-160 | 1d |
| CO-SU-FE-WP1-EL-350 |  | Fence Lightining 400V, 3PH, 60Hz lighting control panel (LCP-02) | 9d | 2026-11-28 | 2026-12-07 | CO-SU-FE-WP1-EL-280, CO-SU-FE-N-EL-170 | 1d |
| CO-SU-FE-WP1-EL-360 |  | Install of direct buried armored cable 4C-16mm2 ,10mm2 | 8d | 2026-12-08 | 2026-12-16 | CO-SU-FE-WP1-EL-340, CO-SU-FE-WP1-EL-350, CO-SU-FE-N-EL-180 | 2d |
| CO-SU-FE-WP1-EL-370 |  | Install 16mm2,10mm2 CU/PVC wire | 8d | 2026-12-08 | 2026-12-16 | CO-SU-FE-WP1-EL-340, CO-SU-FE-WP1-EL-350, CO-SU-FE-N-EL-190 | 2d |
| CO-SU-FE-WP1-EL-390 |  | FEC-CCTV ( 4C-16mm2 CU/XLPE/PVC direct buried armored cable,16mm2 CU/PVC wire | 9d | 2026-12-08 | 2026-12-17 | CO-SU-FE-WP1-EL-340, CO-SU-FE-WP1-EL-350, CO-SU-FE-N-EL-200 | 1d |
| CO-SU-FE-WP1-EL-250 |  | Junction Box for lighting fixture | 11d | 2026-12-17 | 2026-12-29 | CO-SU-FE-WP1-EL-360, CO-SU-FE-WP1-EL-370, CO-SU-FE-N-EL-210 | 5d |
| CO-SU-FE-WP1-EL-290 |  | IR Intrusion Detection System Quad Beams | 4d | 2027-01-12 | 2027-01-16 | CO-SU-FE-WP1-EL-360, CO-SU-FE-WP1-EL-370, CO-SU-FE-WP1-EL-390, CO-SU-FE-WP1-EL-250, CO-SU-FE-WP1-AR-190, CO-SU-FE-WP1-AR-200, CO-SU-FE-WP1-AR-180, CO-SU-FE-N-EL-220 | 1d |
| CO-SU-FE-WP1-EL-380 |  | Install of 38W, 230V, 1PH, 60Hz fence, led linear uplight lighting, IP66 | 4d | 2027-01-12 | 2027-01-16 | CO-SU-FE-WP1-EL-370, CO-SU-FE-WP1-EL-390, CO-SU-FE-WP1-EL-250, CO-SU-FE-WP1-AR-180, CO-SU-FE-WP1-AR-190, CO-SU-FE-WP1-AR-200, CO-SU-FE-N-EL-220 | 4d |
| CO-SU-FE-WP1-EL-270 |  | Install, fixings, testing and commissioning 80W LED | 4d | 2027-01-17 | 2027-01-20 | CO-SU-FE-WP1-EL-290, CO-SU-FE-WP1-EL-380, CO-SU-FE-N-EL-240 | 4d |
|  | 4 | **Architictural work** |  | 2026-10-01 | 2027-01-26 |  |  |
| CO-SU-FE-WP1-AR-160 |  | Install Brick Work For Northern Fence | 9d | 2026-10-01 | 2026-10-12 | CO-SU-FE-WP1-CI-180 | 1.5d |
| CO-SU-FE-WP1-AR-170 |  | External plastering to walls and columns | 6d | 2026-12-19 | 2026-12-24 | CO-SU-FE-WP1-AR-160, CO-SU-FE-WP1-CI-190, CO-SU-FE-WP1-EL-390, CO-SU-FE-WP1-EL-370, CO-SU-FE-WP1-EL-360 | 1d |
| CO-SU-FE-WP1-AR-180 |  | Install 50mm thick random cut stone cladding | 5d | 2026-12-26 | 2026-12-30 | CO-SU-FE-WP1-AR-170 | 1d |
| CO-SU-FE-WP1-AR-190 |  | Install 2 coats of weatherproof paint at walls | 6d | 2026-12-31 | 2027-01-06 | CO-SU-FE-WP1-AR-180 | 1d |
| CO-SU-FE-WP1-AR-200 |  | Install Stone coping 500mm,525mm | 4d | 2027-01-07 | 2027-01-11 | CO-SU-FE-WP1-AR-190 | 1d |
| CO-SU-FE-WP1-AR-210 |  | Install MODON Signage | 8d | 2027-01-17 | 2027-01-26 | CO-SU-FE-WP1-AR-200, CO-SU-FE-N-AR-150 | -0.15d |
|  | 3 | **Western Fence P2 ( W07:W12 )** |  | 2026-09-16 | 2027-02-04 |  |  |
|  | 1 | **Civil Work** |  | 2026-09-16 | 2026-11-09 |  |  |
| CO-SU-FE-WP2-CI-200 |  | Excavation Work For Northern Fence | 5d | 2026-09-16 | 2026-09-22 | CO-SU-FE-WP1-CI-170, CO-SU-FE-WP1-CI-180 SS+3.65d | -0.15d |
| CO-SU-FE-WP2-CI-210 |  | Pouring for Plain Concrete Northern Fence | 5d | 2026-09-22 | 2026-09-29 | CO-SU-FE-WP2-CI-200 | -0.15d |
| CO-SU-FE-WP2-CI-220 |  | Pouring R.C Footing For Northern Fence | 7d | 2026-09-29 | 2026-10-07 | CO-SU-FE-WP2-CI-210 | -0.15d |
| CO-SU-FE-WP2-CI-230 |  | Pouring R.C Columns For Northern Fence | 9d | 2026-10-07 | 2026-10-18 | CO-SU-FE-WP2-CI-220 | -0.15d |
| CO-SU-FE-WP2-CI-240 |  | Pouring Beams For Northern Fence | 7d | 2026-11-01 | 2026-11-09 | CO-SU-FE-WP2-CI-230, CO-SU-FE-WP2-AR-220, CO-SU-FE-WP1-CI-190 | 19.5d |
|  | 5 | **Finishing Work** |  | 2026-10-18 | 2027-02-04 |  |  |
|  | 3 | **Electrical Work** |  | 2026-10-27 | 2027-02-01 |  |  |
| CO-SU-FE-WP2-EL-410 |  | Trench excavation to receive 2 nos 50mm diameter PVC Conduit | 4d | 2026-10-27 | 2026-11-01 | CO-SU-FE-WP2-AR-220 | -0.15d |
| CO-SU-FE-WP2-EL-470 |  | Trench excavation to receive 3 nos 50mm diameter PVC Conduit | 6d | 2026-10-27 | 2026-11-03 | CO-SU-FE-WP2-EL-410 SS | -0.15d |
| CO-SU-FE-WP2-EL-450 |  | Fixing of Control cable,CAT6A cable | 7d | 2026-11-03 | 2026-11-11 | CO-SU-FE-WP2-EL-410, CO-SU-FE-WP2-EL-470 | -0.15d |
| CO-SU-FE-WP2-EL-460 |  | Install 800mm x 800mm x 800mm height concrete handhole | 6.8d | 2026-11-03 | 2026-11-10 | CO-SU-FE-WP2-EL-410, CO-SU-FE-WP2-EL-470, CO-SU-FE-WP2-EL-410 FF | 0.05d |
| CO-SU-FE-WP2-EL-480 |  | Hot dipped galvanized cable conduits for CAT6A cable and Control Cables embedded to wall | 6d | 2026-11-03 | 2026-11-10 | CO-SU-FE-WP2-EL-410, CO-SU-FE-WP2-EL-470 | 0.85d |
| CO-SU-FE-WP2-EL-430 |  | Fixing Earthing Work (Earth Pit,Grounding rod,Tinned Copper wire) | 6d | 2026-11-11 | 2026-11-18 | CO-SU-FE-WP2-EL-450, CO-SU-FE-WP2-EL-460, CO-SU-FE-WP2-EL-480 | -0.15d |
| CO-SU-FE-WP2-EL-490 |  | Field Equipment Cabinet enclosed outdoor complete with precast concrete footing, | 4d | 2026-11-18 | 2026-11-23 | CO-SU-FE-WP2-EL-430, CO-SU-FE-WP2-EL-460 | -0.15d |
| CO-SU-FE-WP2-EL-510 |  | Install of direct buried armored cable 4C-16mm2 ,10mm2 | 7.5d | 2026-11-23 | 2026-12-01 | CO-SU-FE-WP2-EL-490, CO-SU-FE-WP2-EL-430, CO-SU-FE-WP2-EL-450, CO-SU-FE-WP2-EL-460 | 0.35d |
| CO-SU-FE-WP2-EL-520 |  | Install 16mm2,10mm2 CU/PVC wire | 7.5d | 2026-11-23 | 2026-12-01 | CO-SU-FE-WP2-EL-490, CO-SU-FE-WP2-EL-430, CO-SU-FE-WP2-EL-450 | 0.35d |
| CO-SU-FE-WP2-EL-540 |  | FEC-CCTV ( 4C-16mm2 CU/XLPE/PVC direct buried armored cable,16mm2 CU/PVC wire | 8d | 2026-11-23 | 2026-12-02 | CO-SU-FE-WP2-EL-490, CO-SU-FE-WP2-EL-430, CO-SU-FE-WP2-EL-450 | -0.15d |
| CO-SU-FE-WP2-EL-400 |  | Junction Box for lighting fixture | 3d | 2026-12-01 | 2026-12-05 | CO-SU-FE-WP2-EL-510, CO-SU-FE-WP2-EL-520 | 14.35d |
| CO-SU-FE-WP2-EL-440 |  | IR Intrusion Detection System Quad Beams | 7d | 2027-01-17 | 2027-01-24 | CO-SU-FE-WP2-EL-510, CO-SU-FE-WP2-EL-520, CO-SU-FE-WP2-EL-540, CO-SU-FE-WP2-EL-400, CO-SU-FE-WP2-AR-250, CO-SU-FE-WP2-AR-260, CO-SU-FE-WP2-AR-240, CO-SU-FE-WP1-EL-290 | 1d |
| CO-SU-FE-WP2-EL-530 |  | Install of 38W, 230V, 1PH, 60Hz fence, led linear uplight lighting, IP66 | 7d | 2027-01-17 | 2027-01-24 | CO-SU-FE-WP2-EL-520, CO-SU-FE-WP2-EL-540, CO-SU-FE-WP2-EL-400, CO-SU-FE-WP2-AR-240, CO-SU-FE-WP2-AR-250, CO-SU-FE-WP2-AR-260, CO-SU-FE-WP1-EL-290 | 1d |
| CO-SU-FE-WP2-EL-420 |  | Install, fixings, testing and commissioning 80W LED | 7d | 2027-01-25 | 2027-02-01 | CO-SU-FE-WP2-EL-440, CO-SU-FE-WP2-EL-530, CO-SU-FE-WP1-EL-270 | 1d |
|  | 4 | **Architictural work** |  | 2026-10-18 | 2027-02-04 |  |  |
| CO-SU-FE-WP2-AR-220 |  | Install Brick Work For Northern Fence | 8d | 2026-10-18 | 2026-10-27 | CO-SU-FE-WP2-CI-230 | -0.15d |
| CO-SU-FE-WP2-AR-230 |  | External plastering to walls and columns | 8d | 2026-12-02 | 2026-12-12 | CO-SU-FE-WP2-AR-220, CO-SU-FE-WP2-CI-240, CO-SU-FE-WP2-EL-540, CO-SU-FE-WP2-EL-520, CO-SU-FE-WP2-EL-510 | -0.15d |
| CO-SU-FE-WP2-AR-240 |  | Install 50mm thick random cut stone cladding | 8d | 2026-12-12 | 2026-12-21 | CO-SU-FE-WP2-AR-230 | -0.15d |
| CO-SU-FE-WP2-AR-250 |  | Install 2 coats of weatherproof paint at walls | 8d | 2026-12-21 | 2026-12-30 | CO-SU-FE-WP2-AR-240 | -0.15d |
| CO-SU-FE-WP2-AR-260 |  | Install Stone coping 500mm,525mm | 8d | 2026-12-30 | 2027-01-09 | CO-SU-FE-WP2-AR-250 | -0.15d |
| CO-SU-FE-WP2-AR-270 |  | Install MODON Signage | 8d | 2027-01-26 | 2027-02-04 | CO-SU-FE-WP2-AR-260, CO-SU-FE-WP1-AR-210 | -0.15d |
|  | 4 | **Southern Fence S01:S05** |  | 2026-08-01 | 2027-02-15 |  |  |
|  | 1 | **Civil Work** |  | 2026-08-01 | 2026-09-13 |  |  |
| CO-SU-FE-S-CI-250 |  | Excavation Work For Northern Fence | 7d | 2026-08-01 | 2026-08-09 | CO-EW-110_R, ENG-SH-GR-A-200_R, PRO-FE-CV-DL-80, PRO-FE-CV-MF-60 | 33.5d |
| CO-SU-FE-S-CI-260 |  | Pouring for Plain Concrete Northern Fence | 3d | 2026-08-09 | 2026-08-12 | CO-SU-FE-S-CI-250 | 33.5d |
| CO-SU-FE-S-CI-270 |  | Pouring R.C Footing For Northern Fence | 8d | 2026-08-12 | 2026-08-22 | CO-SU-FE-S-CI-260 | 33.5d |
| CO-SU-FE-S-CI-280 |  | Pouring R.C Columns For Northern Fence | 10d | 2026-08-22 | 2026-09-02 | CO-SU-FE-S-CI-270 | 50.5d |
| CO-SU-FE-S-CI-290 |  | Pouring Beams For Northern Fence | 9d | 2026-09-02 | 2026-09-13 | CO-SU-FE-S-CI-280, CO-SU-FE-S-AR-280 SS | 50.5d |
|  | 5 | **Finishing Work** |  | 2026-09-02 | 2027-02-15 |  |  |
|  | 3 | **Electrical Work** |  | 2026-09-02 | 2027-02-10 |  |  |
| CO-SU-FE-S-EL-560 |  | Trench excavation to receive 2 nos 50mm diameter PVC Conduit | 15d | 2026-09-02 | 2026-09-20 | CO-SU-FE-S-AR-280 SS | 52.5d |
| CO-SU-FE-S-EL-620 |  | Trench excavation to receive 3 nos 50mm diameter PVC Conduit | 15d | 2026-09-02 | 2026-09-20 | CO-SU-FE-S-EL-560 SS | 52.5d |
| CO-SU-FE-S-EL-600 |  | Fixing of Control cable,CAT6A cable | 15d | 2026-09-20 | 2026-10-08 | CO-SU-FE-S-EL-560, CO-SU-FE-S-EL-620 | 52.5d |
| CO-SU-FE-S-EL-610 |  | Install 800mm x 800mm x 800mm height concrete handhole | 15d | 2026-09-20 | 2026-10-08 | CO-SU-FE-S-EL-560, CO-SU-FE-S-EL-620 | 52.5d |
| CO-SU-FE-S-EL-630 |  | Hot dipped galvanized cable conduits for CAT6A cable and Control Cables embedded to wall | 15d | 2026-09-20 | 2026-10-08 | CO-SU-FE-S-EL-560, CO-SU-FE-S-EL-620 | 52.5d |
| CO-SU-FE-S-EL-580 |  | Fixing Earthing Work (Earth Pit,Grounding rod,Tinned Copper wire) | 6d | 2026-10-08 | 2026-10-15 | CO-SU-FE-S-EL-600, CO-SU-FE-S-EL-610, CO-SU-FE-S-EL-630 | 52.5d |
| CO-SU-FE-S-EL-640 |  | Field Equipment Cabinet enclosed outdoor complete with precast concrete footing, | 4d | 2026-10-08 | 2026-10-13 | CO-SU-FE-S-EL-580 SS, CO-SU-FE-S-EL-580 FF | 52.5d |

| ID | WBS | Task | Duration | Start | Finish | Predecessors | Total float |
| --- | --- | --- | --- | --- | --- | --- | --- |
| CO-SU-FE-S-EL-650 |  | Fence Lightining 400V, 3PH, 60Hz lighting control panel (LCP-02) | 4d | 2026-10-08 | 2026-10-13 | CO-SU-FE-S-EL-580 SS, CO-SU-FE-S-EL-580 FF | 52.5d |
| CO-SU-FE-S-EL-660 |  | Install of direct buried armored cable 4C-16mm2 ,10mm2 | 10d | 2026-10-08 | 2026-10-20 | CO-SU-FE-S-EL-640 SS, CO-SU-FE-S-EL-650 SS | 53.5d |
| CO-SU-FE-S-EL-670 |  | Install 16mm2,10mm2 CU/PVC wire | 6d | 2026-10-13 | 2026-10-20 | CO-SU-FE-S-EL-640, CO-SU-FE-S-EL-650 | 53.5d |
| CO-SU-FE-S-EL-690 |  | FEC-CCTV ( 4C-16mm2 CU/XLPE/PVC direct buried armored cable,16mm2 CU/PVC wire | 7d | 2026-10-13 | 2026-10-21 | CO-SU-FE-S-EL-640, CO-SU-FE-S-EL-650 | 52.5d |
| CO-SU-FE-S-EL-550 |  | Junction Box for lighting fixture | 7d | 2026-12-05 | 2026-12-13 | CO-SU-FE-S-EL-660, CO-SU-FE-S-EL-670, CO-SU-FE-WP2-EL-400 | 14.35d |
| CO-SU-FE-S-EL-590 |  | IR Intrusion Detection System Quad Beams | 7d | 2027-01-09 | 2027-01-16 | CO-SU-FE-S-EL-660, CO-SU-FE-S-EL-670, CO-SU-FE-S-EL-690, CO-SU-FE-S-EL-550, CO-SU-FE-S-AR-310, CO-SU-FE-S-AR-320 SS, CO-SU-FE-S-AR-300 | 15d |
| CO-SU-FE-S-EL-680 |  | Install of 38W, 230V, 1PH, 60Hz fence, led linear uplight lighting, IP66 | 7d | 2027-01-25 | 2027-02-01 | CO-SU-FE-S-EL-670, CO-SU-FE-S-EL-690, CO-SU-FE-S-EL-550, CO-SU-FE-S-AR-300, CO-SU-FE-S-AR-310, CO-SU-FE-S-AR-320, CO-SU-FE-WP2-EL-440 | 1d |
| CO-SU-FE-S-EL-570 |  | Install, fixings, testing and commissioning 80W LED | 7d | 2027-02-02 | 2027-02-10 | CO-SU-FE-S-EL-590, CO-SU-FE-S-EL-680, CO-SU-FE-WP2-EL-420 | 1d |
|  | 4 | **Architictural work** |  | 2026-09-02 | 2027-02-15 |  |  |
| CO-SU-FE-S-AR-280 |  | Install Brick Work For Northern Fence | 6d | 2026-09-02 | 2026-09-09 | CO-SU-FE-S-CI-280 | 50.5d |
| CO-SU-FE-S-AR-290 |  | External plastering to walls and columns | 6d | 2026-10-21 | 2026-10-28 | CO-SU-FE-S-AR-280, CO-SU-FE-S-CI-290, CO-SU-FE-S-EL-690, CO-SU-FE-S-EL-670, CO-SU-FE-S-EL-660 | 52.5d |
| CO-SU-FE-S-AR-300 |  | Install 50mm thick random cut stone cladding | 6d | 2026-10-28 | 2026-11-04 | CO-SU-FE-S-AR-290 | 52.5d |
| CO-SU-FE-S-AR-310 |  | Install 2 coats of weatherproof paint at walls | 8d | 2026-12-30 | 2027-01-07 | CO-SU-FE-S-AR-300, CO-SU-FE-WP1-EL-250 | 5d |
| CO-SU-FE-S-AR-320 |  | Install Stone coping 500mm,525mm | 10d | 2027-01-09 | 2027-01-19 | CO-SU-FE-S-AR-310 | 5d |
| CO-SU-FE-S-AR-330 |  | Install MODON Signage | 8d | 2027-02-04 | 2027-02-15 | CO-SU-FE-S-AR-320, CO-SU-FE-WP2-AR-270, CO-SU-FE-WP2-AR-270 FF, CO-SU-FE-WP2-AR-270 SS | -0.15d |
|  | 5 | **Eastern Fence P1 ( E01:E06 )** |  | 2026-08-12 | 2027-02-20 |  |  |
|  | 1 | **Civil Work** |  | 2026-08-12 | 2026-10-25 |  |  |
| CO-SU-FE-EP1-CI-300 |  | Excavation Work For Northern Fence | 12d | 2026-08-12 | 2026-08-26 | CO-SU-FE-S-CI-270 SS | 33.5d |
| CO-SU-FE-EP1-CI-310 |  | Pouring for Plain Concrete Northern Fence | 8d | 2026-08-26 | 2026-09-05 | CO-SU-FE-EP1-CI-300 | 33.5d |
| CO-SU-FE-EP1-CI-320 |  | Pouring R.C Footing For Northern Fence | 12d | 2026-09-05 | 2026-09-19 | CO-SU-FE-EP1-CI-310 | 33.5d |
| CO-SU-FE-EP1-CI-330 |  | Pouring R.C Columns For Northern Fence | 15d | 2026-09-19 | 2026-10-07 | CO-SU-FE-EP1-CI-320 | 34.5d |
| CO-SU-FE-EP1-CI-340 |  | Pouring Beams For Northern Fence | 7d | 2026-10-17 | 2026-10-25 | CO-SU-FE-EP1-CI-330, CO-SU-FE-EP1-AR-340, CO-SU-FE-S-CI-290 | 35.5d |
|  | 5 | **Finishing Work** |  | 2026-10-07 | 2027-02-20 |  |  |
|  | 3 | **Electrical Work** |  | 2026-10-17 | 2027-02-16 |  |  |
| CO-SU-FE-EP1-EL-710 |  | Trench excavation to receive 2 nos 50mm diameter PVC Conduit | 4d | 2026-10-17 | 2026-10-21 | CO-SU-FE-EP1-AR-340 | 34.5d |
| CO-SU-FE-EP1-EL-770 |  | Trench excavation to receive 3 nos 50mm diameter PVC Conduit | 4d | 2026-10-17 | 2026-10-21 | CO-SU-FE-EP1-EL-710 SS | 34.5d |
| CO-SU-FE-EP1-EL-750 |  | Fixing of Control cable,CAT6A cable | 4d | 2026-10-21 | 2026-10-26 | CO-SU-FE-EP1-EL-710, CO-SU-FE-EP1-EL-770 | 34.5d |
| CO-SU-FE-EP1-EL-760 |  | Install 800mm x 800mm x 800mm height concrete handhole | 4d | 2026-10-21 | 2026-10-26 | CO-SU-FE-EP1-EL-710, CO-SU-FE-EP1-EL-770 | 34.5d |
| CO-SU-FE-EP1-EL-780 |  | Hot dipped galvanized cable conduits for CAT6A cable and Control Cables embedded to wall | 4d | 2026-10-21 | 2026-10-26 | CO-SU-FE-EP1-EL-710, CO-SU-FE-EP1-EL-770 | 34.5d |
| CO-SU-FE-EP1-EL-730 |  | Fixing Earthing Work (Earth Pit,Grounding rod,Tinned Copper wire) | 6d | 2026-10-26 | 2026-11-02 | CO-SU-FE-EP1-EL-750, CO-SU-FE-EP1-EL-760, CO-SU-FE-EP1-EL-780, CO-SU-FE-EP1-CI-340 | 34.5d |
| CO-SU-FE-EP1-EL-790 |  | Field Equipment Cabinet enclosed outdoor complete with precast concrete footing, | 4d | 2026-11-02 | 2026-11-07 | CO-SU-FE-EP1-EL-730 | 34.5d |
| CO-SU-FE-EP1-EL-800 |  | Fence Lightining 400V, 3PH, 60Hz lighting control panel (LCP-02) | 4d | 2026-11-02 | 2026-11-07 | CO-SU-FE-EP1-EL-730 | 34.5d |
| CO-SU-FE-EP1-EL-810 |  | Install of direct buried armored cable 4C-16mm2 ,10mm2 | 4d | 2026-11-07 | 2026-11-11 | CO-SU-FE-EP1-EL-790, CO-SU-FE-EP1-EL-800 | 36.5d |
| CO-SU-FE-EP1-EL-820 |  | Install 16mm2,10mm2 CU/PVC wire | 4d | 2026-11-07 | 2026-11-11 | CO-SU-FE-EP1-EL-790, CO-SU-FE-EP1-EL-800 | 36.5d |
| CO-SU-FE-EP1-EL-840 |  | FEC-CCTV ( 4C-16mm2 CU/XLPE/PVC direct buried armored cable,16mm2 CU/PVC wire | 4d | 2026-11-07 | 2026-11-11 | CO-SU-FE-EP1-EL-790, CO-SU-FE-EP1-EL-800 | 34.5d |
| CO-SU-FE-EP1-EL-700 |  | Junction Box for lighting fixture | 3d | 2026-12-13 | 2026-12-16 | CO-SU-FE-EP1-EL-810, CO-SU-FE-EP1-EL-820, CO-SU-FE-S-EL-550 | 14.35d |
| CO-SU-FE-EP1-EL-740 |  | IR Intrusion Detection System Quad Beams | 4d | 2027-01-17 | 2027-01-20 | CO-SU-FE-EP1-EL-810, CO-SU-FE-EP1-EL-820, CO-SU-FE-EP1-EL-840, CO-SU-FE-EP1-EL-700, CO-SU-FE-EP1-AR-370, CO-SU-FE-EP1-AR-380, CO-SU-FE-EP1-AR-360, CO-SU-FE-S-EL-590 | 18d |
| CO-SU-FE-EP1-EL-830 |  | Install of 38W, 230V, 1PH, 60Hz fence, led linear uplight lighting, IP66 | 4d | 2027-01-17 | 2027-01-20 | CO-SU-FE-EP1-EL-820, CO-SU-FE-EP1-EL-840, CO-SU-FE-EP1-EL-700, CO-SU-FE-EP1-AR-360, CO-SU-FE-EP1-AR-370, CO-SU-FE-EP1-AR-380, CO-SU-FE-S-EL-590 | 18d |
| CO-SU-FE-EP1-EL-720 |  | Install, fixings, testing and commissioning 80W LED | 4d | 2027-02-10 | 2027-02-16 | CO-SU-FE-EP1-EL-740, CO-SU-FE-EP1-EL-830, CO-SU-FE-S-EL-570 | 1d |
|  | 4 | **Architictural work** |  | 2026-10-07 | 2027-02-20 |  |  |
| CO-SU-FE-EP1-AR-340 |  | Install Brick Work For Northern Fence | 8d | 2026-10-07 | 2026-10-17 | CO-SU-FE-EP1-CI-330 | 34.5d |
| CO-SU-FE-EP1-AR-350 |  | External plastering to walls and columns | 8d | 2026-11-11 | 2026-11-21 | CO-SU-FE-EP1-AR-340, CO-SU-FE-EP1-CI-340, CO-SU-FE-EP1-EL-840, CO-SU-FE-EP1-EL-820, CO-SU-FE-EP1-EL-810 | 36.5d |
| CO-SU-FE-EP1-AR-360 |  | Install 50mm thick random cut stone cladding | 10d | 2026-11-21 | 2026-12-02 | CO-SU-FE-EP1-AR-350, CO-SU-FE-EP1-EL-840 | 36.5d |
| CO-SU-FE-EP1-AR-370 |  | Install 2 coats of weatherproof paint at walls | 10d | 2026-12-02 | 2026-12-14 | CO-SU-FE-EP1-AR-360 | 36.5d |
| CO-SU-FE-EP1-AR-380 |  | Install Stone coping 500mm,525mm | 10d | 2026-12-14 | 2026-12-26 | CO-SU-FE-EP1-AR-370 | 36.5d |
| CO-SU-FE-EP1-AR-390 |  | Install MODON Signage | 3d | 2027-02-15 | 2027-02-20 | CO-SU-FE-EP1-AR-380, CO-SU-FE-S-AR-330 | -0.15d |
|  | 6 | **Eastern Fence P2 ( E07:E13 )** |  | 2026-09-19 | 2027-02-23 |  |  |
|  | 1 | **Civil Work** |  | 2026-09-19 | 2026-12-01 |  |  |
| CO-SU-FE-EP2-CI-350 |  | Excavation Work For Northern Fence | 12d | 2026-09-19 | 2026-10-04 | CO-SU-FE-EP1-CI-320 | 33.5d |
| CO-SU-FE-EP2-CI-360 |  | Pouring for Plain Concrete Northern Fence | 12d | 2026-10-04 | 2026-10-18 | CO-SU-FE-EP2-CI-350, CO-SU-FE-S-CI-290 | 33.5d |
| CO-SU-FE-EP2-CI-370 |  | Pouring R.C Footing For Northern Fence | 12d | 2026-10-18 | 2026-11-01 | CO-SU-FE-EP2-CI-360 | 33.5d |
| CO-SU-FE-EP2-CI-380 |  | Pouring R.C Columns For Northern Fence | 10d | 2026-11-01 | 2026-11-12 | CO-SU-FE-EP2-CI-370, CO-SU-FE-EP1-CI-330 | 33.5d |
| CO-SU-FE-EP2-CI-390 |  | Pouring Beams For Northern Fence | 10d | 2026-11-19 | 2026-12-01 | CO-SU-FE-EP2-CI-380, CO-SU-FE-EP2-AR-400, CO-SU-FE-EP1-CI-340 | 43.5d |
|  | 5 | **Finishing Work** |  | 2026-11-12 | 2027-02-23 |  |  |
|  | 3 | **Electrical Work** |  | 2026-11-19 | 2027-02-21 |  |  |
| CO-SU-FE-EP2-EL-860 |  | Trench excavation to receive 2 nos 50mm diameter PVC Conduit | 4d | 2026-11-19 | 2026-11-24 | CO-SU-FE-EP2-AR-400 | 33.5d |
| CO-SU-FE-EP2-EL-920 |  | Trench excavation to receive 3 nos 50mm diameter PVC Conduit | 4d | 2026-11-19 | 2026-11-24 | CO-SU-FE-EP2-EL-860 SS | 33.5d |
| CO-SU-FE-EP2-EL-910 |  | Install 800mm x 800mm x 800mm height concrete handhole | 3d | 2026-11-24 | 2026-11-28 | CO-SU-FE-EP2-EL-860, CO-SU-FE-EP2-EL-920 | 33.5d |
| CO-SU-FE-EP2-EL-930 |  | Hot dipped galvanized cable conduits for CAT6A cable and Control Cables embedded to wall | 3d | 2026-11-24 | 2026-11-28 | CO-SU-FE-EP2-EL-860, CO-SU-FE-EP2-EL-920 | 33.5d |
| CO-SU-FE-EP2-EL-900 |  | Fixing of Control cable,CAT6A cable | 3d | 2026-12-16 | 2026-12-20 | CO-SU-FE-EP2-EL-860, CO-SU-FE-EP2-EL-920, CO-SU-FE-EP1-EL-700 | 14.35d |
| CO-SU-FE-EP2-EL-880 |  | Fixing Earthing Work (Earth Pit,Grounding rod,Tinned Copper wire) | 3d | 2026-12-20 | 2026-12-23 | CO-SU-FE-EP2-EL-900, CO-SU-FE-EP2-EL-910, CO-SU-FE-EP2-EL-930 | 14.35d |
| CO-SU-FE-EP2-EL-940 |  | Field Equipment Cabinet enclosed outdoor complete with precast concrete footing, | 4d | 2026-12-23 | 2026-12-28 | CO-SU-FE-EP2-EL-880 | 14.35d |
| CO-SU-FE-EP2-EL-950 |  | Fence Lightining 400V, 3PH, 60Hz lighting control panel (LCP-02) | 4d | 2026-12-23 | 2026-12-28 | CO-SU-FE-EP2-EL-880 | 14.35d |
| CO-SU-FE-EP2-EL-960 |  | Install of direct buried armored cable 4C-16mm2 ,10mm2 | 3d | 2026-12-28 | 2026-12-31 | CO-SU-FE-EP2-EL-940, CO-SU-FE-EP2-EL-950 | 14.35d |
| CO-SU-FE-EP2-EL-970 |  | Install 16mm2,10mm2 CU/PVC wire | 3d | 2026-12-28 | 2026-12-31 | CO-SU-FE-EP2-EL-940, CO-SU-FE-EP2-EL-950 | 14.35d |
| CO-SU-FE-EP2-EL-990 |  | FEC-CCTV ( 4C-16mm2 CU/XLPE/PVC direct buried armored cable,16mm2 CU/PVC wire | 6d | 2026-12-28 | 2027-01-04 | CO-SU-FE-EP2-EL-940, CO-SU-FE-EP2-EL-950 | 14.35d |
| CO-SU-FE-EP2-EL-850 |  | Junction Box for lighting fixture | 3d | 2026-12-31 | 2027-01-04 | CO-SU-FE-EP2-EL-960, CO-SU-FE-EP2-EL-970 | 14.35d |
| CO-SU-FE-EP2-EL-890 |  | IR Intrusion Detection System Quad Beams | 3d | 2027-01-26 | 2027-01-30 | CO-SU-FE-EP2-EL-960, CO-SU-FE-EP2-EL-970, CO-SU-FE-EP2-EL-990, CO-SU-FE-EP2-EL-850, CO-SU-FE-EP2-AR-430, CO-SU-FE-EP2-AR-440, CO-SU-FE-EP2-AR-420, CO-SU-FE-EP1-EL-740 | 14.35d |
| CO-SU-FE-EP2-EL-980 |  | Install of 38W, 230V, 1PH, 60Hz fence, led linear uplight lighting, IP66 | 3d | 2027-01-26 | 2027-01-30 | CO-SU-FE-EP2-EL-970, CO-SU-FE-EP2-EL-990, CO-SU-FE-EP2-EL-850, CO-SU-FE-EP2-AR-420, CO-SU-FE-EP2-AR-430, CO-SU-FE-EP2-AR-440, CO-SU-FE-EP1-EL-740 | 14.35d |
| CO-SU-FE-EP2-EL-870 |  | Install, fixings, testing and commissioning 80W LED | 3d | 2027-02-17 | 2027-02-21 | CO-SU-FE-EP2-EL-890, CO-SU-FE-EP2-EL-980, CO-SU-FE-EP1-EL-720 | 1d |

| ID | WBS | Task | Duration | Start | Finish | Predecessors | Total float |
| --- | --- | --- | --- | --- | --- | --- | --- |
|  | 4 | **Architictural work** |  | 2026-11-12 | 2027-02-23 |  |  |
| CO-SU-FE-EP2-AR-400 |  | Install Brick Work For Northern Fence | 6d | 2026-11-12 | 2026-11-19 | CO-SU-FE-EP2-CI-380, CO-SU-FE-EP1-EL-840 | 33.5d |
| CO-SU-FE-EP2-AR-410 |  | External plastering to walls and columns | 5d | 2027-01-04 | 2027-01-10 | CO-SU-FE-EP2-AR-400, CO-SU-FE-EP2-CI-390, CO-SU-FE-EP2-EL-990, CO-SU-FE-EP2-EL-970, CO-SU-FE-EP2-EL-960, CO-SU-FE-EP2-EL-850 | 14.35d |
| CO-SU-FE-EP2-AR-420 |  | Install 50mm thick random cut stone cladding | 5d | 2027-01-10 | 2027-01-16 | CO-SU-FE-EP2-AR-410 | 14.35d |
| CO-SU-FE-EP2-AR-430 |  | Install 2 coats of weatherproof paint at walls | 5d | 2027-01-16 | 2027-01-21 | CO-SU-FE-EP2-AR-420 | 14.35d |
| CO-SU-FE-EP2-AR-440 |  | Install Stone coping 500mm,525mm | 4d | 2027-01-21 | 2027-01-26 | CO-SU-FE-EP2-AR-430, MS-CF-SW | 14.35d |
| CO-SU-FE-EP2-AR-450 |  | Install MODON Signage | 2d | 2027-02-20 | 2027-02-23 | CO-SU-FE-EP2-AR-440, CO-SU-FE-EP1-AR-390 | -0.15d |
|  | TC | **Testing and Comissioning** |  | 2027-01-04 | 2027-02-18 |  |  |
|  | INF | **Infrastructure Networks** |  | 2027-01-06 | 2027-02-18 |  |  |
|  | PW1 | **Irrigation Network** |  | 2027-01-27 | 2027-02-02 |  |  |
| T/C-IR |  | Testing and Commissioning of Irrigation Network | 5d | 2027-01-27 | 2027-02-02 | T/C-PW SS, CO-IR-TF-160, CO-TSE-TF-170, CO-LS-PL-180, T/C-SW | 1.54d |
|  | PW11 | **TSE Network** |  | 2027-01-17 | 2027-02-02 |  |  |
| T/C-TSE-10 |  | Testing and Commissioning of TSE Network | 15d | 2027-01-17 | 2027-02-02 | CO-TSE-TF-170, T/C-SD, CO-UB-IRT-250 | 9d |
|  | PW | **Potable Water Network** |  | 2027-01-27 | 2027-02-03 |  |  |
| T/C-PW |  | Testing and Commissioning of Potable Water Network | 6d | 2027-01-27 | 2027-02-03 | CO-PW-TF-110, CO-PW-TF-100, CO-PW-TF-120, CO-UB-PS-390, CO-UB-LS-470, CO-UB-LS-480, MS-CF-MV | 1.54d |
|  | SW | **Sewage Network** |  | 2027-01-17 | 2027-01-19 |  |  |
| T/C-SW |  | Testing and Commissioning of Sewage Network | 3d | 2027-01-17 | 2027-01-19 | T/C-SD, CO-SW-TF-100, CO-SW-TF-210, MS-CF-SW, CO-SW-TF-130, CO-SW-TF-110 | 0d |
|  | SD | **Storm Drainage Network** |  | 2027-01-06 | 2027-01-16 |  |  |
| T/C-SD |  | Testing and Commissioning of Storm Drainage Network | 9d | 2027-01-06 | 2027-01-16 | CO-SD-ML-TF-100, CO-SD-CB-TF-160, CO-SD-MH-TF-210, CO-SD-PO-110-P2, MS-CF-SD, CO-LS-PL-180, CO-SD-CB-TF-130, CO-SD-CB-TF-110, CO-SD-MH-TF-120 | 0d |
|  | SL | **Street Lighting Network** |  | 2027-02-04 | 2027-02-11 |  |  |
| T/C-SL |  | Testing and Commissioning of Street Lighting Network | 6d | 2027-02-04 | 2027-02-11 | T/C-IR, CO-SL-TF-220, CO-SL-TF-230, CO-SL-TF-200, CO-SL-TF-380, CO-SL-LP-330, MS-CF-SL, T/C-DPO, T/C-SW | 0d |
|  | TE | **Telecom Network** |  | 2027-01-20 | 2027-01-23 |  |  |
| T/C-TE |  | Testing and Commissioning of Telecom Network | 3d | 2027-01-20 | 2027-01-23 | CO-TE-CTV-TF-110, CO-TE-CTV-TF-120, CO-TE-CTV-TF-130, CO-TE-CTV-TF-140, MS-CF-TE, CO-SL-ES-230, CO-TE-DW-130, T/C-SD, T/C-SW | 0d |
|  | MV | **Medium Voltage Network** |  | 2027-01-20 | 2027-02-04 |  |  |
| T/C-MV |  | Testing and Commissioning of Medium Voltage Network | 14d | 2027-01-20 | 2027-02-04 | T/C-TE SS, CO-MV-TF-220, MS-CF-MV | 0d |
|  | RD | **Road Works** |  | 2027-02-13 | 2027-02-18 |  |  |
| T/C-RD |  | Testing and Commissioning of Road Works | 4d | 2027-02-13 | 2027-02-18 | T/C-MV, T/C-TE, T/C-SD, CO-RD-B-160, CO-RD-PV-160, CO-RD-PV-170, CO-RD-F-RM-180, CO-RD-F-TS-120, CO-RD-B-130, CO-RD-B-140, CO-RD-PV-140, CO-RD-PV-150, CO-RD-F-RM-170, CO-RD-F-TS-110, CO-RD-B-110, CO-RD-B-120, CO-RD-PV-120, CO-RD-PV-130, CO-RD-F-RM-160 FF, CO-RD-F-TS-100 FF, MS-CF-PW, MS-CF-IR, MS-CF-TSE | 0d |
|  | 1 | **Utility Buildings** |  | 2027-01-04 | 2027-02-03 |  |  |
| T/C-DPO |  | Testing and Commissioning of Storm Drainage Ponds | 0d | 2027-01-04 | 2027-01-04 | CO-SD-PO-110-P1, CO-SD-PO-110-P2 | 26d |
| T/C-CTV |  | Testing and Commissioning of Guard Room and Fence | 0d | 2027-01-21 | 2027-01-21 | CO-UB-CR-360, A1100 | 25d |
| T/C-SPS |  | Testing and Commissioning of Sewage Pump Stations& soft scape and planting work | 0d | 2027-02-03 | 2027-02-03 | T/C-TSE-10, CO-UB-PS-390, CO-UB-PS-380, CO-UB-PS-360, CO-UB-PS-350, CO-UB-PS-340, CO-UB-PS-370, CO-UB-PS-330, CO-UB-PS-310, CO-UB-PS-290, CO-UB-PS-300, CO-UB-PS-320, CO-UB-PS-280, CO-UB-PS-270, CO-UB-PS-260, CO-UB-PS-250, CO-UB-PS-240 | 13d |
|  | 1 | **Handing over and close out** |  | 2027-01-04 | 2027-02-22 |  |  |
|  | 2 | **As-Built** |  | 2027-01-04 | 2027-02-22 |  |  |
| HO-130 |  | Submission As-Built Drawing For Pond | 14d | 2027-01-04 | 2027-01-19 | T/C-DPO, CO-SD-PO-110-P2, CO-SD-PO-110-P1 | 26d |
| HO-100 |  | Submission As-Built Drawing For Sewage Network | 14d | 2027-01-20 | 2027-02-04 | T/C-SW, CO-SW-TF-210, CO-SW-TF-130, CO-SW-TF-110, CO-SW-TF-100 | 12d |
| HO-160 |  | Submission As-Built Drawing For Telecom Network | 12d | 2027-01-24 | 2027-02-06 | T/C-TE, CO-TE-CTV-TF-110, CO-TE-CTV-TF-120, CO-TE-CTV-TF-130, CO-TE-CTV-TF-140 | 11d |
| HO-180 |  | Submission As-Built Drawing For Irrigation Network | 12d | 2027-02-02 | 2027-02-18 | T/C-IR, CO-IR-TF-160 | 2.54d |
| HO-210 |  | Submission As-Built Drawing For Pump station | 1d | 2027-02-03 | 2027-02-03 | T/C-SPS, CO-UB-PS-390, CO-UB-PS-380, CO-UB-PS-360, CO-UB-PS-350, CO-UB-PS-370, CO-UB-PS-330, CO-UB-PS-310, CO-UB-PS-300, CO-UB-PS-290, CO-UB-PS-320, CO-UB-PS-280 | 13d |
| HO-190 |  | As-Built Drawing For Potable Water Network | 12d | 2027-02-03 | 2027-02-21 | T/C-PW, CO-PW-TF-100, CO-PW-TF-110, CO-PW-TF-120 | 1.54d |
| HO-170 |  | Submission As-Built Drawing For Medium Voltage Network | 12d | 2027-02-06 | 2027-02-22 | T/C-MV, CO-MV-TF-220 | 0d |
| HO-150 |  | Submission As-Built Drawing For Street Lighting Network | 7d | 2027-02-13 | 2027-02-22 | T/C-SL, CO-SL-LP-330, CO-SL-TF-200, CO-SL-TF-220, CO-SL-TF-230, CO-SL-TF-380, CO-SL-ES-220, CO-SL-ES-230 | 0d |
| HO-140 |  | Submission As-Built Drawing For Roads Network | 3d | 2027-02-18 | 2027-02-22 | T/C-RD, CO-RD-B-150, CO-RD-B-160, CO-RD-PV-160, CO-RD-PV-170, CO-RD-F-RM-180, CO-RD-F-TS-120, CO-RD-B-130, CO-RD-B-140, CO-RD-PV-140, CO-RD-PV-150, CO-RD-F-RM-170, CO-RD-F-TS-110, CO-RD-B-110, CO-RD-B-120, CO-RD-PV-120, CO-RD-PV-130, CO-RD-F-RM-160 SS, CO-RD-F-TS-100 SS | 0d |
|  | 1 | **De-Mobilization Works** |  | 2027-02-13 | 2027-02-20 |  |  |
| HO-230 |  | Remove Temporary Car Shades | 5d | 2027-02-13 | 2027-02-20 | T/C-RD SS, T/C-MV, T/C-TE, T/C-SL, T/C-SD, T/C-SW, T/C-PW, T/C-TSE-10, T/C-IR | 2d |
|  | 3 | **Handing Over** |  | 2027-02-18 | 2027-02-22 |  |  |
| HO-250 |  | Review B.O.Q Qty. to ensure compliance with the actual status | 3d | 2027-02-18 | 2027-02-22 | T/C-RD, T/C-RD FF, T/C-MV, T/C-TE, T/C-SL, T/C-SD, T/C-SW, T/C-PW, T/C-TSE-10, T/C-IR | 0d |

## Version 2 (data date 2026-09-15, saved 2026-09-14, file MOD3-3147-BL0-R0-6UPDATE 15-09-2026.xer)

Note of the change: Restructure repo: reference, baseline, weekly folders by data date, notes, templates, README

Last finish 2027-02-23 → 2027-05-30 (+96d). Complete tasks 117 → 239.

Changed:

| ID | Task | Start | Finish | Complete | Total float |
| --- | --- | --- | --- | --- | --- |
| MS | **Key Milestones** |  | 2027-02-23 → 2027-05-30 (+96d) |  |  |
| CM | **Contractual Milestones** |  | 2027-02-23 → 2027-05-30 (+96d) |  |  |
| MS-CF-ENG | Completion of Submitting and Approval of Shopdrwing and Material | 2026-07-13 → 2026-09-24 (+73d) | 2026-07-13 → 2026-09-24 (+73d) |  | 0d → -53d |
| MS-CF-IR | Completion of Construction Works for Irrigation Network | 2027-01-02 → 2027-04-01 (+89d) | 2027-01-02 → 2027-04-01 (+89d) |  | 34.5d → -33.5d |
| MS-CF-SD | Completion of Construction Works for Storm Drainage Network | 2027-01-03 → 2027-04-03 (+90d) | 2027-01-03 → 2027-04-03 (+90d) |  | 2d → -65.2d |
| MS-CF-SW | Completion of Construction Works for Sewage Network | 2027-01-13 → 2027-04-03 (+80d) | 2027-01-13 → 2027-04-03 (+80d) |  | 2d → -57d |
| MS-CF-MV | Completion of Construction Works for Medium Voltage Network | 2027-01-10 → 2027-04-10 (+90d) | 2027-01-10 → 2027-04-10 (+90d) |  | 8.5d → -59.5d |
| MS-CF-TSE | Completion of Construction Works for Treated Sewage Effluent Network | 2027-01-14 → 2027-04-14 (+90d) | 2027-01-14 → 2027-04-14 (+90d) |  | 23d → -45d |
| MS-CF-TE | Completion of Construction Works for Telecom Network | 2027-01-19 → 2027-04-19 (+90d) | 2027-01-19 → 2027-04-19 (+90d) |  | 0.5d → -67.5d |
| MS-CF-SL | Completion of Construction Works for Street Lighting Network | 2027-01-26 → 2027-04-26 (+90d) | 2027-01-26 → 2027-04-26 (+90d) |  | 7.5d → -60.5d |
| MS-CF-PW | Completion of Construction Works for Potable Water Network | 2027-01-26 → 2027-04-26 (+90d) | 2027-01-26 → 2027-04-26 (+90d) |  | 13d → -55d |
| MS-CF-RD | Completion of Construction Works for Road Works | 2027-02-14 → 2027-05-12 (+87d) | 2027-02-14 → 2027-05-12 (+87d) |  | 6d → -62d |
| MS-CF-PF | Project Completion Date | 2027-02-23 → 2027-05-30 (+96d) | 2027-02-23 → 2027-05-30 (+96d) |  | -0.15d → -71.2d |
| ENG | **Engineering Works** |  | 2026-07-13 → 2026-09-24 (+73d) |  |  |
| ENG-SH-RD-A-110 | Approval Shop Drawings for Roads Typical Sections and Pavement Details | 2026-06-23 A | 2026-07-04 A | 0% → 100% | 7.5d → none |
| ENG-SH-HS-S-100 | Submission Shop Drawings for Hardscaping (Curbstone& Interlock) Works | 2026-06-23 A | 2026-06-27 A | 0% → 100% | 0d → none |
| ENG-SH-HS-A-110 | Approval Shop Drawings for Hardscaping (Curbstone& Interlock) Works | 2026-06-27 A | 2026-07-01 A | 0% → 100% | 0d → none |
| ENG-SH-TSB-S-100 | Submission Shop Drawings for Traffic Signs Boards | 2026-06-27 A | 2026-07-04 A | 0% → 100% | 7d → none |
| ENG-SH-MRK-S-110 | Submission Shop Drawings for Pavement Markings | 2026-07-05 A | 2026-07-12 A | 0% → 100% | 0d → none |
| ENG-SH-TSB-A-100 | Approval Shop Drawings for Traffic Signs Boards | 2026-06-27 A | 2026-07-05 A | 0% → 100% | 7d → none |
| ENG-SH-MRK-A-110 | Approval Shop Drawings for Pavement Markings | 2026-07-05 A | 2026-07-13 A | 0% → 100% | 0d → none |
| ENG-SH-SW-ML-A-110 | Approval Shop Drawings for Main Line and Manholes of Sewage Network | 2026-06-23 A | 2026-06-30 A | 0% → 100% | 5.5d → none |
| ENG-SH-SD-CB-S-100_R | Submission Shop Drawings for Secondary Line and Catch Basin of Storm Drainage Network(Remaining) | 2026-06-23 A | 2026-06-28 A | 0% → 100% | 0.75d → none |
| ENG-SH-SD-CB-A-110 | Approval Shop Drawings for Secondary Line and Catch Basin of Storm Drainage Network | 2026-06-28 A | 2026-07-06 A | 0% → 100% | 6d → none |
| ENG-SH-PW-ML-A-110 | Approval Shop Drawings for Main Line and Valve Chambers of Potable Water Network | 2026-06-23 A | 2026-06-30 A | 0% → 100% | 8.5d → none |
| ENG-SH-PW-FH-S-100 | Submission Shop Drawings for Fire Hydrant Network | 2026-06-23 A | 2026-06-28 A | 0% → 100% | 5.5d → none |
| ENG-SH-PW-FH-A-110 | Approval Shop Drawings for Fire Hydrant Network | 2026-06-29 A | 2026-07-06 A | 0% → 100% | 5.5d → none |
| ENG-SH-IR-ML-S-100 | Submission Shop Drawings for Main Line and Valves & Bulbblers and Sprinklers of Irrigation Network | 2026-06-23 A | 2026-06-29 A | 0% → 100% | 4.5d → none |
| ENG-SH-IR-ML-A-110 | Approval Shop Drawings for Main Line and Valves & Bulbblers and Sprinklers of Irrigation Network | 2026-06-30 A | 2026-07-07 A | 0% → 100% | 4.5d → none |
| ENG-SH-TSE-ML-S-110 | Submission Shop Drawings for Main Line Treated Sewage Effluent Network | 2026-06-23 A | 2026-06-29 A | 0% → 100% | 4.5d → none |
| ENG-SH-TSE-ML-A-120 | Approval Shop Drawings for Main Line Treated Sewage Effluent Network | 2026-06-30 A | 2026-07-07 A | 0% → 100% | 4.5d → none |
| ENG-SH-MV-A-110 | Approval Shop Drawings for Medium Voltage Network | 2026-06-30 A | 2026-07-07 A | 0% → 100% | 4.5d → none |
| ENG-SH-LV-S-110 | Submission Shop Drawings for Low Voltage Network | 2026-06-23 A | 2026-06-29 A | 0% → 100% | 4.5d → none |
| ENG-SH-LV-A-120 | Approval Shop Drawings for Low Voltage Network | 2026-06-30 A | 2026-07-07 A | 0% → 100% | 4.5d → none |
| ENG-SH-SL-S-100_R | Submission Shop Drawings for Street Lighting Network(Remaining) | 2026-06-23 A | 2026-06-29 A | 0% → 100% | 8.5d → none |
| ENG-SH-SL-A-110 | Approval Shop Drawings for Street Lighting Network | 2026-06-25 A | 2026-07-02 A | 0% → 100% | 8.5d → none |
| ENG-SH-CTV-S-100 | Submission Shop Drawings for CCTV Complete System | 2026-06-30 A | 2026-07-06 A | 0% → 100% | 4.5d → none |
| ENG-SH-MSN-S-110 | Submission Shop Drawings for MSN System | 2026-06-30 A | 2026-07-06 A | 0% → 100% | 5.5d → none |
| ENG-SH-TE-S-100 | Submission Shop Drawings for Telecom Network | 2026-06-30 A | 2026-07-06 A | 0% → 100% | 4.5d → none |
| ENG-SH-MSN-A-120 | Approval Shop Drawings for MSN System | 2026-06-29 A | 2026-07-06 A | 0% → 100% | 5.5d → none |
| ENG-SH-CTV-A-110 | Approval Shop Drawings for CCTV Complete System | 2026-06-30 A | 2026-07-07 A | 0% → 100% | 4.5d → none |
| ENG-SH-TE-A-110 | Approval Shop Drawings for Telecom Network | 2026-06-30 A | 2026-07-07 A | 0% → 100% | 4.5d → none |
| ENG-SH-SPS-S-150_R | Submission Shop Drawings Package for Sewage Pump Stations(Remaining) | 2026-06-24 A | 2026-06-30 A | 0% → 100% | 8.5d → none |
| ENG-SH-SPS-A-160 | Approval Shop Drawings Package for Sewage Pump Stations | 2026-06-27 A | 2026-07-02 A | 0% → 100% | 8.5d → none |
| ENG-SH-LS-S-160_R | Submission Shop Drawings Package for Lift Stations(Remaining) | 2026-06-24 A | 2026-06-30 A | 0% → 100% | 5.5d → none |
| ENG-SH-LS-A-170 | Approval Shop Drawings Package for Lift Stations | 2026-06-27 A | 2026-07-02 A | 0% → 100% | 8.5d → none |
| ENG-SH-DPO-S-110 | Submission Shop Drawings Package for Storm Drainage Ponds | 2026-06-28 A | 2026-07-05 A | 0% → 100% | 6d → none |
| ENG-SH-DPO-A-120 | Approval Shop Drawings Package for Storm Drainage Ponds | 2026-06-29 A | 2026-07-06 A | 0% → 100% | 6d → none |
| ENG-SH-ST-S-170 | Submission Shop Drawings Package for Storage Tank TSE | 2026-06-30 A | 2026-07-06 A | 0% → 100% | 4.5d → none |
| ENG-SH-ST-A-180 | Approval Shop Drawings Package for Storage Tank TSE | 2026-07-01 A | 2026-07-07 A | 0% → 100% | 4.5d → none |
| ENG-SH-GR-A-190 | Approval Shop Drawings Package for Gaurd Room | 2026-06-23 A | 2026-06-29 A | 0% → 100% | 11.5d → none |
| ENG-SH-GR-S-180 | Submission Shop Drawings Package for Gaurd Room | 2026-06-23 A | 2026-06-29 A | 0% → 100% | 11.5d → none |
| ENG-SH-GR-S-190_R | Submission Shop Drawings Package for Fence(Remaining) | 2026-06-23 A | 2026-06-27 A | 0% → 100% | 13.3d → none |
| ENG-SH-GR-A-200_R | Approval Shop Drawings Package for Fence(Remaining) | 2026-06-23 A | 2026-06-28 A | 0% → 100% | 13.3d → none |
| SD11 | **Material Submittals and Approvals** |  | 2026-07-12 → 2026-09-24 (+74d) |  |  |
| 2 | **Short Lead Time Items** |  | 2026-07-12 → 2026-09-22 (+72d) |  |  |
| ENG-MT-IR-ML-S-140 | Material Submittal for Softscape and Planting Works | 2026-06-27 A | 2026-07-04 A | 0% → 100% | 1d → none |
| ENG-MT-IR-ML-S-150 | Material Submittal for Site Furnishings (Seating Bench,Stone Boulders and Gravel) | 2026-06-27 A | 2026-07-04 A | 0% → 100% | 2d → none |
| ENG-MT-IR-ML-A-140 | Material Approval for Softscape and Planting Works | 2026-07-04 A | 2026-07-12 A | 0% → 100% | 1d → none |
| ENG-MT-IR-ML-A-150 | Material Approval for Site Furnishings (Seating Bench,Stone Boulders and Gravel) | 2026-07-04 A | 2026-07-11 A | 0% → 100% | 2d → none |
| ENG-MT-SW-TF-S-100 | Material Submittal for Manhole Covers of Sewage Network | 2026-06-23 A | 2026-06-29 A | 0% → 100% | 2d → none |
| ENG-MT-SW-TF-A-100 | Material Approval for Manhole Covers of Sewage Network | 2026-06-30 A | 2026-07-07 A | 0% → 100% | 2d → none |
| ENG-MT-SD-TF-S-100 | Material Submittal for Manhole Covers of Storm Drainage Network | 2026-06-23 A | 2026-06-29 A | 0% → 100% | 4.5d → none |
| ENG-MT-SD-TF-S-110 | Material Submittal for Catch Basin Covers of Storm Drainage Network | 2026-06-23 A | 2026-06-29 A | 0% → 100% | 4.5d → none |
| ENG-MT-SD-TF-A-100 | Material Approval for Manhole Covers of Storm Drainage Network | 2026-06-30 A | 2026-07-07 A | 0% → 100% | 4.5d → none |
| ENG-MT-SD-TF-A-110 | Material Approval for Catch Basin Covers of Storm Drainage Network | 2026-06-30 A | 2026-07-07 A | 0% → 100% | 4.5d → none |
| ENG-MT-PW-ML-S-110 | Material Submittal for Main Line Valves of Potable Water Network | 2026-06-23 A | 2026-06-29 A | 0% → 100% | 4.5d → none |
| ENG-MT-PW-FH-S-100 | Material Submittal for Fire Hydrant of Potable Water Network | 2026-06-23 A | 2026-06-29 A | 0% → 100% | 4.5d → none |
| ENG-MT-PW-TF-S-100 | Material Submittal for Surface Box of Potable Water Network | 2026-06-23 A | 2026-06-29 A | 0% → 100% | 4.5d → none |
| ENG-MT-PW-ML-A-110 | Material Approval for Valves of Potable Water Network | 2026-06-30 A | 2026-07-07 A | 0% → 100% | 4.5d → none |

| ID | Task | Start | Finish | Complete | Total float | Predecessors | Other |
| --- | --- | --- | --- | --- | --- | --- | --- |
| ENG-MT-PW-FH-A-100 | Material Approval for Fire Hydrants of Potable Water Network | 2026-06-30 A | 2026-07-07 A | 0% → 100% | 4.5d → none |  |  |
| ENG-MT-PW-TF-A-100 | Material Approval for Surface Box of Potable Water Network | 2026-06-30 A | 2026-07-07 A | 0% → 100% | 4.5d → none |  |  |
| ENG-MT-IR-ML-A-110 | Material Approval for Valves of Irrigation Network |  |  |  |  |  | resources Gate valves Dia 50 mm; Gate valves Dia 100 mm; Gate valves Dia 150 mm; Gate valves Dia 250 mm; Air valves with Dia 50 mm; Washout valve Dia 100 mm; 3-outlet fire hydrant (2 x 2.5 inch and 1 x 4.5 inch) in the form of a separate dry vacuum cylinder, complete according to drawings.; Wash out chamber (2500x 2500mm); Air valve chamber (1000x 1000 mm); Flow meter chamber (1500x 2500 mm); Flow meter dia 100 mm; Gate valve 50 mm PN16; Direct Burried Gate valve 40 mm PN16; Pressure compensating bubblers 110 Lit/Hr; Flushing Bronze gate valve dia 1.5" inside PVC box; Air release valve 1.5" inside PVC box; Extra flexible pressure compensating on surface inline dripline`s, O.D. is 16.1 mm; Electrical Solenoid Valve ( 1.5") inside PVC box; Electrical Solenoid Valve ( 2") inside PVC box; Quick coupling valve 1" inside a round valve box 10" size with a manual gate valve, hose swivel and key with all accessories; Advanced Irrigation controller subject to client approval, can connect with Centarl Control system; Decoder cables 12 AWG between valves and controllers, The cables shall be pulled through 32 UPVC conduit; Preparing the irrigation program for the entire system and providing technical services for monitoring and controlling the central irrigation systems → Gate valves Dia 50 mm; Gate valves Dia 100 mm; Gate valves Dia 150 mm; Gate valves Dia 250 mm; Air valves with Dia 50 mm; Washout valve Dia 100 mm; 3-outlet fire hydrant (2 x 2.5 inch and 1 x 4.5 inch) in the form of a separate dry vacuum cylinder, complete according to drawings.; Wash out chamber (2500x 2500mm); Air valve chamber (1000x 1000 mm); Flow meter chamber (1500x 2500 mm); Flow meter dia 100 mm; Gate valve 50 mm PN16; Direct Burried Gate valve 40 mm PN16; Pressure–compensating bubblers 110 Lit/Hr; Flushing Bronze gate valve dia 1.5" inside PVC box; Air release valve 1.5" inside PVC box; Extra flexible pressure compensating on surface inline dripline`s, O.D. is 16.1 mm; Electrical Solenoid Valve ( 1.5") inside PVC box; Electrical Solenoid Valve ( 2") inside PVC box; Quick coupling valve 1" inside a round valve box 10" size with a manual gate valve, hose swivel and key with all accessories; Advanced Irrigation controller subject to client approval, can connect with Centarl Control system; Decoder cables 12 AWG between valves and controllers, The cables shall be pulled through 32Ø UPVC conduit; Preparing the irrigation program for the entire system and providing technical services for monitoring and controlling the central irrigation systems |
| ENG-MT-MV-TF-S-100 | Material Submittal for Termination Kits of Medium Voltage Network | 2026-06-23 A | 2026-06-29 A | 0% → 100% | 4.5d → none |  |  |
| ENG-MT-MV-TF-A-100 | Material Approval for Termination and Joints Kits of Medium Voltage Network | 2026-06-30 A | 2026-07-07 A | 0% → 100% | 4.5d → none |  |  |
| ENG-MT-SL-TF-S-100 | Material Submittal for Fuse Boxes of Street Lighting Network | 2026-06-23 A | 2026-06-29 A | 0% → 100% | 0d → none |  |  |
| ENG-MT-SL-TF-S-110 | Material Submittal for Cable Lugs of Street Lighting Network | 2026-06-23 A | 2026-06-29 A | 0% → 100% | 11.5d → none |  |  |
| ENG-MT-SL-ES-S-100 | Material Submittal for Lighting Earthing of Street Lighting Network | 2026-06-30 A | 2026-07-06 A | 0% → 100% | 11.5d → none |  |  |
| ENG-MT-SL-ES-A-100 | Material Approval for Lighting Earthing of Street Lighting Network | 2026-06-30 A | 2026-06-30 A | 0% → 100% | 11.5d → none |  |  |
| ENG-MT-SL-TF-A-100 | Material Approval for Fuse Boxes of Street Lighting Network | 2026-06-30 A | 2026-07-07 A | 0% → 100% | 0d → none |  |  |
| ENG-MT-SL-TF-A-110 | Material Approval for Cable Lugs of Street Lighting Network | 2026-06-30 A | 2026-07-07 A | 0% → 100% | 11.5d → none |  |  |
| 1 | **Superstructure Works** |  | 2026-06-30 → 2026-09-22 (+84d) |  |  |  |  |
| SL111 | **Storage Tank (TSE)** |  | 2026-06-30 → 2026-09-22 (+84d) |  |  |  |  |
| 1 | **Submission of Material** | 2026-06-23 → 2026-09-15 (+84d) | 2026-06-30 → 2026-09-22 (+84d) |  |  |  |  |
| ENG-MT-TSE-CV-S-130 | Material Submittal for Civil Works for Storage Tank (TSE) | 2026-06-23 → 2026-09-15 (+84d) | 2026-06-30 → 2026-09-22 (+84d) |  | 13.25d → -58.75d |  |  |
| ENG-MT-GR-CV-A-130 | Material Approval for Civil Works for Gaurd Room |  |  |  |  |  | resources Slab on Grade; Slabs; Lightweight Concrete Roof insulation as per Architect's specification; Insulated brickwork. with expanded polystyrene 200mm thick; vertical straight wall complete with accessories .; Common brickwork. 150mm thick; vertical straight wall complete with accessories.; 2 perpendicular layers of cold bitumen coats; 2 layer of 4mm HDPE membrane, 2 perpendicular layers cold bitumen coats; 1 layer EPOXY Paint 300 micron; Membrane fully bonded to prime deck and upstand; Geotextile Filter membrane uv resistance; 85mm thick thermal insulation; 1.5mm thick epdm waterproofing membrane; CW01 - 4500 mm width x 3700 mm height; CW02 - 4500 mm width x 3700 mm height; CW03 - 4500 mm width x 3700 mm height; CW04 - 4500 mm width x 3700 mm height; CW05 - 7500 mm width x 4250 mm height; CW06 - 7500 mm width x 4250 mm height; W01 - 1000 mm width x 2000 mm height; W02 - 2000 mm width x 2000 mm height; W03 - 2000 mm width x 1000 mm height; D2 - 900 mm x 2200 mm height temper door; D3 - 950 mm x 2000 mm height temper door; Supply and install 300*300mm terrazzo tiles with 150mm high skirting at perimeter with approv; Supply and install 300*300mm glazed ceramic wall tiles on cement mortar and including rough; Supply and install internal plastering and 2 coats of acrylic paint at walls includin; Supply and install 300*300mm glazed ceramic wall tiles on cement mortar and including rough and smooth p; Supply and install 600*600mm porcelain tiles with approved quality on 30 mm mortar inclu; Supply and install 12.5mm thk, gypsum board suspended ceiling including s; Office Chairs; Office Tables; Guard Stand; Magnetic Control Access barrier, Automatic Vehicular Barriers to be installed on ground with magnetic access; Supply and install Hand Wash Basin with Water Tap, angle valve, P-trap connected to 50mm diameter s; Supply and install paper towel dispenser, surface mounted, satin finish stainless steel as per approv; Supply and install mirror, size 460*910mm as per approved sample including frames, backing and all accessories to complete.; Supply and install towel ring , surface mounted, satin finish stainless steel as per approved sample including accessories.; Kitchen sink with single bowl with hot/cold water mixer.; Supply and install Base mounted flush tank water Western water closet system with lid connected to 110mm soil pipe; Gate Valves; Slow Closing Valve; 1 meter length 10mm diameter Flexible Hose with insulated handle complete with fork support, index push, vacuum breaker; 50mm diameter; 75mm diameter; 80mm diameter; 100mm diameter; 110mm diameter; 13mm diameter; 15mm diameter; 20mm diameter; 25mm diameter; 32mm diameter; 40mm diameter; Isolation Valve Size 20; Isolation Valve Size 25; Isolation Valve Size 32; Isolation Valve Size 40; Isolation Valve Size 50; 20 mm diameter spray head for cold water supply; Supply and install Electric Water Heater set with connection; Water meter complete with accessories.; Roof drain; Vent on a roof to exhaust air; Floor drain 100x80mm; Gully trap 300x300 mm; inspection chamber, size 800x900x1000; Mini split actual capacity 2 Ton; Ducted split actual capacity 4 Ton; Supply, fabricate, install and testing factory fabricated metal ducts with flanges complete with supports, vanes,; Supplying, installation testing & commissioning of external insulation on ducts; Supply, fix, testing and commissioning of exhaust air/fresh air louvers of powder coated extruded aluminium construction.; Providing, fixing, testing and commissioning of powder coated extruded aluminum sections grills and diffusers with dampers.; Air Grills 150mm x150mm; Air Diffuser 600mm x 600mm; Supply, Installation & Testing of 2 hours Fire rated system for closing the openings between roo; 4.5 KG CO2 Type Fire Extinguishers; 6 KG ABC Type Fire Extinguishers; Floor cleanout, size 75 mm diameter; Floor cleanout, size 110 mm diameter; GRP water tanks capacity of each 1000 liter complete with all fittings, all valves and concrete pad; Guard Room 1; Guard Room 2; Guard Room 3; 30A, 2P AC Disconnect Switch; 20A Duplex Receptacle Floor Mounted; Twin Socket outlet; Twin Socket outlet, Weather Proof; Single gang Lighting switch; 2way Single gang Lighting switch; 36W LED linear Pendant lighting; 36W LED Emergency linear Pendant lighting; 13W recess mounted LED down light fitting; 13W recess emergency mounted LED down light fitting with 1.5 Hr Battery; 10.4W LED Exit light with 1.5 Hr Battery; 4mm2 Cu./FRLSZH Cable; 6mm2 Cu./FRLSZH Cable; 8 Port Industrial PoE Switch 10/100BaseT (0 deg to +70 deg. Celsius); 06C Optical Fiber SM; 48C Optical Fiber SM; 48 Core Splice Closure; Boom Barrier at Security Guard Room; Pedestrian turnstile at Security Guard Room; Access Control Unit; Access Card Reader; Magnetic Lock; Break Glass; Exit Push button; Door Sensor; Biometrics Reader; Pole/Bollard mounted IP( PoE), Automatic Number Plate Recognition (ANPR, camera, 5MP,IP 66, IR illumin; 12U rack dimension (W x H x L) 600 x 625 x 600 mm; Fire Alarm Control panel with fire alarm zoning with Mimic panel with fire alarm zoning; Main Fire Alarm Control panel with fire alarm zoning with Mimic panel with fire alarm zoning; Supply and installation of the addressable manual call point with operation safety glass breaking and pushbutton; Supply and installation of the photoelectric heat & smoke detector with base; Sounder With Beacon; Addressable Control module for Sounders; Addressable Control module for HVAC System; Addressable Monitor module for HVAC System; 2C x 1.5 Sqm FR Rated Armored - Cable For Loop Wiring; DACT (Auto - Dailer) for 24x7 Civil Defence; Transmission Communication cable - Fiber Optics 12Core; Transmission Communication cable - Ethernet Cable; Supply, install to site and installation of power supply system for fire alarm control panel; Supply, install to site and installation of power cable; Fire Fighter s Telephone Centre; Fireman s Telephone Jack; Voice Command Center → Slab on Grade; Slabs; Lightweight Concrete Roof insulation as per Architect's specification; Insulated brickwork. with expanded polystyrene 200mm thick; vertical straight wall complete with accessories .; Common brickwork. 150mm thick; vertical straight wall complete with accessories.; 2 perpendicular layers of cold bitumen coats; 2 layer of 4mm HDPE membrane, 2 perpendicular layers cold bitumen coats; 1 layer EPOXY Paint 300 micron; Membrane fully bonded to prime deck and upstand; Geotextile Filter membrane uv resistance; 85mm thick thermal insulation; 1.5mm thick epdm waterproofing membrane; CW01 - 4500 mm width x 3700 mm height; CW02 - 4500 mm width x 3700 mm height; CW03 - 4500 mm width x 3700 mm height; CW04 - 4500 mm width x 3700 mm height; CW05 - 7500 mm width x 4250 mm height; CW06 - 7500 mm width x 4250 mm height; W01 - 1000 mm width x 2000 mm height; W02 - 2000 mm width x 2000 mm height; W03 - 2000 mm width x 1000 mm height; D2 - 900 mm x 2200 mm height temper door; D3 - 950 mm x 2000 mm height temper door; Supply and install 300*300mm terrazzo tiles with 150mm high skirting at perimeter with approv; Supply and install 300*300mm glazed ceramic wall tiles on cement mortar and including rough; Supply and install internal plastering and 2 coats of acrylic paint at walls includin; Supply and install 300*300mm glazed ceramic wall tiles on cement mortar and including rough and smooth p; Supply and install 600*600mm porcelain tiles with approved quality on 30 mm mortar inclu; Supply and install 12.5mm thk, gypsum board suspended ceiling including s; Office Chairs; Office Tables; Guard Stand; Magnetic Control Access barrier, Automatic Vehicular Barriers to be installed on ground with magnetic access; Supply and install Hand Wash Basin with Water Tap, angle valve, P-trap connected to 50mm diameter s; Supply and install paper towel dispenser, surface mounted, satin finish stainless steel as per approv; Supply and install mirror, size 460*910mm as per approved sample including frames, backing and all accessories to complete.; Supply and install towel ring , surface mounted, satin finish stainless steel as per approved sample including accessories.; Kitchen sink with single bowl with hot/cold water mixer.; Supply and install Base mounted flush tank water Western water closet system with lid connected to 110mm soil pipe; Gate Valves; Slow Closing Valve; 1 meter length 10mm diameter Flexible Hose with insulated handle complete with fork support, index push, vacuum breaker; 50mm diameter; 75mm diameter; 80mm diameter; 100mm diameter; 110mm diameter; 13mm diameter; 15mm diameter; 20mm diameter; 25mm diameter; 32mm diameter; 40mm diameter; Isolation Valve Size 20; Isolation Valve Size 25; Isolation Valve Size 32; Isolation Valve Size 40; Isolation Valve Size 50; 20 mm diameter spray head for cold water supply; Supply and install Electric Water Heater set with connection; Water meter complete with accessories.; Roof drain; Vent on a roof to exhaust air; Floor drain 100x80mm; Gully trap 300x300 mm; inspection chamber, size 800x900x1000; Mini split actual capacity 2 Ton; Ducted split actual capacity 4 Ton; Supply, fabricate, install and testing factory fabricated metal ducts with flanges complete with supports, vanes,; Supplying, installation testing & commissioning of external insulation on ducts; Supply, fix, testing and commissioning of exhaust air/fresh air louvers of powder coated extruded aluminium construction.; Providing, fixing, testing and commissioning of powder coated extruded aluminum sections grills and diffusers with dampers.; Air Grills 150mm x150mm; Air Diffuser 600mm x 600mm; Supply, Installation & Testing of 2 hours Fire rated system for closing the openings between roo; 4.5 KG CO2 Type Fire Extinguishers; 6 KG ABC Type Fire Extinguishers; Floor cleanout, size 75 mm diameter; Floor cleanout, size 110 mm diameter; GRP water tanks capacity of each 1000 liter complete with all fittings, all valves and concrete pad; Guard Room 1; Guard Room 2; Guard Room 3; 30A, 2P AC Disconnect Switch; 20A Duplex Receptacle Floor Mounted; Twin Socket outlet; Twin Socket outlet, Weather Proof; Single gang Lighting switch; 2way Single gang Lighting switch; 36W LED linear Pendant lighting; 36W LED Emergency linear Pendant lighting; 13W recess mounted LED down light fitting; 13W recess emergency mounted LED down light fitting with 1.5 Hr Battery; 10.4W LED Exit light with 1.5 Hr Battery; 4mm2 Cu./FRLSZH Cable; 6mm2 Cu./FRLSZH Cable; 8 Port Industrial PoE Switch 10/100BaseT (0 deg to +70 deg. Celsius); 06C Optical Fiber SM; 48C Optical Fiber SM; 48 Core Splice Closure; Boom Barrier at Security Guard Room; Pedestrian turnstile at Security Guard Room; Access Control Unit; Access Card Reader; Magnetic Lock; Break Glass; Exit Push button; Door Sensor; Biometrics Reader; Pole/Bollard mounted IP( PoE), Automatic Number Plate Recognition (ANPR, camera, 5MP,IP 66, IR illumin; 12U rack dimension (W x H x L) 600 x 625 x 600 mm; Fire Alarm Control panel with fire alarm zoning with Mimic panel with fire alarm zoning; Main Fire Alarm Control panel with fire alarm zoning with Mimic panel with fire alarm zoning; Supply and installation of the addressable manual call point with operation safety glass breaking and pushbutton; Supply and installation of the photoelectric heat & smoke detector with base; Sounder With Beacon; Addressable Control module for Sounders; Addressable Control module for HVAC System; Addressable Monitor module for HVAC System; 2C x 1.5 Sqm FR Rated Armored - Cable For Loop Wiring; DACT (Auto - Dailer) for 24x7 Civil Defence; Transmission Communication cable - Fiber Optics 12Core; Transmission Communication cable - Ethernet Cable; Supply, install to site and installation of power supply system for fire alarm control panel; Supply, install to site and installation of power cable; Fire Fighter’s Telephone Centre; Fireman’s Telephone Jack; Voice Command Center |
| 1 | **Long Lead Time Items** |  | 2026-07-02 → 2026-09-24 (+84d) |  |  |  |  |
| 2 | **Superstructure Works** | 2026-06-24 → 2026-09-15 (+83d) | 2026-07-02 → 2026-09-24 (+84d) |  |  |  |  |
| SL | **Pump Stations** | 2026-06-24 → 2026-09-15 (+83d) | 2026-07-02 → 2026-09-24 (+84d) |  |  |  |  |
| 1 | **Submission of Material** | 2026-06-24 → 2026-09-15 (+83d) | 2026-07-01 → 2026-09-22 (+83d) |  |  |  |  |
| ENG-MT-SPS-MC-S-100 | Material Submittal for Electromechanical Works for Pump Stations | 2026-06-24 → 2026-09-15 (+83d) | 2026-07-01 → 2026-09-22 (+83d) |  | 8.5d → -53d |  |  |
| 2 | **Approval of Material** | 2026-06-24 → 2026-09-15 (+83d) | 2026-07-02 → 2026-09-24 (+84d) |  |  |  |  |
| ENG-MT-SPS-MC-A-110 | Material Approval for Electromechanical Works for Pump Stations | 2026-06-24 → 2026-09-15 (+83d) | 2026-07-02 → 2026-09-24 (+84d) |  | 8.5d → -53d |  |  |
| SL1 | **Storage Tank (TSE)** | 2026-06-24 → 2026-09-15 (+83d) | 2026-07-02 → 2026-09-24 (+84d) |  |  |  |  |
| 1 | **Submission of Material** | 2026-06-24 → 2026-09-15 (+83d) | 2026-07-01 → 2026-09-22 (+83d) |  |  |  |  |
| ENG-MT-TSE-MC-S-110 | Material Submittal for Electromechanical Works for Storage Tank (TSE) | 2026-06-24 → 2026-09-15 (+83d) | 2026-07-01 → 2026-09-22 (+83d) |  | 8.5d → -53d |  |  |
| 2 | **Approval of Material** | 2026-06-24 → 2026-09-15 (+83d) | 2026-07-02 → 2026-09-24 (+84d) |  |  |  |  |
| ENG-MT-TSE-MC-A-120 | Material Approval for Electromechanical Works for Storage Tank (TSE) | 2026-06-24 → 2026-09-15 (+83d) | 2026-07-02 → 2026-09-24 (+84d) |  | 8.5d → -53d |  |  |
| PROC | **Procurement Cycle** |  | 2027-01-28 → 2027-04-17 (+79d) |  |  |  |  |
| NLL | **Short Lead Time Items** |  | 2027-01-28 → 2027-04-17 (+79d) |  |  |  |  |
| INF | **Infrastructure Networks** |  | 2027-01-28 → 2027-04-17 (+79d) |  |  |  |  |
| RD | **Road Works** |  | 2026-12-05 → 2026-09-15 (-81d) |  |  |  |  |
| PRO-RD-PO-100 | Issuance of Purchase Order for Subgrade of Road Works | 2026-06-23 A | 2026-06-30 A | 0% → 100% | 26.75d → none |  |  |
| PRO-RD-PO-110 | Issuance of Purchase Order for Aggregate Base Course of Road Works | 2026-06-23 A | 2026-06-30 A | 0% → 100% | 32.25d → none |  |  |
| PRO-RD-PO-120 | Issuance of Purchase Order for Prime Coat of Road Works | 2026-07-15 A | 2026-07-22 A | 0% → 100% | 28.25d → none | ENG-MT-RD-A-120, PRO-SW-PO-120 → ENG-MT-RD-A-120, ENG-MT-SW-TF-A-100 |  |
| PRO-RD-PO-130 | Issuance of Purchase Order for Bituminous Base & Wearing Courses of Road Works | 2026-07-15 A | 2026-07-22 A | 0% → 100% | 19.25d → none | ENG-MT-RD-A-130, PRO-SW-PO-120 → ENG-MT-RD-A-130, ENG-MT-SW-TF-A-100 |  |
| PRO-RD-PO-140 | Issuance of Purchase Order for Interlock Tiles of Landscaping | 2026-07-23 A | 2026-07-30 A | 0% → 100% | 19.25d → none |  |  |
| PRO-RD-PO-150 | Issuance of Purchase Order for Curbstones of Landscaping | 2026-07-23 A | 2026-07-30 A | 0% → 100% | 32.8d → none |  |  |
| PRO-RD-PO-160 | Issuance of Purchase Order for Traffic Signs Boards of Road Works | 2026-07-05 A | 2026-07-13 A | 0% → 100% | 52.75d → none |  |  |
| PRO-RD-PO-170 | Issuance of Purchase Order for Road Markings of Road Works | 2026-07-13 A | 2026-07-21 A | 0% → 100% | 55.5d → none |  |  |
| MF | **Manufacturing of Material** |  | 2026-11-19 → 2026-08-18 (-93d) |  |  |  |  |
| 1 | **Road Works** |  | 2026-11-19 → 2026-08-18 (-93d) |  |  |  |  |
| PRO-RD-MF-100 | Manufacturing of Subgrade for Road Works | 2026-07-01 A | 2026-10-18 → 2026-08-18 A (-61d) | 0% → 100% | 31.5d → none |  |  |
| PRO-RD-MF-110 | Manufacturing of Aggregate Base Course for Road Works | 2026-07-01 A | 2026-10-28 → 2026-08-18 A (-71d) | 0% → 100% | 38d → none |  |  |
| PRO-RD-MF-120 | Manufacturing of Prime Coat for Road Works | 2026-07-23 A | 2026-11-19 → 2026-08-18 A (-93d) | 0% → 100% | 33d → none |  |  |
| PRO-RD-MF-130 | Manufacturing of Bituminous Base & Wearing Courses for Road Works | 2026-07-23 A | 2026-11-19 → 2026-08-18 A (-93d) | 0% → 100% | 41d → none |  |  |
| 2 | **Pavement Works** |  | 2026-10-28 → 2026-08-18 (-71d) |  |  |  |  |
| PRO-RD-MF-140 | Manufacturing of Interlock Tiles for Landscaping | 2026-07-31 A | 2026-10-28 → 2026-08-18 A (-71d) | 0% → 100% | 53d → none |  |  |
| PRO-RD-MF-150 | Manufacturing of Curbstones for Landscaping | 2026-07-31 A | 2026-10-28 → 2026-08-18 A (-71d) | 0% → 100% | 38.8d → none |  |  |
| 3 | **Traffic Signs Boards and Roads Marking** |  | 2026-11-03 → 2026-08-18 (-77d) |  |  |  |  |
| PRO-RD-MF-160 | Manufacturing of Traffic Signs Boards for Road Works | 2026-07-13 A | 2026-10-21 → 2026-08-18 A (-64d) | 0% → 100% | 61.75d → none |  |  |
| PRO-RD-MF-170 | Manufacturing of Road Markings for Road Works | 2026-07-21 A | 2026-11-03 → 2026-08-18 A (-77d) | 0% → 100% | 66.75d → none |  |  |
| 1DL | **1st Material Delivery & Site Inspection** | 2026-10-19 → 2026-08-02 (-78d) | 2026-12-03 → 2026-09-01 (-93d) |  |  |  |  |
| 1 | **Road Works** | 2026-10-19 → 2026-08-02 (-78d) | 2026-12-03 → 2026-09-01 (-93d) |  |  |  |  |
| PRO-RD-1DL-100 | 1ST Material Delivery for Subgrade of Road Works | 2026-10-19 → 2026-08-02 A (-78d) | 2026-11-01 → 2026-09-01 A (-61d) | 0% → 100% | 27.5d → none |  |  |
| PRO-RD-1DL-110 | 1ST Material Delivery for Aggregate Base Course of Road Works | 2026-10-29 → 2026-08-02 A (-88d) | 2026-11-11 → 2026-09-01 A (-71d) | 0% → 100% | 32d → none |  |  |
| PRO-RD-1DL-120 | 1ST Material Delivery for Prime Coat of Road Works | 2026-11-21 → 2026-08-02 A (-111d) | 2026-12-03 → 2026-09-01 A (-93d) | 0% → 100% | 28d → none |  |  |
| PRO-RD-1DL-130 | 1ST Material Delivery for Bituminous Base & Wearing Courses of Road Works | 2026-11-21 → 2026-08-02 A (-111d) | 2026-12-03 → 2026-09-01 A (-93d) | 0% → 100% | 35d → none |  |  |
| 2 | **Pavement Works** | 2026-10-29 → 2026-08-02 (-88d) | 2026-11-11 → 2026-09-01 (-71d) |  |  |  |  |
| PRO-RD-1DL-140 | 1ST Material Delivery for Interlock Tiles of Landscaping | 2026-10-29 → 2026-08-02 A (-88d) | 2026-11-11 → 2026-09-01 A (-71d) | 0% → 100% | 45d → none |  |  |
| PRO-RD-1DL-150 | 1ST Material Delivery for Curbstones of Landscaping | 2026-10-29 → 2026-08-02 A (-88d) | 2026-11-11 → 2026-09-01 A (-71d) | 0% → 100% | 32.8d → none |  |  |
| 3 | **Traffic Signs Boards and Roads Marking** | 2026-10-21 → 2026-08-02 (-80d) | 2026-11-25 → 2026-09-01 (-85d) |  |  |  |  |
| PRO-RD-1DL-160 | 1ST Material Delivery for Traffic Signs Boards of Road Works | 2026-10-21 → 2026-08-02 A (-80d) | 2026-11-08 → 2026-09-01 A (-68d) | 0% → 100% | 52.75d → none |  |  |
| PRO-RD-1DL-170 | 1ST Material Delivery for Road Markings of Road Works | 2026-11-08 → 2026-08-02 A (-98d) | 2026-11-25 → 2026-09-01 A (-85d) | 0% → 100% | 52.75d → none |  |  |
| DL | **Material Delivery & Site Inspection** | 2026-11-02 → 2026-08-02 (-92d) | 2026-12-05 → 2026-09-15 (-81d) |  |  |  |  |
| 1 | **Pre-Bituminous Construction** | 2026-11-02 → 2026-08-02 (-92d) | 2026-11-12 → 2026-09-15 (-58d) |  |  |  |  |
| PRO-R25-RD-DL-100 | Material Delivery & Site Inspection for Subgrade of Road Works | 2026-11-02 → 2026-08-02 A (-92d) | 2026-11-02 → 2026-09-15 (-48d) | 0% → 30% | 27.5d → 67.5d |  |  |
| PRO-R25-RD-DL-110 | Material Delivery & Site Inspection for Aggregate Base Course of Road Works | 2026-11-12 → 2026-09-15 (-58d) | 2026-11-12 → 2026-09-15 (-58d) |  | 32d → 81d |  |  |
| 4 | **Bituminous Construction** | 2026-12-05 → 2026-09-15 (-81d) | 2026-12-05 → 2026-09-15 (-81d) |  |  |  |  |
| PRO-R25-RD-DL-160 | Material Delivery & Site Inspection for Prime Coat of Road Works | 2026-12-05 → 2026-09-15 (-81d) | 2026-12-05 → 2026-09-15 (-81d) |  | 28d → 96d |  |  |

| ID | Task | Start | Finish | Complete | Total float | Predecessors |
| --- | --- | --- | --- | --- | --- | --- |
| PRO-R25-RD-DL-170 | Material Delivery & Site Inspection for Bituminous Base & Wearing Courses of Road Works | 2026-12-05 → 2026-09-15 (-81d) | 2026-12-05 → 2026-09-15 (-81d) |  | 35d → 103d |  |
| 2 | **Pavement Works** | 2026-11-12 → 2026-09-15 (-58d) | 2026-11-12 → 2026-09-15 (-58d) |  |  |  |
| PRO-R25-RD-DL-120 | Material Delivery & Site Inspection of Interlock Tiles for Landscaping | 2026-11-12 → 2026-09-15 (-58d) | 2026-11-12 → 2026-09-15 (-58d) |  | 45d → 94d |  |
| PRO-R25-RD-DL-130 | Material Delivery & Site Inspection of Curbstones for Landscaping | 2026-11-12 → 2026-09-15 (-58d) | 2026-11-12 → 2026-09-15 (-58d) |  | 32.8d → 81.8d |  |
| 3 | **Traffic Signs Boards and Roads Marking** | 2026-11-08 → 2026-09-15 (-54d) | 2026-11-25 → 2026-09-15 (-71d) |  |  |  |
| PRO-R25-RD-DL-140 | Material Delivery & Site Inspection of Traffic Signs Boards For Road Works | 2026-11-08 → 2026-09-15 (-54d) | 2026-11-08 → 2026-09-15 (-54d) |  | 74.75d → 120d |  |
| PRO-R25-RD-DL-150 | Material Delivery & Site Inspection of Road Markings For Road Works | 2026-11-25 → 2026-09-15 (-71d) | 2026-11-25 → 2026-09-15 (-71d) |  | 52.75d → 113d |  |
| IR1 | **Softscape and Planting Works** | 2026-07-11 → 2026-09-15 (+66d) | 2026-11-10 → 2027-01-14 (+65d) |  |  |  |
| PO | **Issuance of Purchase Orders** | 2026-07-11 → 2026-09-15 (+66d) | 2026-07-19 → 2026-09-21 (+64d) |  |  |  |
| 1 | **Main Line Pipes** | 2026-07-11 → 2026-09-15 (+66d) | 2026-07-19 → 2026-09-21 (+64d) |  |  |  |
| PRO-IR-PO-140 | Issuance of Purchase Order for Softscape and Planting Works | 2026-07-12 → 2026-09-15 (+65d) | 2026-07-19 → 2026-09-21 (+64d) |  | 12.75d → -42.75d |  |
| PRO-IR-PO-150 | Issuance of Purchase Order for Site Furnishings (Seating Bench,Stone Boulders and Gravel) | 2026-07-11 → 2026-09-15 (+66d) | 2026-07-18 → 2026-09-21 (+65d) |  | 16.75d → -39.75d |  |
| MF | **Manufacturing of Material** | 2026-07-18 → 2026-09-22 (+66d) | 2026-10-17 → 2026-12-20 (+64d) |  |  |  |
| 1 | **Main Line Pipes** | 2026-07-18 → 2026-09-22 (+66d) | 2026-10-17 → 2026-12-20 (+64d) |  |  |  |
| PRO-IR-MF-140 | Manufacturing of Softscape and Planting Works | 2026-07-19 → 2026-09-22 (+65d) | 2026-10-17 → 2026-12-20 (+64d) |  | 14.75d → -50d |  |
| PRO-IR-MF-150 | Manufacturing of Valves for Site Furnishings (Seating Bench,Stone Boulders and Gravel) | 2026-07-18 → 2026-09-22 (+66d) | 2026-10-16 → 2026-12-20 (+65d) |  | 18.75d → -47d |  |
| 1DL | **1st Material Delivery & Site Inspection** | 2026-10-17 → 2026-12-21 (+65d) | 2026-10-24 → 2026-12-27 (+64d) |  |  |  |
| 1 | **Main Line Pipes** | 2026-10-17 → 2026-12-21 (+65d) | 2026-10-24 → 2026-12-27 (+64d) |  |  |  |
| PRO-IR-1DL-140 | 1ST Material Delivery for Softscape and Planting Works | 2026-10-17 → 2026-12-21 (+65d) | 2026-10-24 → 2026-12-27 (+64d) |  | 12.75d → -43d |  |
| PRO-IR-1DL-150 | 1ST Material Delivery for Site Furnishings (Seating Bench,Stone Boulders and Gravel) | 2026-10-17 → 2026-12-21 (+65d) | 2026-10-22 → 2026-12-27 (+66d) |  | 16d → -40d |  |
| DL | **Material Delivery & Site Inspection** | 2026-10-24 → 2026-12-28 (+65d) | 2026-11-10 → 2027-01-14 (+65d) |  |  |  |
| 1 | **Main Line Pipes** | 2026-10-24 → 2026-12-28 (+65d) | 2026-11-10 → 2027-01-14 (+65d) |  |  |  |
| PRO-R25-IR-DL-140 | Material Delivery & Site Inspection of Softscape and Planting Works | 2026-10-24 → 2026-12-28 (+65d) | 2026-11-07 → 2027-01-10 (+64d) |  | 12.75d → -43d |  |
| PRO-R25-IR-DL-150 | Material Delivery & Site Inspection of Site Furnishings (Seating Bench,Stone Boulders and Gravel) | 2026-10-24 → 2026-12-28 (+65d) | 2026-11-10 → 2027-01-14 (+65d) |  | 16d → -40d |  |
| SW | **Sewage Network** |  | 2026-12-28 → 2027-03-17 (+79d) |  |  |  |
| PO | **Issuance of Purchase Orders** |  | 2026-07-14 → 2026-09-21 (+69d) |  |  |  |
| PRO-SW-PO-100 | Issuance of Purchase Order for Main Line Pipes of Sewage Network | 2026-06-23 A | 2026-06-29 A | 0% → 100% | 4.5d → none |  |
| PRO-SW-PO-110 | Issuance of Purchase Order for Manhole of Sewage Network | 2026-06-23 A | 2026-06-29 A | 0% → 100% | 11.5d → none |  |
| 3 | **Testing and Finishes** | 2026-07-08 → 2026-09-15 (+69d) | 2026-07-14 → 2026-09-21 (+69d) |  |  |  |
| PRO-SW-PO-120 | Issuance of Purchase Order for Manhole Covers of Sewage Network | 2026-07-08 → 2026-09-15 (+69d) | 2026-07-14 → 2026-09-21 (+69d) |  | 2d → -57d | ENG-MT-SW-TF-A-100 → ENG-MT-SW-TF-A-100, ENG-MT-RD-A-120, ENG-MT-RD-A-130 |
| MF | **Manufacturing of Material** |  | 2026-11-21 → 2027-01-29 (+69d) |  |  |  |
| PRO-SW-MF-100 | Manufacturing of Main Line Pipes for Sewage Network | 2026-06-30 A | 2026-07-19 A | 0% → 100% | 5.25d → none |  |
| PRO-SW-MF-110 | Manufacturing of Manholes for Sewage Network | 2026-06-30 A | 2026-08-08 A | 0% → 100% | 13.25d → none |  |
| 3 | **Testing and Finishes** | 2026-07-15 → 2026-09-22 (+69d) | 2026-11-21 → 2027-01-29 (+69d) |  |  |  |
| PRO-SW-MF-120 | Manufacturing of Manhole Covers for Sewage Network | 2026-07-15 → 2026-09-22 (+69d) | 2026-11-21 → 2027-01-29 (+69d) |  | 2d → -67d | PRO-SW-PO-120 → PRO-SW-PO-120, PRO-RD-PO-120, PRO-RD-PO-130 |
| 1DL | **1st Material Delivery & Site Inspection** |  | 2026-11-28 → 2027-02-04 (+68d) |  |  |  |
| PRO-SW-1DL-100 | 1ST Material Delivery for Main Line Pipes of Sewage Network | 2026-07-20 A | 2026-07-26 A | 0% → 100% | 4.5d → none |  |
| PRO-SW-1DL-110 | 1ST Material Delivery for Manholes of Sewage Network | 2026-08-09 A | 2026-08-15 A | 0% → 100% | 11.5d → none |  |
| 3 | **Testing and Finishes** | 2026-11-22 → 2027-01-30 (+69d) | 2026-11-28 → 2027-02-04 (+68d) |  |  |  |
| PRO-SW-1DL-120 | 1ST Material Delivery for Manholes Covers of Sewage Network | 2026-11-22 → 2027-01-30 (+69d) | 2026-11-28 → 2027-02-04 (+68d) |  | 2d → -57d |  |
| DL | **Material Delivery & Site Inspection** |  | 2026-12-28 → 2027-03-17 (+79d) |  |  |  |
| 1 | **Main Line Sections** |  | 2026-08-09 → 2026-09-15 (+37d) |  |  |  |
| PRO-R25-SW-DL-100 | Material Delivery & Site Inspection of Main Line Pipes for Sewage Network | 2026-07-27 A | 2026-07-27 A | 0% → 100% | 14d → none |  |
| PRO-R25-SW-DL-110 | Material Delivery & Site Inspection of Manholes for Sewage Network | 2026-08-09 → 2026-09-15 (+37d) | 2026-08-09 → 2026-09-15 (+37d) |  | 24.5d → -8d |  |
| 3 | **Testing and Finishes** | 2026-11-29 → 2027-02-06 (+69d) | 2026-12-28 → 2027-03-17 (+79d) |  |  |  |
| PRO-R25-SW-DL-120 | Material Delivery & Site Inspection of Manholes Covers for Sewage Network | 2026-11-29 → 2027-02-06 (+69d) | 2026-12-28 → 2027-03-17 (+79d) |  | 2d → -57d |  |
| SD | **Storm Drainage Network** | 2026-06-23 → 2026-08-02 (+40d) | 2026-12-10 → 2027-02-16 (+68d) |  |  |  |
| MF | **Manufacturing of Material** | 2026-06-30 → 2026-09-18 (+80d) | 2026-10-22 → 2026-12-30 (+69d) |  |  |  |
| 1 | **Main Line Sections** | 2026-06-30 → 2026-09-18 (+80d) | 2026-08-08 → 2026-11-01 (+85d) |  |  |  |
| PRO-SD-MF-110 | Manufacturing of Materials for Main Line Pipes of Storm Drainage Network | 2026-07-01 → 2026-09-18 (+79d) | 2026-07-09 → 2026-09-25 (+78d) |  | 6d → -63d |  |
| PRO-SD-MF-100 | Manufacturing of Materials for Manholes of Storm Drainage Network | 2026-06-30 → 2026-09-22 (+84d) | 2026-08-08 → 2026-11-01 (+85d) |  | 0d → -84.2d |  |
| 2 | **Catch Basin Sections** | 2026-06-30 → 2026-09-22 (+84d) | 2026-07-19 → 2026-10-11 (+84d) |  |  |  |
| PRO-SD-MF-130 | Manufacturing of Materials for Catch Basins of Storm Drainage Network | 2026-06-30 → 2026-09-22 (+84d) | 2026-07-19 → 2026-10-11 (+84d) |  | 30d → -54d |  |
| PRO-SD-MF-150 | Manufacturing of Materials for Catch Basin Pipes of Storm Drainage Network | 2026-06-30 → 2026-09-22 (+84d) | 2026-07-19 → 2026-10-11 (+84d) |  | 30d → -54d |  |
| 3 | **Testing and Finishes** | 2026-07-15 → 2026-09-22 (+69d) | 2026-10-22 → 2026-12-30 (+69d) |  |  |  |
| PRO-SD-MF-120 | Manufacturing of Materials for Manhole Covers of Storm Drainage Network | 2026-07-15 → 2026-09-22 (+69d) | 2026-10-22 → 2026-12-30 (+69d) |  | 31d → -38d |  |
| PRO-SD-MF-140 | Manufacturing of Materials for Catch Basin Covers of Storm Drainage Network | 2026-07-15 → 2026-09-22 (+69d) | 2026-10-22 → 2026-12-30 (+69d) |  | 26d → -43d |  |
| PO | **Issuance of Purchase Orders** | 2026-06-23 → 2026-09-15 (+84d) | 2026-07-14 → 2026-09-22 (+70d) |  |  |  |
| 1 | **Main Line Sections** | 2026-06-23 → 2026-09-15 (+84d) | 2026-07-01 → 2026-09-22 (+83d) |  |  |  |
| PRO-SD-PO-100 | Issuance of Purchase Order for Manholes of Storm Drainage Network | 2026-06-23 → 2026-09-15 (+84d) | 2026-06-30 → 2026-09-22 (+84d) |  | 0.05d → -71.95d |  |
| PRO-SD-PO-110 | Issuance of Purchase Order for Main Line Pipes of Storm Drainage Network | 2026-06-28 → 2026-09-15 (+79d) | 2026-07-01 → 2026-09-17 (+78d) |  | 0.75d → -66.75d |  |
| 2 | **Catch Basin Sections** | 2026-06-23 → 2026-09-15 (+84d) | 2026-06-29 → 2026-09-21 (+84d) |  |  |  |
| PRO-SD-PO-130 | Issuance of Purchase Order for Catch Basins of Storm Drainage Network | 2026-06-23 → 2026-09-15 (+84d) | 2026-06-29 → 2026-09-21 (+84d) |  | 26.25d → -45.75d |  |
| PRO-SD-PO-150 | Issuance of Purchase Order for Catch Basin Pipes of Storm Drainage Network | 2026-06-23 → 2026-09-15 (+84d) | 2026-06-29 → 2026-09-21 (+84d) |  | 26.25d → -45.75d |  |
| 3 | **Testing and Finishes** | 2026-07-08 → 2026-09-15 (+69d) | 2026-07-14 → 2026-09-21 (+69d) |  |  |  |
| PRO-SD-PO-120 | Issuance of Purchase Order for Manhole Covers of Storm Drainage Network | 2026-07-08 → 2026-09-15 (+69d) | 2026-07-14 → 2026-09-21 (+69d) |  | 26.25d → -32.75d |  |
| PRO-SD-PO-140 | Issuance of Purchase Order for Catch Basin Covers of Storm Drainage Network | 2026-07-08 → 2026-09-15 (+69d) | 2026-07-14 → 2026-09-21 (+69d) |  | 22.25d → -36.75d |  |
| 1DL | **1st Material Delivery & Site Inspection** | 2026-07-09 → 2026-09-26 (+79d) | 2026-10-29 → 2027-01-06 (+69d) |  |  |  |
| 1 | **Main Line Sections** | 2026-07-09 → 2026-09-26 (+79d) | 2026-07-16 → 2026-10-01 (+77d) |  |  |  |
| PRO-SD-1DL-110 | 1ST Material Delivery for Main Line Pipes of Storm Drainage Network | 2026-07-09 → 2026-09-26 (+79d) | 2026-07-16 → 2026-10-01 (+77d) |  | 5d → -53d |  |

| ID | Task | Start | Finish | Complete | Total float | Predecessors | Other |
| --- | --- | --- | --- | --- | --- | --- | --- |
| 2 | **Catch Basin Sections** | 2026-07-20 → 2026-10-12 (+84d) | 2026-07-26 → 2026-10-18 (+84d) |  |  |  |  |
| PRO-SD-1DL-120 | 1ST Material Delivery for Catch Basin Pipes of Storm Drainage Network | 2026-07-20 → 2026-10-12 (+84d) | 2026-07-26 → 2026-10-18 (+84d) |  | 26d → -45d |  |  |
| PRO-SD-1DL-130 | 1ST Material Delivery for Catch Basins of Storm Drainage Network | 2026-07-20 → 2026-10-12 (+84d) | 2026-07-26 → 2026-10-18 (+84d) |  | 26d → -45d |  |  |
| 3 | **Testing and Finishes** | 2026-10-24 → 2026-12-31 (+68d) | 2026-10-29 → 2027-01-06 (+69d) |  |  |  |  |
| PRO-SD-1DL-140 | 1ST Material Delivery for Manholes Covers of Storm Drainage Network | 2026-10-24 → 2026-12-31 (+68d) | 2026-10-29 → 2027-01-06 (+69d) |  | 26d → -33d |  |  |
| PRO-SD-1DL-150 | 1ST Material Delivery for Catch Basin Covers of Storm Drainage Network | 2026-10-24 → 2026-12-31 (+68d) | 2026-10-29 → 2027-01-06 (+69d) |  | 22d → -37d |  |  |
| DL | **Material Delivery & Site Inspection** | 2026-07-16 → 2026-08-02 (+17d) | 2026-12-10 → 2027-02-16 (+68d) |  |  |  |  |
| 1 | **Main Line Sections** | 2026-07-16 → 2026-08-02 (+17d) | 2026-08-09 → 2026-11-01 (+84d) |  |  |  |  |
| PRO-R25-SD-DL-100 | Material Delivery & Site Inspection of Manholes of Storm Drainage Network | 2026-08-09 → 2026-08-02 A (-7d) | 2026-08-09 → 2026-11-01 (+84d) | 0% → 40% | 0d → -71.2d | PRO-SD-MF-100 → PRO-SD-MF-100 FF |  |
| PRO-R25-SD-DL-120 | Material Delivery & Site Inspection of Main Line Pipes of Storm Drainage Network | 2026-07-16 → 2026-08-02 A (+17d) | 2026-07-16 → 2026-10-03 (+79d) | 0% → 82% | 5d → -53d | PRO-SD-1DL-110, PRO-SD-MF-110 → PRO-SD-1DL-110 FF, PRO-SD-MF-110 FF |  |
| 2 | **Catch Basin Sections** | 2026-07-27 → 2026-08-02 (+6d) | 2026-07-27 → 2026-10-19 (+84d) |  |  |  |  |
| PRO-R25-SD-DL-110 | Material Delivery & Site Inspection of Catch Basin Pipes for Storm Drainage Network | 2026-07-27 → 2026-08-02 A (+6d) | 2026-07-27 → 2026-10-19 (+84d) | 0% → 40% | 36d → -35d | PRO-SD-1DL-120, PRO-SD-MF-150 SS, PRO-SD-MF-150 FF → PRO-SD-MF-150 FF, PRO-SD-1DL-120 FF |  |
| PRO-R25-SD-DL-130 | Material Delivery & Site Inspection of Catch Basins for Storm Drainage Network | 2026-07-27 → 2026-08-02 A (+6d) | 2026-07-27 → 2026-10-19 (+84d) | 0% → 40% | 36d → -35d | PRO-SD-1DL-130, PRO-SD-MF-130 SS, PRO-SD-MF-130 FF → PRO-SD-MF-130 FF, PRO-SD-1DL-130 FF |  |
| 3 | **Testing and Finishes** | 2026-10-31 → 2027-01-07 (+68d) | 2026-12-10 → 2027-02-16 (+68d) |  |  |  |  |
| PRO-R25-SD-DL-150 | Material Delivery & Site Inspection of Catch Basin Covers for Storm Drainage Network | 2026-10-31 → 2027-01-07 (+68d) | 2026-11-22 → 2027-01-30 (+69d) |  | 22d → -37d |  |  |
| PRO-R25-SD-DL-140 | Material Delivery & Site Inspection of Manholes Covers for Storm Drainage Network | 2026-11-11 → 2027-01-16 (+66d) | 2026-12-10 → 2027-02-16 (+68d) |  | 16d → -40d |  |  |
| PW | **Potable Water Network** |  | 2026-12-13 → 2027-02-25 (+74d) |  |  |  |  |
| PO | **Issuance of Purchase Orders** |  | 2026-07-19 → 2026-09-27 (+70d) |  |  |  |  |
| 1 | **Main Line Sections** |  | 2026-07-14 → 2026-09-24 (+72d) |  |  |  |  |
| PRO-PW-PO-110 | Issuance of Purchase Order for Valves of Potable Water Network | 2026-07-08 → 2026-09-15 (+69d) | 2026-07-14 → 2026-09-21 (+69d) |  | 19.75d → -39.25d |  |  |
| PRO-PW-PO-100_R | Issuance of Purchase Order for Main Line Pipes of Potable Water Network(Remaining) | 2026-07-01 → 2026-09-19 (+80d) | 2026-07-07 → 2026-09-24 (+79d) |  | 0.75d → -66.75d |  |  |
| 3 | **Fire Hydrant** | 2026-07-08 → 2026-09-15 (+69d) | 2026-07-19 → 2026-09-27 (+70d) |  |  |  |  |
| PRO-PW-PO-120 | Issuance of Purchase Order for Fire Hydrants of Potable Water Network | 2026-07-08 → 2026-09-15 (+69d) | 2026-07-19 → 2026-09-27 (+70d) |  | 34.75d → -24.25d |  |  |
| 4 | **Testing and Finishes** | 2026-07-08 → 2026-09-15 (+69d) | 2026-07-19 → 2026-09-27 (+70d) |  |  |  |  |
| PRO-PW-PO-130 | Issuance of Purchase Order for Surface Box of Potable Water Network | 2026-07-08 → 2026-09-15 (+69d) | 2026-07-19 → 2026-09-27 (+70d) |  | 30.25d → -28.75d |  |  |
| MF | **Manufacturing of Material** |  | 2026-11-06 → 2027-01-15 (+70d) |  |  |  |  |
| 1 | **Main Line Sections** |  | 2026-10-12 → 2026-12-30 (+79d) |  |  |  |  |
| PRO-PW-MF-110 | Manufacturing of Valves for Potable Water Network | 2026-07-15 → 2026-09-22 (+69d) | 2026-10-12 → 2026-12-20 (+69d) |  | 22.5d → -46.5d |  |  |
| PRO-PW-MF-100_R | Manufacturing of Main Line Pipes for Potable Water Network(Remaining) | 2026-07-07 → 2026-09-25 (+80d) | 2026-10-11 → 2026-12-30 (+80d) |  | 0.75d → -79d |  |  |
| 3 | **Fire Hydrant** | 2026-07-20 → 2026-09-28 (+70d) | 2026-09-17 → 2026-11-26 (+70d) |  |  |  |  |
| PRO-PW-MF-120 | Manufacturing of Fire Hydrants for Potable Water Network | 2026-07-20 → 2026-09-28 (+70d) | 2026-09-17 → 2026-11-26 (+70d) |  | 40.5d → -29.5d |  |  |
| 4 | **Testing and Finishes** | 2026-07-20 → 2026-09-28 (+70d) | 2026-11-06 → 2027-01-15 (+70d) |  |  |  |  |
| PRO-PW-MF-130 | Manufacturing for Surface Box of Potable Water Network | 2026-07-20 → 2026-09-28 (+70d) | 2026-11-06 → 2027-01-15 (+70d) |  | 35d → -35d |  |  |
| 1DL | **1st Material Delivery & Site Inspection** |  | 2026-11-12 → 2027-01-21 (+70d) |  |  |  |  |
| 1 | **Main Line Sections** |  | 2026-10-19 → 2026-12-27 (+69d) |  |  |  |  |
| PRO-PW-1DL-100_R | 1ST Material Delivery for Main Line Pipes of Potable Water Network(Remaining) | 2026-07-07 → 2026-09-26 (+81d) | 2026-09-28 → 2026-12-16 (+79d) |  | 11.5d → -56d |  |  |
| PRO-PW-1DL-110 | 1ST Material Delivery for Valves of Potable Water Network | 2026-10-13 → 2026-12-21 (+69d) | 2026-10-19 → 2026-12-27 (+69d) |  | 19.5d → -39.5d |  |  |
| 3 | **Fire Hydrant** | 2026-09-19 → 2026-11-28 (+70d) | 2026-09-26 → 2026-12-03 (+68d) |  |  |  |  |
| PRO-PW-1DL-120 | 1ST Material Delivery for Fire Hydrants of Potable Water Network | 2026-09-19 → 2026-11-28 (+70d) | 2026-09-26 → 2026-12-03 (+68d) |  | 33.5d → -25.5d |  |  |
| 4 | **Testing and Finishes** | 2026-11-07 → 2027-01-16 (+70d) | 2026-11-12 → 2027-01-21 (+70d) |  |  |  |  |
| PRO-PW-1DL-130 | 1ST Material Delivery for Finishes of Potable Water Network | 2026-11-07 → 2027-01-16 (+70d) | 2026-11-12 → 2027-01-21 (+70d) |  | 30d → -30d |  |  |
| DL | **Material Delivery & Site Inspection** |  | 2026-12-13 → 2027-02-25 (+74d) |  |  |  |  |
| 1 | **Main Line Sections** |  | 2026-10-20 → 2026-12-28 (+69d) |  |  |  |  |
| PRO-R25-PW-DL-100_R | Material Delivery & Site Inspection of Main Line Pipes for Potable Water Network(Remaining) | 2026-09-29 → 2026-08-02 A (-58d) | 2026-09-29 → 2026-12-16 (+78d) | 0% → 90% | 11.5d → -56d | PRO-PW-1DL-100_R, PRO-R25-PW-DL-100 → PRO-R25-PW-DL-100, PRO-PW-1DL-100_R FF |  |
| PRO-R25-PW-DL-110 | Material Delivery & Site Inspection of Valves for Potable Water Network | 2026-10-20 → 2026-12-28 (+69d) | 2026-10-20 → 2026-12-28 (+69d) |  | 25.5d → -33.5d |  |  |
| 3 | **Fire Hydrant** | 2026-09-27 → 2026-12-05 (+69d) | 2026-09-27 → 2026-12-05 (+69d) |  |  |  |  |
| PRO-R25-PW-DL-120 | Material Delivery & Site Inspection of Fire Hydrants for Potable Water Network | 2026-09-27 → 2026-12-05 (+69d) | 2026-09-27 → 2026-12-05 (+69d) |  | 33.5d → -25.5d |  |  |
| 4 | **Testing and Finishes** | 2026-11-14 → 2027-01-23 (+70d) | 2026-12-13 → 2027-02-25 (+74d) |  |  |  |  |
| PRO-R25-PW-DL-130 | Material Delivery & Site Inspection for Finishes of Potable Water Network | 2026-11-14 → 2027-01-23 (+70d) | 2026-12-13 → 2027-02-25 (+74d) |  | 30d → -30d |  |  |
| IR | **Irrigation Network** |  | 2026-10-27 → 2027-01-05 (+70d) |  |  |  |  |
| PO | **Issuance of Purchase Orders** |  | 2026-07-21 → 2026-09-29 (+70d) |  |  |  |  |
| 1 | **Main Line Pipes** |  | 2026-07-21 → 2026-09-29 (+70d) |  |  |  |  |
| PRO-IR-PO-110 | Issuance of Purchase Order for Valves of Irrigation Network | 2026-07-15 → 2026-09-22 (+69d) | 2026-07-21 → 2026-09-29 (+70d) |  | 21.75d → -37.25d |  |  |
| PRO-IR-PO-100_R | Issuance of Purchase Order for Main Line Pipes of Irrigation Network(Remaining) | 2026-07-07 → 2026-09-26 (+81d) | 2026-07-11 → 2026-09-29 (+80d) |  | 16.45d → -51.05d |  |  |
| MF | **Manufacturing of Material** | 2026-07-11 → 2026-09-29 (+80d) | 2026-10-19 → 2026-12-28 (+70d) |  |  |  |  |
| 1 | **Main Line Pipes** | 2026-07-11 → 2026-09-29 (+80d) | 2026-10-19 → 2026-12-28 (+70d) |  |  |  |  |
| PRO-IR-MF-100 | Manufacturing of Main Line Pipes for Irrigation Network | 2026-07-11 → 2026-09-29 (+80d) | 2026-10-05 → 2026-12-24 (+80d) |  | 18.2d → -61.3d |  |  |
| PRO-IR-MF-110 | Manufacturing of Valves for Irrigation Network | 2026-07-22 → 2026-09-30 (+70d) | 2026-10-19 → 2026-12-28 (+70d) |  | 25.5d → -44.5d |  |  |
| 1DL | **1st Material Delivery & Site Inspection** | 2026-10-05 → 2026-12-24 (+80d) | 2026-10-26 → 2027-01-04 (+70d) |  |  |  |  |
| 1 | **Main Line Pipes** | 2026-10-05 → 2026-12-24 (+80d) | 2026-10-26 → 2027-01-04 (+70d) |  |  |  |  |
| PRO-IR-1DL-100 | 1ST Material Delivery for Main Line Pipes of Irrigation Network | 2026-10-05 → 2026-12-24 (+80d) | 2026-10-11 → 2026-12-30 (+80d) |  | 15.2d → -53.3d |  |  |
| PRO-IR-1DL-110 | 1ST Material Delivery for Valves of Irrigation Network | 2026-10-20 → 2026-12-29 (+70d) | 2026-10-26 → 2027-01-04 (+70d) |  | 21.5d → -38.5d |  |  |
| DL | **Material Delivery & Site Inspection** | 2026-10-11 → 2026-12-30 (+80d) | 2026-10-27 → 2027-01-05 (+70d) |  |  |  |  |
| 1 | **Main Line Pipes** | 2026-10-11 → 2026-12-30 (+80d) | 2026-10-27 → 2027-01-05 (+70d) |  |  |  |  |
| PRO-R25-IR-DL-100 | Material Delivery & Site Inspection of Main Line Pipes for Irrigation Network | 2026-10-11 → 2026-12-30 (+80d) | 2026-10-11 → 2026-12-30 (+80d) |  | 15.2d → -53.3d |  |  |
| PRO-R25-IR-DL-110 | Material Delivery & Site Inspection of Valves for Irrigation Network | 2026-10-27 → 2027-01-05 (+70d) | 2026-10-27 → 2027-01-05 (+70d) |  | 21.5d → -38.5d |  | resources Gate valve 50 mm PN16; Direct Burried Gate valve 40 mm PN16; Pressure compensating bubblers 110 Lit/Hr; Flushing Bronze gate valve dia 1.5" inside PVC box; Air release valve 1.5" inside PVC box; Extra flexible pressure compensating on surface inline dripline`s, O.D. is 16.1 mm; Electrical Solenoid Valve ( 1.5") inside PVC box; Electrical Solenoid Valve ( 2") inside PVC box; Quick coupling valve 1" inside a round valve box 10" size with a manual gate valve, hose swivel and key with all accessories; Advanced Irrigation controller subject to client approval, can connect with Centarl Control system; Decoder cables 12 AWG between valves and controllers, The cables shall be pulled through 32 UPVC conduit; Preparing the irrigation program for the entire system and providing technical services for monitoring and controlling the central irrigation systems → Gate valve 50 mm PN16; Direct Burried Gate valve 40 mm PN16; Pressure–compensating bubblers 110 Lit/Hr; Flushing Bronze gate valve dia 1.5" inside PVC box; Air release valve 1.5" inside PVC box; Extra flexible pressure compensating on surface inline dripline`s, O.D. is 16.1 mm; Electrical Solenoid Valve ( 1.5") inside PVC box; Electrical Solenoid Valve ( 2") inside PVC box; Quick coupling valve 1" inside a round valve box 10" size with a manual gate valve, hose swivel and key with all accessories; Advanced Irrigation controller subject to client approval, can connect with Centarl Control system; Decoder cables 12 AWG between valves and controllers, The cables shall be pulled through 32Ø UPVC conduit; Preparing the irrigation program for the entire system and providing technical services for monitoring and controlling the central irrigation systems |
| TSE | **Treated Sewage Effluent (Tse)** |  | 2026-10-10 → 2026-12-28 (+79d) |  |  |  |  |
| PO | **Issuance of Purchase Orders** | 2026-06-27 → 2026-09-15 (+80d) | 2026-07-04 → 2026-09-21 (+79d) |  |  |  |  |
| 1 | **Main Line Pipes** | 2026-06-27 → 2026-09-15 (+80d) | 2026-07-04 → 2026-09-21 (+79d) |  |  |  |  |
| PRO-TSE-PO-120 | Issuance of Purchase Order for Main Line Pipes of Treated Sewage Effluent (Tse) | 2026-06-27 → 2026-09-15 (+80d) | 2026-07-04 → 2026-09-21 (+79d) |  | 19.25d → -49.25d |  |  |

| ID | Task | Start | Finish | Complete | Total float |
| --- | --- | --- | --- | --- | --- |
| PRO-TSE-PO-130 | Issuance of Purchase Order for Valves of Treated Sewage Effluent (Tse) | 2026-06-27 → 2026-09-15 (+80d) | 2026-07-04 → 2026-09-21 (+79d) |  | 38.25d → -30.25d |
| MF | **Manufacturing of Material** | 2026-07-04 → 2026-09-22 (+80d) | 2026-10-02 → 2026-12-20 (+79d) |  |  |
| 1 | **Main Line Pipes** | 2026-07-04 → 2026-09-22 (+80d) | 2026-10-02 → 2026-12-20 (+79d) |  |  |
| PRO-TSE-MF-120 | Manufacturing of Main Line Pipes for Treated Sewage Effluent (Tse) | 2026-07-04 → 2026-09-22 (+80d) | 2026-10-02 → 2026-12-20 (+79d) |  | 22.25d → -57.5d |
| PRO-TSE-MF-130 | Manufacturing of Valves for Treated Sewage Effluent (Tse) | 2026-07-04 → 2026-09-22 (+80d) | 2026-10-02 → 2026-12-20 (+79d) |  | 44.25d → -35.5d |
| 1DL | **1st Material Delivery & Site Inspection** | 2026-10-03 → 2026-12-21 (+79d) | 2026-10-08 → 2026-12-27 (+80d) |  |  |
| 1 | **Main Line Pipes** | 2026-10-03 → 2026-12-21 (+79d) | 2026-10-08 → 2026-12-27 (+80d) |  |  |
| PRO-TSE-1DL-120 | 1ST Material Delivery for Main Line Pipes of Treated Sewage Effluent (Tse) | 2026-10-03 → 2026-12-21 (+79d) | 2026-10-08 → 2026-12-27 (+80d) |  | 18.5d → -49.5d |
| PRO-TSE-1DL-130 | 1ST Material Delivery for Valves of Treated Sewage Effluent (Tse) | 2026-10-03 → 2026-12-21 (+79d) | 2026-10-08 → 2026-12-27 (+80d) |  | 37.5d → -30.5d |
| DL | **Material Delivery & Site Inspection** |  | 2026-10-10 → 2026-12-28 (+79d) |  |  |
| 1 | **Main Line Pipes** |  | 2026-10-10 → 2026-12-28 (+79d) |  |  |
| PRO-R25-TSE-DL-120_R | Material Delivery & Site Inspection of Main Line Pipes for Treated Sewage Effluent (Tse)(Remaining) | 2026-10-10 → 2026-08-02 A (-69d) | 2026-10-10 → 2026-12-28 (+79d) | 0% → 50% | 18.5d → -49.5d |
| PRO-R25-TSE-DL-130 | Material Delivery & Site Inspection of Valves for Treated Sewage Effluent (Tse) | 2026-10-10 → 2026-12-28 (+79d) | 2026-10-10 → 2026-12-28 (+79d) |  | 37.5d → -30.5d |
| MV | **Medium Voltage Network** | 2026-06-23 → 2026-09-15 (+84d) | 2026-12-05 → 2027-02-15 (+72d) |  |  |
| PO | **Issuance of Purchase Orders** | 2026-06-23 → 2026-09-15 (+84d) | 2026-07-21 → 2026-09-29 (+70d) |  |  |
| 1 | **Cabling Works** | 2026-06-23 → 2026-09-15 (+84d) | 2026-07-06 → 2026-09-29 (+85d) |  |  |
| PRO-MV-PO-100 | Issuance of Purchase Order for Medium Voltage Cables of Medium Voltage Network | 2026-06-23 → 2026-09-15 (+84d) | 2026-07-06 → 2026-09-29 (+85d) |  | 36.75d → -35.25d |
| 3 | **Termination and Testing Works** | 2026-07-08 → 2026-09-15 (+69d) | 2026-07-21 → 2026-09-29 (+70d) |  |  |
| PRO-MV-PO-120 | Issuance of Purchase Order for Termination and Joints Kits of Medium Voltage Network | 2026-07-08 → 2026-09-15 (+69d) | 2026-07-21 → 2026-09-29 (+70d) |  | 16.25d → -42.75d |
| MF | **Manufacturing of Material** | 2026-07-07 → 2026-09-30 (+85d) | 2026-10-19 → 2026-12-28 (+70d) |  |  |
| 1 | **Cabling Works** | 2026-07-07 → 2026-09-30 (+85d) | 2026-09-04 → 2026-11-28 (+85d) |  |  |
| PRO-MV-MF-100 | Manufacturing of Medium Voltage Cables for Medium Voltage Network | 2026-07-07 → 2026-09-30 (+85d) | 2026-09-04 → 2026-11-28 (+85d) |  | 42.5d → -42.5d |
| 3 | **Termination and Testing Works** | 2026-07-22 → 2026-09-30 (+70d) | 2026-10-19 → 2026-12-28 (+70d) |  |  |
| PRO-MV-MF-110 | Manufacturing of Termination and Joints Kits for Medium Voltage Network | 2026-07-22 → 2026-09-30 (+70d) | 2026-10-19 → 2026-12-28 (+70d) |  | 19d → -51d |
| 1DL | **1st Material Delivery & Site Inspection** | 2026-09-05 → 2026-11-29 (+85d) | 2026-11-04 → 2027-01-13 (+70d) |  |  |
| 1 | **Cabling Works** | 2026-09-05 → 2026-11-29 (+85d) | 2026-09-17 → 2026-12-12 (+86d) |  |  |
| PRO-MV-1DL-100 | 1ST Material Delivery for Medium Voltage Cables of Medium Voltage Network | 2026-09-05 → 2026-11-29 (+85d) | 2026-09-17 → 2026-12-12 (+86d) |  | 35.5d → -36.5d |
| 3 | **Termination and Testing Works** | 2026-10-20 → 2026-12-29 (+70d) | 2026-11-04 → 2027-01-13 (+70d) |  |  |
| PRO-MV-1DL-120 | 1ST Material Delivery for Termination and Joints Kits of Medium Voltage Network | 2026-10-20 → 2026-12-29 (+70d) | 2026-11-04 → 2027-01-13 (+70d) |  | 16d → -44d |
| DL | **Material Delivery & Site Inspection** | 2026-09-19 → 2026-12-13 (+85d) | 2026-12-05 → 2027-02-15 (+72d) |  |  |
| 1 | **Cabling Works** | 2026-09-19 → 2026-12-13 (+85d) | 2026-09-19 → 2026-12-13 (+85d) |  |  |
| PRO-MV-DL-100 | Material Delivery & Site Inspection of Medium Voltage Cables for Medium Voltage Network | 2026-09-19 → 2026-12-13 (+85d) | 2026-09-19 → 2026-12-13 (+85d) |  | 35.5d → -36.5d |
| 3 | **Termination and Testing Works** | 2026-11-05 → 2027-01-14 (+70d) | 2026-12-05 → 2027-02-15 (+72d) |  |  |
| PRO-MV-DL-110 | Material Delivery & Site Inspection of Termination and Joints Kits for Medium Voltage Network | 2026-11-05 → 2027-01-14 (+70d) | 2026-12-05 → 2027-02-15 (+72d) |  | 16d → -44d |
| SL | **Low Voltage and Street Lighting Network** | 2026-06-23 → 2026-09-15 (+84d) | 2027-01-28 → 2027-04-17 (+79d) |  |  |
| PO | **Issuance of Purchase Orders** | 2026-06-23 → 2026-09-15 (+84d) | 2026-08-06 → 2026-09-27 (+52d) |  |  |
| 1 | **Cabling Works** | 2026-06-23 → 2026-09-15 (+84d) | 2026-06-29 → 2026-09-21 (+84d) |  |  |
| PRO-SL-PO-100 | Issuance of Purchase Order for Lighting Cables of Street Lighting Network | 2026-06-23 → 2026-09-15 (+84d) | 2026-06-29 → 2026-09-21 (+84d) |  | 36.75d → -35.25d |
| 2 | **Lighting Poles Works** | 2026-06-23 → 2026-09-15 (+84d) | 2026-08-06 → 2026-09-21 (+46d) |  |  |
| PRO-SL-PO-110 | Issuance of Purchase Order for Lighting Poles Foundations of Street Lighting Network | 2026-06-23 → 2026-09-15 (+84d) | 2026-06-29 → 2026-09-21 (+84d) |  | 7.75d → -64.25d |
| PRO-SL-PO-120 | Issuance of Purchase Order for Lighting Poles of Street Lighting Network | 2026-06-23 → 2026-09-15 (+84d) | 2026-06-29 → 2026-09-21 (+84d) |  | 41.75d → -30.25d |
| PRO-SL-PO-140 | Issuance of Purchase Order for Lighting Fixtures of Street Lighting Network | 2026-08-01 → 2026-09-15 (+45d) | 2026-08-06 → 2026-09-21 (+46d) |  | 19.25d → -19.75d |
| 3 | **Distribution Panel Board** | 2026-06-23 → 2026-09-15 (+84d) | 2026-07-04 → 2026-09-27 (+85d) |  |  |
| PRO-SL-PO-160 | Issuance of Purchase Order for Distrubution Panel Boards of Street Lighting Network | 2026-06-23 → 2026-09-15 (+84d) | 2026-07-04 → 2026-09-27 (+85d) |  | 52.25d → -19.75d |
| 4 | **Earthing System Works** | 2026-07-07 → 2026-09-15 (+70d) | 2026-07-15 → 2026-09-24 (+71d) |  |  |
| PRO-SL-PO-150 | Issuance of Purchase Order for Lighting Earthing of Street Lighting Network | 2026-07-07 → 2026-09-15 (+70d) | 2026-07-15 → 2026-09-24 (+71d) |  | 28.25d → -31.75d |
| 5 | **Termination and Testing Works** | 2026-07-08 → 2026-09-15 (+69d) | 2026-07-16 → 2026-09-24 (+70d) |  |  |
| PRO-SL-PO-130 | Issuance of Purchase Order for Fuse Boxes of Street Lighting Network | 2026-07-08 → 2026-09-15 (+69d) | 2026-07-16 → 2026-09-24 (+70d) |  | 0d → -59d |
| PRO-SL-PO-170 | Issuance of Purchase Order for Cable Lugs of Street Lighting Network | 2026-07-08 → 2026-09-15 (+69d) | 2026-07-16 → 2026-09-24 (+70d) |  | 30.25d → -28.75d |
| MF | **Manufacturing of Material** | 2026-06-30 → 2026-09-22 (+84d) | 2026-12-12 → 2027-02-20 (+70d) |  |  |
| 1 | **Cabling Works** | 2026-06-30 → 2026-09-22 (+84d) | 2026-09-27 → 2026-12-20 (+84d) |  |  |
| PRO-SL-MF-100 | Manufacturing of Lighting Cables for Street Lighting Network | 2026-06-30 → 2026-09-22 (+84d) | 2026-09-27 → 2026-12-20 (+84d) |  | 42.5d → -41.5d |
| 2 | **Lighting Poles Works** | 2026-06-30 → 2026-09-22 (+84d) | 2026-12-12 → 2027-01-27 (+46d) |  |  |
| PRO-SL-MF-110 | Manufacturing of Lighting Poles Foundations for Street Lighting Network | 2026-06-30 → 2026-09-22 (+84d) | 2026-09-27 → 2026-12-20 (+84d) |  | 8.62d → -75.38d |
| PRO-SL-MF-120 | Manufacturing of Lighting Poles for Street Lighting Network | 2026-06-30 → 2026-09-22 (+84d) | 2026-09-27 → 2026-12-20 (+84d) |  | 48.5d → -35.5d |
| PRO-SL-MF-140 | Manufacturing of Lighting Fixtures for Street Lighting Network | 2026-08-07 → 2026-09-22 (+46d) | 2026-12-12 → 2027-01-27 (+46d) |  | 23d → -23d |
| 3 | **Distribution Panel Board** | 2026-07-05 → 2026-09-28 (+85d) | 2026-10-22 → 2027-01-15 (+85d) |  |  |
| PRO-SL-MF-160 | Manufacturing of Distrubution Panel Boards for Street Lighting Network | 2026-07-05 → 2026-09-28 (+85d) | 2026-10-22 → 2027-01-15 (+85d) |  | 60d → -25d |
| 4 | **Earthing System Works** | 2026-07-16 → 2026-09-25 (+71d) | 2026-12-02 → 2027-02-11 (+71d) |  |  |
| PRO-SL-MF-150 | Manufacturing of Lighting Earthing for Street Lighting Network | 2026-07-16 → 2026-09-25 (+71d) | 2026-12-02 → 2027-02-11 (+71d) |  | 33d → -38d |
| 5 | **Termination and Testing Works** | 2026-07-17 → 2026-09-25 (+70d) | 2026-12-12 → 2027-02-20 (+70d) |  |  |
| PRO-SL-MF-130 | Manufacturing of Fuse Boxes for Street Lighting Network | 2026-07-17 → 2026-09-25 (+70d) | 2026-12-12 → 2027-02-20 (+70d) |  | 0d → -70d |
| PRO-SL-MF-170 | Manufacturing of Cable Lugs for Street Lighting Network | 2026-07-17 → 2026-09-25 (+70d) | 2026-11-03 → 2027-01-12 (+70d) |  | 36d → -34d |
| 1DL | **1st Material Delivery & Site Inspection** | 2026-09-28 → 2026-12-21 (+84d) | 2026-12-29 → 2027-03-17 (+78d) |  |  |
| 1 | **Cabling Works** | 2026-09-28 → 2026-12-21 (+84d) | 2026-10-04 → 2026-12-27 (+84d) |  |  |
| PRO-SL-1DL-100 | 1ST Material Delivery for Lighting Cables of Street Lighting Network | 2026-09-28 → 2026-12-21 (+84d) | 2026-10-04 → 2026-12-27 (+84d) |  | 36.5d → -35.5d |
| 2 | **Lighting Poles Works** | 2026-09-28 → 2026-12-21 (+84d) | 2026-12-19 → 2027-02-03 (+46d) |  |  |
| PRO-SL-1DL-110 | 1ST Material Delivery for Lighting Poles Foundations of Street Lighting Network | 2026-09-28 → 2026-12-21 (+84d) | 2026-10-04 → 2026-12-27 (+84d) |  | 7.5d → -64.5d |
| PRO-SL-1DL-120 | 1ST Material Delivery for Lighting Poles of Street Lighting Network | 2026-09-28 → 2026-12-21 (+84d) | 2026-10-04 → 2026-12-27 (+84d) |  | 41.5d → -30.5d |
| PRO-SL-1DL-140 | 1ST Material Delivery for Lighting Fixtures of Street Lighting Network | 2026-12-13 → 2027-01-28 (+46d) | 2026-12-19 → 2027-02-03 (+46d) |  | 20d → -20d |

| ID | Task | Start | Finish | Complete | Total float | Predecessors |
| --- | --- | --- | --- | --- | --- | --- |
| 3 | **Distribution Panel Board** | 2026-10-24 → 2027-01-16 (+84d) | 2026-10-29 → 2027-01-21 (+84d) |  |  |  |
| PRO-SL-1DL-160 | 1ST Material Delivery for Distrubution Panel Boards of Street Lighting Network | 2026-10-24 → 2027-01-16 (+84d) | 2026-10-29 → 2027-01-21 (+84d) |  | 51d → -21d |  |
| 5 | **Termination and Testing Works** | 2026-11-03 → 2027-01-13 (+71d) | 2026-12-29 → 2027-03-17 (+78d) |  |  |  |
| PRO-SL-1DL-170 | 1ST Material Delivery for Cable Lugs of Street Lighting Network | 2026-11-03 → 2027-01-13 (+71d) | 2026-11-21 → 2027-01-30 (+70d) |  | 31.12d → -29d |  |
| PRO-SL-1DL-130 | 1ST Material Delivery for Fuse Boxes of Street Lighting Network | 2026-12-13 → 2027-02-21 (+70d) | 2026-12-29 → 2027-03-17 (+78d) |  | 0d → -57.25d |  |
| 4 | **Earthing System Works** | 2026-12-03 → 2027-02-13 (+72d) | 2026-12-09 → 2027-02-21 (+74d) |  |  |  |
| PRO-SL-1DL-150 | 1ST Material Delivery for Lighting Earthing of Street Lighting Network | 2026-12-03 → 2027-02-13 (+72d) | 2026-12-09 → 2027-02-21 (+74d) |  | 28d → -32d |  |
| DL | **Material Delivery & Site Inspection** | 2026-10-05 → 2026-12-28 (+84d) | 2027-01-28 → 2027-04-17 (+79d) |  |  |  |
| 1 | **Cabling Works** | 2026-10-05 → 2026-12-28 (+84d) | 2026-10-05 → 2026-12-28 (+84d) |  |  |  |
| PRO-R25-SL-DL-100 | Material Delivery & Site Inspection of Lighting Cables for Street Lighting Network | 2026-10-05 → 2026-12-28 (+84d) | 2026-10-05 → 2026-12-28 (+84d) |  | 36.5d → -35.5d |  |
| 2 | **Lighting Poles Works** | 2026-10-05 → 2026-12-28 (+84d) | 2026-12-20 → 2027-02-04 (+46d) |  |  |  |
| PRO-R25-SL-DL-110 | Material Delivery & Site Inspection of Lighting Poles Foundations for Street Lighting Network | 2026-10-05 → 2026-12-28 (+84d) | 2026-10-25 → 2027-01-17 (+84d) |  | 7.5d → -64.5d |  |
| PRO-R25-SL-DL-120 | Material Delivery & Site Inspection of Lighting Poles for Street Lighting Network | 2026-10-05 → 2026-12-28 (+84d) | 2026-10-05 → 2026-12-28 (+84d) |  | 41.5d → -30.5d |  |
| PRO-R25-SL-DL-140 | Material Delivery & Site Inspection of Lighting Fixtures for Street Lighting Network | 2026-12-20 → 2027-02-04 (+46d) | 2026-12-20 → 2027-02-04 (+46d) |  | 20d → -20d |  |
| 3 | **Distribution Panel Board** | 2026-10-31 → 2027-01-23 (+84d) | 2026-10-31 → 2027-01-23 (+84d) |  |  |  |
| PRO-R25-SL-DL-160 | Material Delivery & Site Inspection of Distrubution Panel Boards for Street Lighting Network | 2026-10-31 → 2027-01-23 (+84d) | 2026-10-31 → 2027-01-23 (+84d) |  | 51d → -21d |  |
| 4 | **Termination and Testing Works** | 2026-11-21 → 2027-01-31 (+71d) | 2027-01-28 → 2027-04-17 (+79d) |  |  |  |
| PRO-R25-SL-DL-170 | Material Delivery & Site Inspection of Cable Lugs for Street Lighting Network | 2026-11-21 → 2027-01-31 (+71d) | 2026-12-21 → 2027-03-08 (+77d) |  | 31.12d → -29d |  |
| PRO-R25-SL-DL-130 | Material Delivery & Site Inspection of Fuse Boxes for Street Lighting Network | 2026-12-30 → 2027-03-17 (+77d) | 2027-01-28 → 2027-04-17 (+79d) |  | 0d → -57.25d |  |
| 5 | **Earthing System Works** | 2026-12-10 → 2027-02-22 (+74d) | 2026-12-10 → 2027-02-22 (+74d) |  |  |  |
| PRO-R25-SL-DL-150 | Material Delivery & Site Inspection of Lighting Earthing for Street Lighting Network | 2026-12-10 → 2027-02-22 (+74d) | 2026-12-10 → 2027-02-22 (+74d) |  | 28d → -32d |  |
| TE | **Telecom Network** | 2026-07-07 → 2026-09-15 (+70d) | 2026-10-24 → 2027-01-02 (+70d) |  |  |  |
| PO | **Issuance of Purchase Orders** | 2026-07-07 → 2026-09-15 (+70d) | 2026-07-13 → 2026-09-21 (+70d) |  |  |  |
| 1 | **Ducts Works** | 2026-07-07 → 2026-09-15 (+70d) | 2026-07-13 → 2026-09-21 (+70d) |  |  |  |
| PRO-TE-PO-100 | Issuance of Purchase Order for Ducts forTelecom Network | 2026-07-07 → 2026-09-15 (+70d) | 2026-07-13 → 2026-09-21 (+70d) |  | 48.25d → -11.75d |  |
| 3 | **Manholes Works** | 2026-07-07 → 2026-09-15 (+70d) | 2026-07-13 → 2026-09-21 (+70d) |  |  |  |
| PRO-TE-PO-110 | Issuance of Purchase Order for Manholes forTelecom Network | 2026-07-07 → 2026-09-15 (+70d) | 2026-07-13 → 2026-09-21 (+70d) |  | 30.25d → -29.75d |  |
| 2 | **CCTV System Wroks** | 2026-07-07 → 2026-09-15 (+70d) | 2026-07-13 → 2026-09-21 (+70d) |  |  |  |
| PRO-CTV-PO-100 | Issuance of Purchase Order for Civil and Finishes Works of CCTV Complete System | 2026-07-07 → 2026-09-15 (+70d) | 2026-07-13 → 2026-09-21 (+70d) |  | 45d → -15d |  |
| MF | **Manufacturing of Material** | 2026-07-14 → 2026-09-22 (+70d) | 2026-10-11 → 2026-12-20 (+70d) |  |  |  |
| 1 | **Ducts Works** | 2026-07-14 → 2026-09-22 (+70d) | 2026-09-11 → 2026-11-20 (+70d) |  |  |  |
| PRO-TE-MF-100 | Manufacturing of Ducts for Telecom Network | 2026-07-14 → 2026-09-22 (+70d) | 2026-09-11 → 2026-11-20 (+70d) |  | 56d → -14d |  |
| 3 | **Manholes Works** | 2026-07-14 → 2026-09-22 (+70d) | 2026-10-11 → 2026-12-20 (+70d) |  |  |  |
| PRO-TE-MF-110 | Manufacturing of Manholes for Telecom Network | 2026-07-14 → 2026-09-22 (+70d) | 2026-10-11 → 2026-12-20 (+70d) |  | 35d → -35d |  |
| 2 | **CCTV System Wroks** | 2026-07-14 → 2026-09-22 (+70d) | 2026-10-11 → 2026-12-20 (+70d) |  |  |  |
| PRO-CTV-MF-100 | Manufacturing of Civil and Finishes Works for CCTV Complete System | 2026-07-14 → 2026-09-22 (+70d) | 2026-10-11 → 2026-12-20 (+70d) |  | 52d → -18d |  |
| 1DL | **1st Material Delivery & Site Inspection** | 2026-09-12 → 2026-11-21 (+70d) | 2026-10-22 → 2026-12-31 (+70d) |  |  |  |
| 1 | **Ducts Works** | 2026-09-12 → 2026-11-21 (+70d) | 2026-09-17 → 2026-11-26 (+70d) |  |  |  |
| PRO-TE-1DL-100 | 1ST Material Delivery for Ducts of Telecom Network | 2026-09-12 → 2026-11-21 (+70d) | 2026-09-17 → 2026-11-26 (+70d) |  | 47d → -12d |  |
| 3 | **Manholes Works** | 2026-10-12 → 2026-12-21 (+70d) | 2026-10-18 → 2026-12-27 (+70d) |  |  |  |
| PRO-TE-1DL-110 | 1ST Material Delivery for Manholes of Telecom Network | 2026-10-12 → 2026-12-21 (+70d) | 2026-10-18 → 2026-12-27 (+70d) |  | 30d → -30d |  |
| 2 | **CCTV System Wroks** | 2026-10-12 → 2026-12-21 (+70d) | 2026-10-22 → 2026-12-31 (+70d) |  |  |  |
| PRO-CTV-1DL-100 | 1ST Material Delivery for Civil and Finishes Works of CCTV Complete System | 2026-10-12 → 2026-12-21 (+70d) | 2026-10-22 → 2026-12-31 (+70d) |  | 45d → -15d |  |
| DL | **Material Delivery & Site Inspection** | 2026-09-19 → 2026-11-28 (+70d) | 2026-10-24 → 2027-01-02 (+70d) |  |  |  |
| 1 | **Ducts Works** | 2026-09-19 → 2026-11-28 (+70d) | 2026-09-19 → 2026-11-28 (+70d) |  |  |  |
| PRO-R25-TE-DL-100 | Material Delivery & Site Inspection for Ducts of Telecom Network | 2026-09-19 → 2026-11-28 (+70d) | 2026-09-19 → 2026-11-28 (+70d) |  | 47d → -12d |  |
| 3 | **Manholes Works** | 2026-10-19 → 2026-12-28 (+70d) | 2026-10-19 → 2026-12-28 (+70d) |  |  |  |
| PRO-R25-TE-DL-110 | Material Delivery & Site Inspection of Manholes for Telecom Network | 2026-10-19 → 2026-12-28 (+70d) | 2026-10-19 → 2026-12-28 (+70d) |  | 30d → -30d |  |
| 2 | **CCTV System Wroks** | 2026-10-24 → 2027-01-02 (+70d) | 2026-10-24 → 2027-01-02 (+70d) |  |  |  |
| PRO-R25-CTV-DL-100 | Material Delivery & Site Inspection of for Civil and Finishes Works of CCTV Complete System | 2026-10-24 → 2027-01-02 (+70d) | 2026-10-24 → 2027-01-02 (+70d) |  | 45d → -15d |  |
| 1 | **Superstructure Works** |  | 2026-10-11 → 2026-12-14 (+64d) |  |  |  |
| 1 | **Issuance of Purchase Orders** |  | 2026-07-13 → 2026-10-06 (+85d) |  |  |  |
| SL11 | **Storage Tank (TSE)** | 2026-07-01 → 2026-09-24 (+85d) | 2026-07-13 → 2026-10-06 (+85d) |  |  |  |
| PRO-TSE-CV-PO-30 | Issuance of Purchase Order for Civil Works for Storage Tank (TSE) | 2026-07-01 → 2026-09-24 (+85d) | 2026-07-13 → 2026-10-06 (+85d) |  | 13.25d → -58.75d |  |
| PRO-DPO-CV-PO-10 | Issuance of Purchase Order for Civil Works for Storm Drainage Ponds | 2026-06-23 A | 2026-07-04 A | 0% → 100% | 14.25d → none |  |
| SL12 | **Gaurd Room** | 2026-06-23 → 2026-09-15 (+84d) | 2026-07-05 → 2026-09-28 (+85d) |  |  |  |
| PRO-GR-CV-PO-40 | Issuance of Purchase Order for Civil Works for Gaurd Room | 2026-06-23 → 2026-09-15 (+84d) | 2026-07-05 → 2026-09-28 (+85d) |  | 25.75d → -46.25d |  |
| SL121 | **Fence** | 2026-06-23 → 2026-08-15 (+53d) | 2026-07-04 → 2026-08-27 (+54d) |  |  |  |
| PRO-FE-CV-PO-50 | Issuance of Purchase Order for Civil Works for Fence | 2026-06-23 → 2026-08-15 A (+53d) | 2026-07-04 → 2026-08-27 A (+54d) | 0% → 100% | -0.85d → none | ENG-MT-FE-CV-A-120 → ENG-MT-FE-CV-A-120 SS |
| 2 | **Manufacturing of Material** | 2026-06-23 → 2026-07-05 (+12d) | 2026-10-11 → 2026-12-13 (+63d) |  |  |  |
| SL | **Pump Stations** | 2026-06-23 → 2026-09-15 (+84d) | 2026-08-01 → 2026-10-24 (+84d) |  |  |  |
| PRO-SPS-CV-MF-10 | Manufacturing of Civil Works for Pump Stations | 2026-06-23 → 2026-09-15 (+84d) | 2026-08-01 → 2026-10-24 (+84d) |  | 28d → -56d |  |
| SL1 | **Lift Station** | 2026-06-23 → 2026-09-15 (+84d) | 2026-08-01 → 2026-10-24 (+84d) |  |  |  |
| PRO-LS-CV-MF-30 | Manufacturing of Civil Works for Civil Works for Lift Stations | 2026-06-23 → 2026-09-15 (+84d) | 2026-08-01 → 2026-10-24 (+84d) |  | 45d → 16d |  |
| PRO-DPO-CV-MF-10 | Manufacturing of Civil Works for Storm Drainage Ponds | 2026-07-05 A | 2026-09-02 A | 0% → 100% | 16d → none |  |
| SL11 | **Storage Tank (TSE)** | 2026-07-14 → 2026-10-07 (+85d) | 2026-08-22 → 2026-11-15 (+85d) |  |  |  |
| PRO-TSE-CV-MF-40 | Manufacturing of Civil Works for Civil Works for Storage Tank (TSE) | 2026-07-14 → 2026-10-07 (+85d) | 2026-08-22 → 2026-11-15 (+85d) |  | 15d → -70d |  |
| SL12 | **Gaurd Room** | 2026-07-05 → 2026-09-28 (+85d) | 2026-08-14 → 2026-11-07 (+85d) |  |  |  |
| PRO-GR-CV-MF-50 | Manufacturing of Civil Works for Civil Works for Gaurd Room | 2026-07-05 → 2026-09-28 (+85d) | 2026-08-14 → 2026-11-07 (+85d) |  | 29.75d → -55.5d |  |
| SL121 | **Fence** | 2026-07-04 → 2026-09-05 (+63d) | 2026-07-24 → 2026-09-10 (+48d) |  |  |  |

| ID | Task | Start | Finish | Complete | Total float | Predecessors | Other |
| --- | --- | --- | --- | --- | --- | --- | --- |
| PRO-FE-CV-MF-60 | Manufacturing of Civil Works for Civil Works for Fence | 2026-07-04 → 2026-09-05 A (+63d) | 2026-07-24 → 2026-09-10 A (+48d) | 0% → 100% | -1d → none | PRO-FE-CV-PO-50 → PRO-FE-CV-PO-50 FF, ENG-SH-GR-A-200_R |  |
| SL1211 | **Softscape and Planting Works** | 2026-07-13 → 2026-09-15 (+64d) | 2026-10-11 → 2026-12-13 (+63d) |  |  |  |  |
| PRO-FE-CV-MF-70 | Manufacturing of Civil Works for Softscape and Planting Works | 2026-07-13 → 2026-09-15 (+64d) | 2026-10-11 → 2026-12-13 (+63d) |  | 41.75d → -22d |  |  |
| 3 | **1st Material Delivery & Site Inspection** | 2026-08-02 → 2026-08-03 (+1d) | 2026-10-08 → 2026-11-21 (+44d) |  |  |  |  |
| SL | **Pump Stations** | 2026-08-02 → 2026-11-03 (+93d) | 2026-08-03 → 2026-11-04 (+93d) |  |  |  |  |
| PRO-SPS-CV-1DL-10 | 1ST Material Delivery for Civil Works for Pump Stations | 2026-08-02 → 2026-11-03 (+93d) | 2026-08-03 → 2026-11-04 (+93d) |  | 24.04d → -55d | PRO-SPS-CV-MF-10 → PRO-SPS-CV-MF-10, CO-SW-ML-150, ENG-SH-SPS-A-160 |  |
| SL1 | **Lift Station** | 2026-08-02 → 2026-11-05 (+95d) | 2026-08-02 → 2026-11-05 (+95d) |  |  |  |  |
| PRO-LS-CV-1DL-40 | 1ST Material Delivery for Civil Works for Civil Works for Lift Stations | 2026-08-02 → 2026-11-05 (+95d) | 2026-08-02 → 2026-11-05 (+95d) |  | 39d → 4d | PRO-LS-CV-MF-30 → PRO-LS-CV-MF-30, CO-UB-PS-100 |  |
| TE | **Drainage Ponds** | 2026-09-03 → 2026-08-03 (-31d) | 2026-10-08 → 2026-08-22 (-47d) |  |  |  |  |
| PRO-DPO-CV-1DL-10 | 1ST Material Delivery for Civil Works for Drainage Ponds | 2026-09-03 → 2026-08-03 A (-31d) | 2026-10-08 → 2026-08-22 A (-47d) | 0% → 100% | 13d → none |  |  |
| SL11 | **Storage Tank (TSE)** | 2026-08-23 → 2026-11-16 (+85d) | 2026-08-23 → 2026-11-16 (+85d) |  |  |  |  |
| PRO-TSE-CV-1DL-50 | 1ST Material Delivery for Civil Works for Civil Works for Storage Tank (TSE) | 2026-08-23 → 2026-11-16 (+85d) | 2026-08-23 → 2026-11-16 (+85d) |  | 13d → -59d |  |  |
| SL12 | **Gaurd Room** | 2026-08-15 → 2026-11-07 (+84d) | 2026-08-27 → 2026-11-21 (+86d) |  |  |  |  |
| PRO-GR-CV-1DL-60 | 1ST Material Delivery for Civil Works for Civil Works for Gaurd Room | 2026-08-15 → 2026-11-07 (+84d) | 2026-08-27 → 2026-11-21 (+86d) |  | 25d → -46.5d |  |  |
| 4 | **Material Delivery & Site Inspection** | 2026-07-25 → 2026-08-02 (+8d) | 2026-10-11 → 2026-12-14 (+64d) |  |  |  |  |
| SL | **Pump Stations** | 2026-08-04 → 2026-08-02 (-2d) | 2026-08-04 → 2026-11-05 (+93d) |  |  |  |  |
| PRO-SPS-CV-DL-10 | Material Delivery & Site Inspection for Civil Works for Pump Stations | 2026-08-04 → 2026-08-02 A (-2d) | 2026-08-04 → 2026-11-05 (+93d) | 0% → 20% | 24.04d → -55d | PRO-SPS-CV-MF-10, PRO-SPS-CV-1DL-10 → PRO-SPS-CV-MF-10 FF, PRO-SPS-CV-1DL-10 FF |  |
| SL1 | **Lift Station** | 2026-08-03 → 2026-11-07 (+96d) | 2026-08-03 → 2026-11-07 (+96d) |  |  |  |  |
| PRO-LS-CV-DL-50 | Material Delivery & Site Inspection for Civil Works for Lift Stations | 2026-08-03 → 2026-11-07 (+96d) | 2026-08-03 → 2026-11-07 (+96d) |  | 39d → 4d | PRO-LS-CV-MF-30, PRO-LS-CV-1DL-40 → PRO-LS-CV-MF-30, PRO-LS-CV-1DL-40, CO-UB-PS-100 |  |
| TE | **Storm Drainage Ponds** | 2026-10-10 → 2026-08-02 (-69d) | 2026-10-10 → 2026-09-01 (-39d) |  |  |  |  |
| PRO-DPO-CV-DL-10 | Material Delivery & Site Inspection for Civil Works for Storm Drainage Ponds | 2026-10-10 → 2026-08-02 A (-69d) | 2026-10-10 → 2026-09-01 A (-39d) | 0% → 100% | 28d → none |  |  |
| SL11 | **Storage Tank (TSE)** | 2026-08-23 → 2026-11-16 (+85d) | 2026-08-23 → 2026-11-16 (+85d) |  |  |  |  |
| PRO-TSE-CV-DL-60 | Material Delivery & Site Inspection for Civil Works for Storage Tank (TSE) | 2026-08-23 → 2026-11-16 (+85d) | 2026-08-23 → 2026-11-16 (+85d) |  | 14d → -58d |  |  |
| SL12 | **Gaurd Room** | 2026-08-29 → 2026-11-21 (+84d) | 2026-08-29 → 2026-11-21 (+84d) |  |  |  |  |
| PRO-GR-CV-DL-70 | Material Delivery & Site Inspection for Civil Works for Gaurd Room | 2026-08-29 → 2026-11-21 (+84d) | 2026-08-29 → 2026-11-21 (+84d) |  | 25d → -46.5d |  | resources Slab on Grade; Slabs; Lightweight Concrete Roof insulation as per Architect's specification; Insulated brickwork. with expanded polystyrene 200mm thick; vertical straight wall complete with accessories .; Common brickwork. 150mm thick; vertical straight wall complete with accessories.; 2 perpendicular layers of cold bitumen coats; 2 layer of 4mm HDPE membrane, 2 perpendicular layers cold bitumen coats; 1 layer EPOXY Paint 300 micron; Membrane fully bonded to prime deck and upstand; Geotextile Filter membrane uv resistance; 85mm thick thermal insulation; 1.5mm thick epdm waterproofing membrane; CW01 - 4500 mm width x 3700 mm height; CW02 - 4500 mm width x 3700 mm height; CW03 - 4500 mm width x 3700 mm height; CW04 - 4500 mm width x 3700 mm height; CW05 - 7500 mm width x 4250 mm height; CW06 - 7500 mm width x 4250 mm height; W01 - 1000 mm width x 2000 mm height; W02 - 2000 mm width x 2000 mm height; W03 - 2000 mm width x 1000 mm height; D2 - 900 mm x 2200 mm height temper door; D3 - 950 mm x 2000 mm height temper door; Supply and install 300*300mm terrazzo tiles with 150mm high skirting at perimeter with approv; Supply and install 300*300mm glazed ceramic wall tiles on cement mortar and including rough; Supply and install internal plastering and 2 coats of acrylic paint at walls includin; Supply and install 300*300mm glazed ceramic wall tiles on cement mortar and including rough and smooth p; Supply and install 600*600mm porcelain tiles with approved quality on 30 mm mortar inclu; Supply and install 12.5mm thk, gypsum board suspended ceiling including s; Office Chairs; Office Tables; Guard Stand; Magnetic Control Access barrier, Automatic Vehicular Barriers to be installed on ground with magnetic access; Supply and install Hand Wash Basin with Water Tap, angle valve, P-trap connected to 50mm diameter s; Supply and install paper towel dispenser, surface mounted, satin finish stainless steel as per approv; Supply and install mirror, size 460*910mm as per approved sample including frames, backing and all accessories to complete.; Supply and install towel ring , surface mounted, satin finish stainless steel as per approved sample including accessories.; Kitchen sink with single bowl with hot/cold water mixer.; Supply and install Base mounted flush tank water Western water closet system with lid connected to 110mm soil pipe; Gate Valves; Slow Closing Valve; 1 meter length 10mm diameter Flexible Hose with insulated handle complete with fork support, index push, vacuum breaker; 50mm diameter; 75mm diameter; 80mm diameter; 100mm diameter; 110mm diameter; 13mm diameter; 15mm diameter; 20mm diameter; 25mm diameter; 32mm diameter; 40mm diameter; Isolation Valve Size 20; Isolation Valve Size 25; Isolation Valve Size 32; Isolation Valve Size 40; Isolation Valve Size 50; 20 mm diameter spray head for cold water supply; Supply and install Electric Water Heater set with connection; Water meter complete with accessories.; Roof drain; Vent on a roof to exhaust air; Floor drain 100x80mm; Gully trap 300x300 mm; inspection chamber, size 800x900x1000; Mini split actual capacity 2 Ton; Ducted split actual capacity 4 Ton; Supply, fabricate, install and testing factory fabricated metal ducts with flanges complete with supports, vanes,; Supplying, installation testing & commissioning of external insulation on ducts; Supply, fix, testing and commissioning of exhaust air/fresh air louvers of powder coated extruded aluminium construction.; Providing, fixing, testing and commissioning of powder coated extruded aluminum sections grills and diffusers with dampers.; Air Grills 150mm x150mm; Air Diffuser 600mm x 600mm; Supply, Installation & Testing of 2 hours Fire rated system for closing the openings between roo; 4.5 KG CO2 Type Fire Extinguishers; 6 KG ABC Type Fire Extinguishers; Floor cleanout, size 75 mm diameter; Floor cleanout, size 110 mm diameter; GRP water tanks capacity of each 1000 liter complete with all fittings, all valves and concrete pad; Guard Room 1; Guard Room 2; Guard Room 3; 30A, 2P AC Disconnect Switch; 20A Duplex Receptacle Floor Mounted; Twin Socket outlet; Twin Socket outlet, Weather Proof; Single gang Lighting switch; 2way Single gang Lighting switch; 36W LED linear Pendant lighting; 36W LED Emergency linear Pendant lighting; 13W recess mounted LED down light fitting; 13W recess emergency mounted LED down light fitting with 1.5 Hr Battery; 10.4W LED Exit light with 1.5 Hr Battery; 4mm2 Cu./FRLSZH Cable; 6mm2 Cu./FRLSZH Cable; 8 Port Industrial PoE Switch 10/100BaseT (0 deg to +70 deg. Celsius); 06C Optical Fiber SM; 48C Optical Fiber SM; 48 Core Splice Closure; Boom Barrier at Security Guard Room; Pedestrian turnstile at Security Guard Room; Access Control Unit; Access Card Reader; Magnetic Lock; Break Glass; Exit Push button; Door Sensor; Biometrics Reader; Pole/Bollard mounted IP( PoE), Automatic Number Plate Recognition (ANPR, camera, 5MP,IP 66, IR illumin; 12U rack dimension (W x H x L) 600 x 625 x 600 mm; Fire Alarm Control panel with fire alarm zoning with Mimic panel with fire alarm zoning; Main Fire Alarm Control panel with fire alarm zoning with Mimic panel with fire alarm zoning; Supply and installation of the addressable manual call point with operation safety glass breaking and pushbutton; Supply and installation of the photoelectric heat & smoke detector with base; Sounder With Beacon; Addressable Control module for Sounders; Addressable Control module for HVAC System; Addressable Monitor module for HVAC System; 2C x 1.5 Sqm FR Rated Armored - Cable For Loop Wiring; DACT (Auto - Dailer) for 24x7 Civil Defence; Transmission Communication cable - Fiber Optics 12Core; Transmission Communication cable - Ethernet Cable; Supply, install to site and installation of power supply system for fire alarm control panel; Supply, install to site and installation of power cable; Fire Fighter s Telephone Centre; Fireman s Telephone Jack; Voice Command Center → Slab on Grade; Slabs; Lightweight Concrete Roof insulation as per Architect's specification; Insulated brickwork. with expanded polystyrene 200mm thick; vertical straight wall complete with accessories .; Common brickwork. 150mm thick; vertical straight wall complete with accessories.; 2 perpendicular layers of cold bitumen coats; 2 layer of 4mm HDPE membrane, 2 perpendicular layers cold bitumen coats; 1 layer EPOXY Paint 300 micron; Membrane fully bonded to prime deck and upstand; Geotextile Filter membrane uv resistance; 85mm thick thermal insulation; 1.5mm thick epdm waterproofing membrane; CW01 - 4500 mm width x 3700 mm height; CW02 - 4500 mm width x 3700 mm height; CW03 - 4500 mm width x 3700 mm height; CW04 - 4500 mm width x 3700 mm height; CW05 - 7500 mm width x 4250 mm height; CW06 - 7500 mm width x 4250 mm height; W01 - 1000 mm width x 2000 mm height; W02 - 2000 mm width x 2000 mm height; W03 - 2000 mm width x 1000 mm height; D2 - 900 mm x 2200 mm height temper door; D3 - 950 mm x 2000 mm height temper door; Supply and install 300*300mm terrazzo tiles with 150mm high skirting at perimeter with approv; Supply and install 300*300mm glazed ceramic wall tiles on cement mortar and including rough; Supply and install internal plastering and 2 coats of acrylic paint at walls includin; Supply and install 300*300mm glazed ceramic wall tiles on cement mortar and including rough and smooth p; Supply and install 600*600mm porcelain tiles with approved quality on 30 mm mortar inclu; Supply and install 12.5mm thk, gypsum board suspended ceiling including s; Office Chairs; Office Tables; Guard Stand; Magnetic Control Access barrier, Automatic Vehicular Barriers to be installed on ground with magnetic access; Supply and install Hand Wash Basin with Water Tap, angle valve, P-trap connected to 50mm diameter s; Supply and install paper towel dispenser, surface mounted, satin finish stainless steel as per approv; Supply and install mirror, size 460*910mm as per approved sample including frames, backing and all accessories to complete.; Supply and install towel ring , surface mounted, satin finish stainless steel as per approved sample including accessories.; Kitchen sink with single bowl with hot/cold water mixer.; Supply and install Base mounted flush tank water Western water closet system with lid connected to 110mm soil pipe; Gate Valves; Slow Closing Valve; 1 meter length 10mm diameter Flexible Hose with insulated handle complete with fork support, index push, vacuum breaker; 50mm diameter; 75mm diameter; 80mm diameter; 100mm diameter; 110mm diameter; 13mm diameter; 15mm diameter; 20mm diameter; 25mm diameter; 32mm diameter; 40mm diameter; Isolation Valve Size 20; Isolation Valve Size 25; Isolation Valve Size 32; Isolation Valve Size 40; Isolation Valve Size 50; 20 mm diameter spray head for cold water supply; Supply and install Electric Water Heater set with connection; Water meter complete with accessories.; Roof drain; Vent on a roof to exhaust air; Floor drain 100x80mm; Gully trap 300x300 mm; inspection chamber, size 800x900x1000; Mini split actual capacity 2 Ton; Ducted split actual capacity 4 Ton; Supply, fabricate, install and testing factory fabricated metal ducts with flanges complete with supports, vanes,; Supplying, installation testing & commissioning of external insulation on ducts; Supply, fix, testing and commissioning of exhaust air/fresh air louvers of powder coated extruded aluminium construction.; Providing, fixing, testing and commissioning of powder coated extruded aluminum sections grills and diffusers with dampers.; Air Grills 150mm x150mm; Air Diffuser 600mm x 600mm; Supply, Installation & Testing of 2 hours Fire rated system for closing the openings between roo; 4.5 KG CO2 Type Fire Extinguishers; 6 KG ABC Type Fire Extinguishers; Floor cleanout, size 75 mm diameter; Floor cleanout, size 110 mm diameter; GRP water tanks capacity of each 1000 liter complete with all fittings, all valves and concrete pad; Guard Room 1; Guard Room 2; Guard Room 3; 30A, 2P AC Disconnect Switch; 20A Duplex Receptacle Floor Mounted; Twin Socket outlet; Twin Socket outlet, Weather Proof; Single gang Lighting switch; 2way Single gang Lighting switch; 36W LED linear Pendant lighting; 36W LED Emergency linear Pendant lighting; 13W recess mounted LED down light fitting; 13W recess emergency mounted LED down light fitting with 1.5 Hr Battery; 10.4W LED Exit light with 1.5 Hr Battery; 4mm2 Cu./FRLSZH Cable; 6mm2 Cu./FRLSZH Cable; 8 Port Industrial PoE Switch 10/100BaseT (0 deg to +70 deg. Celsius); 06C Optical Fiber SM; 48C Optical Fiber SM; 48 Core Splice Closure; Boom Barrier at Security Guard Room; Pedestrian turnstile at Security Guard Room; Access Control Unit; Access Card Reader; Magnetic Lock; Break Glass; Exit Push button; Door Sensor; Biometrics Reader; Pole/Bollard mounted IP( PoE), Automatic Number Plate Recognition (ANPR, camera, 5MP,IP 66, IR illumin; 12U rack dimension (W x H x L) 600 x 625 x 600 mm; Fire Alarm Control panel with fire alarm zoning with Mimic panel with fire alarm zoning; Main Fire Alarm Control panel with fire alarm zoning with Mimic panel with fire alarm zoning; Supply and installation of the addressable manual call point with operation safety glass breaking and pushbutton; Supply and installation of the photoelectric heat & smoke detector with base; Sounder With Beacon; Addressable Control module for Sounders; Addressable Control module for HVAC System; Addressable Monitor module for HVAC System; 2C x 1.5 Sqm FR Rated Armored - Cable For Loop Wiring; DACT (Auto - Dailer) for 24x7 Civil Defence; Transmission Communication cable - Fiber Optics 12Core; Transmission Communication cable - Ethernet Cable; Supply, install to site and installation of power supply system for fire alarm control panel; Supply, install to site and installation of power cable; Fire Fighter’s Telephone Centre; Fireman’s Telephone Jack; Voice Command Center |
| SL121 | **Fence** | 2026-07-25 → 2026-08-02 (+8d) | 2026-07-25 → 2026-09-15 (+52d) |  |  |  |  |
| PRO-FE-CV-DL-80 | Material Delivery & Site Inspection for Civil Works for Fence | 2026-07-25 → 2026-08-02 A (+8d) | 2026-07-25 → 2026-09-15 (+52d) | 0% → 80% | -0.15d → -33.5d | PRO-FE-CV-MF-60 SS+10d, PRO-FE-CV-MF-60 FF → PRO-FE-CV-MF-60 |  |
| SL1211 | **Softscape and Planting Works** | 2026-10-11 → 2026-12-14 (+64d) | 2026-10-11 → 2026-12-14 (+64d) |  |  |  |  |
| PRO-FE-CV-DL-90 | Material Delivery & Site Inspection for Softscape and Planting Works | 2026-10-11 → 2026-12-14 (+64d) | 2026-10-11 → 2026-12-14 (+64d) |  | 35.75d → -19d |  |  |
| LL | **Long Lead Time Items** | 2026-06-23 → 2026-09-15 (+84d) | 2026-12-23 → 2027-03-28 (+95d) |  |  |  |  |
| 2 | **Infrastructure Networks** | 2026-06-23 → 2026-09-15 (+84d) | 2026-10-31 → 2027-01-25 (+86d) |  |  |  |  |
| 2 | **CCTV System Wroks of Telecom Network** | 2026-06-23 → 2026-09-15 (+84d) | 2026-10-31 → 2027-01-25 (+86d) |  |  |  |  |
| 3 | **Issuance of Purchase Orders** | 2026-06-23 → 2026-09-15 (+84d) | 2026-07-15 → 2026-10-08 (+85d) |  |  |  |  |
| PRO-CTV-LL-PO-10 | Issuance of Purchase Order for Low Current Works of CCTV Complete System with All Accessories | 2026-06-23 → 2026-09-15 (+84d) | 2026-07-15 → 2026-10-08 (+85d) |  | 43d → -29d |  |  |
| 1 | **Manufacturing of Material** | 2026-07-16 → 2026-10-09 (+85d) | 2026-10-13 → 2027-01-06 (+85d) |  |  |  |  |
| PRO-CTV-LL-MF-10 | Manufacturing of Low Current Works for CCTV Complete System with All Accessories | 2026-07-16 → 2026-10-09 (+85d) | 2026-10-13 → 2027-01-06 (+85d) |  | 50d → -35d |  |  |
| 2 | **Material Shipping/Custom Clearance/Delivery** | 2026-10-13 → 2027-01-07 (+86d) | 2026-10-31 → 2027-01-24 (+85d) |  |  |  |  |
| PRO-CTV-LL-SH/DL-10 | Material Delivery for Low Current Works of CCTV Complete System with All Accessories | 2026-10-13 → 2027-01-07 (+86d) | 2026-10-31 → 2027-01-24 (+85d) |  | 43.12d → -30d |  |  |
| 4 | **Material Site Inspection** | 2026-10-31 → 2027-01-25 (+86d) | 2026-10-31 → 2027-01-25 (+86d) |  |  |  |  |
| PRO-CTV-LL-MSI-10 | Material Site Inspection for Low Current Works of CCTV Complete System with All Accessories | 2026-10-31 → 2027-01-25 (+86d) | 2026-10-31 → 2027-01-25 (+86d) |  | 43.12d → -30d |  |  |
| 1 | **Superstructure Works** | 2026-07-04 → 2026-09-26 (+84d) | 2026-12-23 → 2027-03-28 (+95d) |  |  |  |  |
| SL | **Pump Stations** | 2026-07-04 → 2026-09-26 (+84d) | 2026-12-20 → 2027-03-24 (+94d) |  |  |  |  |
| 1 | **Issuance of Purchase Orders** | 2026-07-04 → 2026-09-26 (+84d) | 2026-08-06 → 2026-10-29 (+84d) |  |  |  |  |
| PRO-SPS-LL-PO-10 | Issuance of Purchase Order for Electromechanical Works for Pump Stations | 2026-07-04 → 2026-09-26 (+84d) | 2026-08-06 → 2026-10-29 (+84d) |  | 31.25d → -39.75d |  |  |
| 2 | **Manufacturing of Material** | 2026-08-07 → 2026-10-30 (+84d) | 2026-10-05 → 2026-12-28 (+84d) |  |  |  |  |
| PRO-SPS-LL-MF-10 | Manufacturing of Electromechanical Works for Pump Stations | 2026-08-07 → 2026-10-30 (+84d) | 2026-10-05 → 2026-12-28 (+84d) |  | 37d → -47d |  |  |
| 3 | **Material Shipping/Custom Clearance/Delivery** | 2026-10-06 → 2026-12-29 (+84d) | 2026-11-09 → 2027-02-01 (+84d) |  |  |  |  |
| PRO-SPS-LL-SH/DL-10 | Material Delivery for Electromechanical Works for Pump Stations | 2026-10-06 → 2026-12-29 (+84d) | 2026-11-09 → 2027-02-01 (+84d) |  | 32d → -40d |  |  |
| 4 | **Material Site Inspection** | 2026-11-10 → 2027-02-02 (+84d) | 2026-12-20 → 2027-03-24 (+94d) |  |  |  |  |
| PRO-SPS-LL-MSI-10 | Material Site Inspection for Electromechanical Works for Pump Stations | 2026-11-10 → 2027-02-02 (+84d) | 2026-12-20 → 2027-03-24 (+94d) |  | 32d → -40d |  |  |
| SL1 | **Lift Stations** | 2026-07-04 → 2026-09-26 (+84d) | 2026-12-23 → 2027-03-28 (+95d) |  |  |  |  |
| 1 | **Issuance of Purchase Orders** | 2026-07-04 → 2026-09-26 (+84d) | 2026-08-06 → 2026-10-29 (+84d) |  |  |  |  |
| PRO-LS-LL-PO-20 | Issuance of Purchase Order for Electromechanical Works for Lift Stations | 2026-07-04 → 2026-09-26 (+84d) | 2026-08-06 → 2026-10-29 (+84d) |  | 18.25d → -52.75d |  |  |
| 2 | **Manufacturing of Material** | 2026-08-07 → 2026-10-30 (+84d) | 2026-10-05 → 2026-12-28 (+84d) |  |  |  |  |
| PRO-LS-LL-MF-20 | Manufacturing of Electromechanical Works for Lift Stations | 2026-08-07 → 2026-10-30 (+84d) | 2026-10-05 → 2026-12-28 (+84d) |  | 22d → -62d |  |  |
| 3 | **Material Shipping/Custom Clearance/Delivery** | 2026-10-06 → 2026-12-29 (+84d) | 2026-11-09 → 2027-02-01 (+84d) |  |  |  |  |
| PRO-LS-LL-SH/DL-20 | Material Delivery for Electromechanical Works for Lift Stations | 2026-10-06 → 2026-12-29 (+84d) | 2026-11-09 → 2027-02-01 (+84d) |  | 19d → -53d |  |  |
| 4 | **Material Site Inspection** | 2026-11-10 → 2027-02-02 (+84d) | 2026-12-23 → 2027-03-28 (+95d) |  |  |  |  |
| PRO-LS-LL-MSI-20 | Material Site Inspection for Electromechanical Works for Lift Stations | 2026-11-10 → 2027-02-02 (+84d) | 2026-12-23 → 2027-03-28 (+95d) |  | 19d → -53d |  |  |
| SL2 | **Storage Tank (TSE)** | 2026-07-04 → 2026-09-26 (+84d) | 2026-12-23 → 2027-03-28 (+95d) |  |  |  |  |
| 1 | **Issuance of Purchase Orders** | 2026-07-04 → 2026-09-26 (+84d) | 2026-08-06 → 2026-10-29 (+84d) |  |  |  |  |
| PRO-TSE-LL-PO-30 | Issuance of Purchase Order for Electromechanical Works for Storage Tank (TSE) | 2026-07-04 → 2026-09-26 (+84d) | 2026-08-06 → 2026-10-29 (+84d) |  | 18.25d → -52.75d |  |  |
| 2 | **Manufacturing of Material** | 2026-08-07 → 2026-10-30 (+84d) | 2026-10-05 → 2026-12-28 (+84d) |  |  |  |  |
| PRO-TSE-LL-MF-30 | Manufacturing of Electromechanical Works for Storage Tank (TSE) | 2026-08-07 → 2026-10-30 (+84d) | 2026-10-05 → 2026-12-28 (+84d) |  | 22d → -62d |  |  |
| 3 | **Material Shipping/Custom Clearance/Delivery** | 2026-10-06 → 2026-12-29 (+84d) | 2026-11-09 → 2027-02-01 (+84d) |  |  |  |  |
| PRO-TSE-LL-SH/DL-30 | Material Delivery for Electromechanical Works for Storage Tank (TSE) | 2026-10-06 → 2026-12-29 (+84d) | 2026-11-09 → 2027-02-01 (+84d) |  | 19d → -53d |  |  |
| 4 | **Material Site Inspection** | 2026-11-10 → 2027-02-02 (+84d) | 2026-12-23 → 2027-03-28 (+95d) |  |  |  |  |
| PRO-TSE-LL-MSI-30 | Material Site Inspection for Electromechanical Works for Storage Tank (TSE) | 2026-11-10 → 2027-02-02 (+84d) | 2026-12-23 → 2027-03-28 (+95d) |  | 19d → -53d |  |  |
| CON | **Construction Works** |  | 2027-02-23 → 2027-05-12 (+78d) |  |  |  |  |
| INF | **Infrastructure Networks** |  | 2027-02-14 → 2027-05-12 (+87d) |  |  |  |  |

| ID | Task | Start | Finish | Complete | Total float | Predecessors |
| --- | --- | --- | --- | --- | --- | --- |
| EW | **Earthworks** |  | 2026-08-01 → 2026-10-04 (+64d) |  |  |  |
| EW | **Earthworks** |  | 2026-08-01 → 2026-10-04 (+64d) |  |  |  |
| CO-EW-110_R | Embankments Works Upto Design Level for Earthworks(Remaining) | 2026-07-13 → 2026-08-02 A (+20d) | 2026-08-01 → 2026-10-04 (+64d) | 0% → 40% | 0d → -55d |  |
| CO-EW-200_R | Excavation Works Upto Design Level for Earthworks-P1(Remaining) | 2026-07-01 → 2026-08-02 A (+32d) | 2026-07-13 → 2026-09-27 (+76d) | 0% → 65% | 0d → -55d |  |
| CO-EW-210_R | Excavation Works Upto Design Level for Earthworks-P2(Remaining) | 2026-07-01 → 2026-08-02 A (+32d) | 2026-07-13 → 2026-09-27 (+76d) | 0% → 70% | 4.65d → -55d |  |
| CO-EW-220_R | Excavation Works Upto Design Level for Earthworks-P3(Remaining) | 2026-07-01 → 2026-08-02 A (+32d) | 2026-07-15 → 2026-09-29 (+76d) | 0% → 60% | 9.65d → -55d |  |
| SD | **Storm Drainage Network** | 2026-07-13 → 2026-08-02 (+20d) | 2026-11-01 → 2027-01-24 (+84d) |  |  |  |
| MH25-MH12 | **FROM MH-25:MH-12** | 2026-07-13 → 2026-08-02 (+20d) | 2026-09-30 → 2026-12-23 (+84d) |  |  |  |
| ML | **Main Line Sections** | 2026-07-13 → 2026-08-02 (+20d) | 2026-08-03 → 2026-10-13 (+71d) |  |  |  |
| CO-SD-ML-100 | Trench Excavation and Bedding Works for Main Lines of Storm Drainage Network | 2026-07-13 → 2026-08-02 A (+20d) | 2026-07-16 → 2026-10-01 (+77d) | 0% → 3% | 4.65d → -52d | CO-EW-200_R SS+10d, CO-EW-110_R SS, ENG-SH-SD-ML-A-110, ENG-MT-SD-ML-A-110, PRO-SD-1DL-110 SS, CO-EW-220_R SS, CO-EW-210_R → CO-EW-200_R SS+10d, CO-EW-110_R SS, ENG-SH-SD-ML-A-110, ENG-MT-SD-ML-A-110, CO-EW-220_R SS, PRO-SD-1DL-110 FF, CO-EW-210_R SS |
| CO-SD-ML-120 | Pipes Laying Works for Main Lines of Storm Drainage Network | 2026-07-16 → 2026-08-02 A (+17d) | 2026-07-22 → 2026-10-07 (+77d) | 0% → 3% | 4.65d → -53d | CO-SD-ML-100, PRO-R25-SD-DL-120, CO-EW-210_R → CO-SD-ML-100 SS, PRO-R25-SD-DL-120 SS, CO-EW-210_R SS |
| CO-SD-ML-130 | Trench Backfilling and Compaction Works for Main Lines of Storm Drainage Network | 2026-07-22 → 2026-08-02 A (+11d) | 2026-08-03 → 2026-10-13 (+71d) | 0% → 3% | 4.65d → -53d | CO-SD-ML-120, CO-EW-210_R, CO-EW-220_R, PRO-R25-SD-DL-120 → CO-SD-ML-120 SS, CO-EW-210_R SS, CO-EW-220_R SS, PRO-R25-SD-DL-120 SS |
| MH | **Manholes** | 2026-08-09 → 2026-11-01 (+84d) | 2026-09-06 → 2026-11-30 (+85d) |  |  |  |
| CO-SD-MH-180 | Trench Excavation and Bedding Works for Manholes of Storm Drainage Network | 2026-08-09 → 2026-11-01 (+84d) | 2026-08-16 → 2026-11-09 (+85d) |  | 0d → -71.2d |  |
| CO-SD-MH-190 | Install RC Footing Works for Manholes of Storm Drainage Network | 2026-08-17 → 2026-11-09 (+84d) | 2026-08-24 → 2026-11-17 (+85d) |  | 0d → -71.2d |  |
| CO-SD-MH-200 | Install RC Wall Rings & Slab Works for Manholes of Storm Drainage Network | 2026-08-25 → 2026-11-17 (+84d) | 2026-08-29 → 2026-11-22 (+85d) |  | 0d → -71.2d |  |
| CO-SD-MH-220 | Backfilling Works for Manholes of Storm Drainage Network | 2026-08-30 → 2026-11-22 (+84d) | 2026-09-06 → 2026-11-30 (+85d) |  | 0d → -71.2d | CO-SD-MH-200, CO-SD-ML-130 FF → CO-SD-MH-200, CO-SD-ML-130 FF, ENG-SH-DPO-A-120 |
| CB | **Catch Basin Sections** | 2026-08-17 → 2026-11-09 (+84d) | 2026-09-30 → 2026-12-23 (+84d) |  |  |  |
| CO-SD-CB-140 | Trench Excavation and Bedding Works for Catch Basins of Storm Drainage Network | 2026-08-17 → 2026-11-09 (+84d) | 2026-08-27 → 2026-11-21 (+86d) |  | 8d → -63.2d |  |
| CO-SD-CB-150 | Installation and Pipes Laying Connection Works for Catch Basins of Storm Drainage Network | 2026-09-07 → 2026-11-30 (+84d) | 2026-09-17 → 2026-12-12 (+86d) |  | 0d → -71.2d |  |
| CO-SD-CB-170 | Trench Backfilling and Compaction Works for Catch Basins of Storm Drainage Network | 2026-09-19 → 2026-12-12 (+84d) | 2026-09-30 → 2026-12-23 (+84d) |  | 0d → -71.2d | CO-SD-CB-150, CO-SD-ML-130 FF, CO-SD-MH-220 → CO-SD-CB-150, CO-SD-ML-130 FF, CO-SD-MH-220, ENG-SH-DPO-A-120 |
| MH25-MH121 | **FROM MH-12:MH-01** | 2026-08-01 → 2026-10-05 (+65d) | 2026-11-01 → 2027-01-24 (+84d) |  |  |  |
| ML | **Main Line Sections** | 2026-08-01 → 2026-10-05 (+65d) | 2026-09-27 → 2026-11-29 (+63d) |  |  |  |
| CO-SD-ML-140 | Trench Excavation and Bedding Works for Main Lines of Storm Drainage Network | 2026-08-01 → 2026-10-05 (+65d) | 2026-08-17 → 2026-10-20 (+64d) |  | 9.5d → -54d |  |
| CO-SD-ML-150 | Pipes Laying Works for Main Lines of Storm Drainage Network | 2026-08-17 → 2026-10-21 (+65d) | 2026-09-02 → 2026-11-05 (+64d) |  | 9.5d → -54d |  |
| CO-SD-ML-160 | Trench Backfilling and Compaction Works for Main Lines of Storm Drainage Network | 2026-09-02 → 2026-11-07 (+66d) | 2026-09-27 → 2026-11-29 (+63d) |  | 21.5d → -42d | CO-SD-ML-150, CO-SD-ML-130 → CO-SD-ML-150, CO-SD-ML-130, ENG-SH-DPO-A-120 |
| MH | **Manholes** | 2026-09-02 → 2026-11-09 (+68d) | 2026-10-11 → 2026-12-16 (+66d) |  |  |  |
| CO-SD-MH-230 | Trench Excavation and Bedding Works for Manholes of Storm Drainage Network | 2026-09-02 → 2026-11-09 (+68d) | 2026-09-13 → 2026-11-19 (+67d) |  | 9.5d → -56.2d |  |
| CO-SD-MH-240 | Install RC Footing Works for Manholes of Storm Drainage Network | 2026-09-13 → 2026-11-19 (+67d) | 2026-09-21 → 2026-11-28 (+68d) |  | 9.5d → -56.2d |  |
| CO-SD-MH-250 | Install RC Wall Rings & Slab Works for Manholes of Storm Drainage Network | 2026-09-21 → 2026-11-28 (+68d) | 2026-09-30 → 2026-12-06 (+67d) |  | 9.5d → -56.2d |  |
| CO-SD-MH-260 | Backfilling Works for Manholes of Storm Drainage Network | 2026-09-30 → 2026-12-06 (+67d) | 2026-10-11 → 2026-12-16 (+66d) |  | 9.5d → -56.2d | CO-SD-MH-250, CO-SD-ML-160 FF, CO-SD-MH-220 → CO-SD-MH-250, CO-SD-ML-160 FF, CO-SD-MH-220, ENG-SH-DPO-A-120 |
| CB | **Catch Basin Sections** | 2026-10-01 → 2026-12-23 (+83d) | 2026-11-01 → 2027-01-24 (+84d) |  |  |  |
| CO-SD-CB-180 | Trench Excavation and Bedding Works for Catch Basins of Storm Drainage Network | 2026-10-01 → 2026-12-23 (+83d) | 2026-10-11 → 2027-01-03 (+84d) |  | 0d → -71.2d |  |
| CO-SD-CB-190 | Installation and Pipes Laying Connection Works for Catch Basins of Storm Drainage Network | 2026-10-12 → 2027-01-03 (+83d) | 2026-10-21 → 2027-01-13 (+84d) |  | 0d → -71.2d | CO-SD-CB-180, CO-SD-CB-150 → CO-SD-CB-180, CO-SD-CB-150, CO-SD-MH-260, CO-SD-ML-160, CO-SD-CB-170, CO-SD-MH-220, CO-SW-ML-130, CO-SW-MH-200, CO-SW-ML-160, CO-SW-MH-250, ENG-SH-DPO-A-120 |
| CO-SD-CB-200 | Trench Backfilling and Compaction Works for Catch Basins of Storm Drainage Network | 2026-10-22 → 2027-01-13 (+83d) | 2026-11-01 → 2027-01-24 (+84d) |  | 0d → -71.2d | CO-SD-CB-190, CO-SD-ML-160 FF, CO-SD-CB-170, CO-SD-MH-260 → CO-SD-CB-190, CO-SD-ML-160 FF, CO-SD-CB-170, CO-SD-MH-260, CO-SD-PO-100-P1 |
| SW | **Sewage Network** | 2026-08-01 → 2026-10-05 (+65d) | 2026-10-12 → 2026-12-14 (+63d) |  |  |  |
| 2 | **FROM MH-18:MH-10** | 2026-08-01 → 2026-10-05 (+65d) | 2026-10-03 → 2026-12-05 (+63d) |  |  |  |
| ML | **Main Line Sections** | 2026-08-01 → 2026-10-05 (+65d) | 2026-09-21 → 2026-11-24 (+64d) |  |  |  |
| CO-SW-ML-100 | Trench Excavation and Bedding Works for Main Lines of Sewage Network | 2026-08-01 → 2026-10-05 (+65d) | 2026-08-15 → 2026-10-18 (+64d) |  | 0d → -55d |  |
| CO-SW-ML-120 | Pipes Laying Works for Main Lines of Sewage Network | 2026-08-15 → 2026-10-19 (+65d) | 2026-08-29 → 2026-11-01 (+64d) |  | 0d → -55d |  |
| CO-SW-ML-130 | Trench Backfilling and Compaction Works for Main Lines of Sewage Network | 2026-08-29 → 2026-11-02 (+65d) | 2026-09-21 → 2026-11-24 (+64d) |  | 3d → -52d | CO-SW-ML-120 → CO-SW-ML-120, ENG-SH-DPO-A-120 |
| 1 | **Manholes** | 2026-08-29 → 2026-11-02 (+65d) | 2026-10-03 → 2026-12-05 (+63d) |  |  |  |
| CO-SW-MH-160 | Excavation Works for Main Line Manholes of Sewage Network | 2026-08-29 → 2026-11-02 (+65d) | 2026-09-06 → 2026-11-09 (+64d) |  | 0d → -55d |  |
| CO-SW-MH-170 | Installation RC Footing Works for Main Line Manholes of Sewage Network | 2026-09-06 → 2026-11-10 (+65d) | 2026-09-14 → 2026-11-17 (+64d) |  | 1d → -54d |  |
| CO-SW-MH-180 | Install Grp Liner Wall Works for Main Line Manholes of Sewage Network | 2026-09-14 → 2026-11-18 (+65d) | 2026-09-22 → 2026-11-25 (+64d) |  | 1d → -54d |  |
| CO-SW-MH-190 | Pouring Grp Liner Wall Works for Main Line Manholes of Sewage Network | 2026-09-22 → 2026-11-26 (+65d) | 2026-09-28 → 2026-11-30 (+63d) |  | 4d → -51d |  |
| CO-SW-MH-200 | Backfilling Works for Main Line Manholes of Sewage Network | 2026-09-28 → 2026-12-01 (+64d) | 2026-10-03 → 2026-12-05 (+63d) |  | 4d → -51d | CO-SW-MH-190, CO-SW-ML-130 FF, CO-SW-ML-130 → CO-SW-MH-190, CO-SW-ML-130 FF, CO-SW-ML-130, ENG-SH-DPO-A-120 |
| 1 | **FROM MH-10:MH-01** | 2026-08-15 → 2026-10-19 (+65d) | 2026-10-12 → 2026-12-14 (+63d) |  |  |  |
| ML | **Main Line Sections** | 2026-08-15 → 2026-10-19 (+65d) | 2026-09-13 → 2026-11-18 (+66d) |  |  |  |
| CO-SW-ML-140 | Trench Excavation and Bedding Works for Main Lines of Sewage Network | 2026-08-15 → 2026-10-19 (+65d) | 2026-08-22 → 2026-10-25 (+64d) |  | 1.54d → -55d |  |
| CO-SW-ML-150 | Pipes Laying Works for Main Lines of Sewage Network | 2026-08-22 → 2026-10-26 (+65d) | 2026-08-30 → 2026-11-02 (+64d) |  | 1.54d → -55d | CO-SW-ML-140, CO-SW-ML-120 SS → CO-SW-ML-140, CO-SW-ML-120 SS, ENG-SH-SPS-A-160 |
| CO-SW-ML-160 | Trench Backfilling and Compaction Works for Main Lines of Sewage Network | 2026-08-30 → 2026-11-05 (+67d) | 2026-09-13 → 2026-11-18 (+66d) |  | 2d → -55d | CO-SW-ML-150, CO-SW-ML-130 SS → CO-SW-ML-150, CO-SW-ML-130 SS, CO-UB-PS-100, ENG-SH-DPO-A-120 |
| 1 | **Manholes** | 2026-09-06 → 2026-11-10 (+65d) | 2026-10-12 → 2026-12-14 (+63d) |  |  |  |
| CO-SW-MH-210 | Excavation Works for Main Line Manholes of Sewage Network | 2026-09-06 → 2026-11-10 (+65d) | 2026-09-15 → 2026-11-18 (+64d) |  | 0d → -55d |  |
| CO-SW-MH-220 | Installation RC Footing Works for Main Line Manholes of Sewage Network | 2026-09-15 → 2026-11-19 (+65d) | 2026-09-24 → 2026-11-26 (+63d) |  | 0d → -55d |  |
| CO-SW-MH-230 | Install Grp Liner Wall Works for Main Line Manholes of Sewage Network | 2026-09-24 → 2026-11-28 (+65d) | 2026-10-03 → 2026-12-05 (+63d) |  | 0d → -55d |  |
| CO-SW-MH-240 | Pouring Grp Liner Wall Works for Main Line Manholes of Sewage Network | 2026-10-03 → 2026-12-06 (+64d) | 2026-10-07 → 2026-12-09 (+63d) |  | 0d → -55d |  |
| CO-SW-MH-250 | Backfilling Works for Main Line Manholes of Sewage Network | 2026-10-07 → 2026-12-10 (+64d) | 2026-10-12 → 2026-12-14 (+63d) |  | 0d → -55d | CO-SW-MH-240, CO-SW-ML-160, CO-SW-MH-200 → CO-SW-MH-240, CO-SW-ML-160, CO-SW-MH-200, ENG-SH-DPO-A-120 |
| PW | **Potable Water Network** | 2026-10-12 → 2026-12-30 (+79d) | 2026-12-22 → 2027-03-22 (+90d) |  |  |  |
| ML | **Main Line Sections** | 2026-10-12 → 2026-12-30 (+79d) | 2026-11-09 → 2027-01-27 (+79d) |  |  |  |
| CO-PW-ML-100 | Trench Excavation and Bedding Works for Main Lines of Potable Water Network | 2026-10-12 → 2026-12-30 (+79d) | 2026-10-21 → 2027-01-09 (+80d) |  | 0d → -68d |  |
| CO-PW-ML-110 | Pipes Laying and accessories for Main Lines of Potable Water Network | 2026-10-21 → 2027-01-09 (+80d) | 2026-10-31 → 2027-01-18 (+79d) |  | 0d → -68d |  |
| CO-PW-ML-130 | Trench Backfilling and Compaction Works for Main Lines of Potable Water Network | 2026-10-31 → 2027-01-18 (+79d) | 2026-11-09 → 2027-01-27 (+79d) |  | 2d → -66d |  |
| VC | **Valve Chamber** | 2026-11-09 → 2027-01-27 (+79d) | 2026-11-28 → 2027-02-17 (+81d) |  |  |  |
| CO-PW-VC-170 | Excavation Works for Main Line Valves and Valve Chambers of Potable Water Network | 2026-11-09 → 2027-01-27 (+79d) | 2026-11-11 → 2027-01-30 (+80d) |  | 2d → -66d |  |
| CO-PW-VC180 | Installation Works for Valve Chambers of Potable Water Network | 2026-11-11 → 2027-01-30 (+80d) | 2026-11-16 → 2027-02-03 (+79d) |  | 2d → -66d |  |
| CO-PW-VC-190 | Installation Works for Valves of Potable Water Network | 2026-11-16 → 2027-02-03 (+79d) | 2026-11-24 → 2027-02-13 (+81d) |  | 2d → -66d |  |
| CO-PW-VC-220 | Backfilling Works for Main Line Valves and Valve Chambers of Potable Water Network | 2026-11-24 → 2027-02-13 (+81d) | 2026-11-28 → 2027-02-17 (+81d) |  | 2d → -66d |  |
| FH | **Fire Hydrant** | 2026-11-28 → 2027-02-17 (+81d) | 2026-12-22 → 2027-03-22 (+90d) |  |  |  |
| CO-PW-FH-140 | Excavation Works for Fire Hydrants of Potable Water Network | 2026-11-28 → 2027-02-17 (+81d) | 2026-12-06 → 2027-02-28 (+84d) |  | 2d → -66d |  |

| ID | Task | Start | Finish | Total float | Predecessors | Other |
| --- | --- | --- | --- | --- | --- | --- |
| CO-PW-FH-150 | Installation Works for Fire Hydrant of Potable Water Network | 2026-12-06 → 2027-02-28 (+84d) | 2026-12-14 → 2027-03-14 (+90d) | 2d → -66d |  |  |
| CO-PW-FH-160 | Trench Backfilling and Compaction Works for Fire Hydrants of Potable Water Network | 2026-12-14 → 2027-03-14 (+90d) | 2026-12-22 → 2027-03-22 (+90d) | 2d → -66d |  |  |
| IR | **Irrigation Network** | 2026-10-21 → 2027-01-09 (+80d) | 2026-12-19 → 2027-03-18 (+89d) |  |  |  |
| ML | **Main Line Pipes** | 2026-10-21 → 2027-01-09 (+80d) | 2026-12-19 → 2027-03-18 (+89d) |  |  |  |
| CO-IR-ML-100 | Trench Excavation and Bedding Works for Main Lines of Irrigation Network | 2026-10-21 → 2027-01-09 (+80d) | 2026-11-02 → 2027-01-20 (+79d) | 6.5d → -61.5d |  |  |
| CO-IR-ML-110 | Pipes Laying Works for Main Lines of Irrigation Network | 2026-11-02 → 2027-01-20 (+79d) | 2026-11-12 → 2027-01-31 (+80d) | 6.5d → -61.5d |  |  |
| CO-IR-ML-120 | Installation Works for Main Line Valves of Irrigation Network | 2026-11-14 → 2027-02-01 (+79d) | 2026-11-23 → 2027-02-11 (+80d) | 6.5d → -61.5d |  | resources Gate valve 50 mm PN16 [10.45]; Direct Burried Gate valve 40 mm PN16 [17.91]; Flushing Bronze gate valve dia 1.5" inside PVC box [28.36]; Air release valve 1.5" inside PVC box [28.36]; Extra flexible pressure compensating on surface inline dripline`s, O.D. is 16.1 mm [17910.5]; Electrical Solenoid Valve ( 1.5") inside PVC box [17.91]; Electrical Solenoid Valve ( 2") inside PVC box [10.45]; Quick coupling valve 1" inside a round valve box 10" size with a manual gate valve, hose swivel and key with all accessories [79.1]; Advanced Irrigation controller subject to client approval, can connect with Centarl Control system [1.49]; Decoder cables 12 AWG between valves and controllers, The cables shall be pulled through 32 UPVC conduit [5223.88]; Preparing the irrigation program for the entire system and providing technical services for monitoring and controlling the central irrigation systems [1.49]; Unskilled Labor [192 h]; Plumber [96 h] → Gate valve 50 mm PN16 [10.45]; Direct Burried Gate valve 40 mm PN16 [17.91]; Flushing Bronze gate valve dia 1.5" inside PVC box [28.36]; Air release valve 1.5" inside PVC box [28.36]; Extra flexible pressure compensating on surface inline dripline`s, O.D. is 16.1 mm [17910.5]; Electrical Solenoid Valve ( 1.5") inside PVC box [17.91]; Electrical Solenoid Valve ( 2") inside PVC box [10.45]; Quick coupling valve 1" inside a round valve box 10" size with a manual gate valve, hose swivel and key with all accessories [79.1]; Advanced Irrigation controller subject to client approval, can connect with Centarl Control system [1.49]; Decoder cables 12 AWG between valves and controllers, The cables shall be pulled through 32Ø UPVC conduit [5223.88]; Preparing the irrigation program for the entire system and providing technical services for monitoring and controlling the central irrigation systems [1.49]; Unskilled Labor [192 h]; Plumber [96 h] |
| CO-IR-ML-130 | Trench Backfilling and Compaction Works for Main Lines of Irrigation Network | 2026-11-28 → 2027-02-17 (+81d) | 2026-12-08 → 2027-03-03 (+85d) | 3d → -65d |  |  |
| CO-IR-ML-140 | Installation Works for Bulbblers And Sprinklers of Irrigation Network | 2026-12-08 → 2027-03-03 (+85d) | 2026-12-19 → 2027-03-18 (+89d) | 10d → -58d |  | resources Pressure compensating bubblers 110 Lit/Hr [1268.66]; Unskilled Labor [192 h]; Plumber [96 h] → Pressure–compensating bubblers 110 Lit/Hr [1268.66]; Unskilled Labor [192 h]; Plumber [96 h] |
| TSE | **Treated Sewage Effluent (Tse)** | 2026-10-21 → 2027-01-09 (+80d) | 2026-12-19 → 2027-03-18 (+89d) |  |  |  |
| ML | **Main Line Pipes** | 2026-10-21 → 2027-01-09 (+80d) | 2026-12-19 → 2027-03-18 (+89d) |  |  |  |
| CO-TSE-ML-150 | Trench Excavation and Bedding Works for Main Lines of Treated Sewage Effluent (Tse) | 2026-10-21 → 2027-01-09 (+80d) | 2026-11-01 → 2027-01-19 (+79d) | 8d → -60d |  |  |
| CO-TSE-ML-160 | Pipes Laying Works for Main Lines of Treated Sewage Effluent (Tse) | 2026-11-02 → 2027-01-20 (+79d) | 2026-11-12 → 2027-01-31 (+80d) | 8d → -60d |  |  |
| CO-TSE-ML-170 | Installation Works for Main Line Valves of Treated Sewage Effluent (Tse) | 2026-11-14 → 2027-02-01 (+79d) | 2026-11-22 → 2027-02-10 (+80d) | 7.5d → -60.5d |  |  |
| CO-TSE-ML-180 | Trench Backfilling and Compaction Works for Treated Sewage Effluent (Tse) | 2026-11-28 → 2027-02-17 (+81d) | 2026-12-08 → 2027-03-03 (+85d) | 3d → -65d |  |  |
| CO-TSE-ML-190 | Installation Works for Valve and Washout Chambers of Treated Sewage Effluent (Tse) | 2026-12-08 → 2027-03-03 (+85d) | 2026-12-19 → 2027-03-18 (+89d) | 22d → -46d |  |  |
| MV | **Medium Voltage Network** | 2026-10-31 → 2027-01-18 (+79d) | 2026-12-20 → 2027-03-20 (+90d) |  |  |  |
| CW | **Cabling Works** | 2026-10-31 → 2027-01-18 (+79d) | 2026-12-20 → 2027-03-20 (+90d) |  |  |  |
| CO-MV-ML-250 | Trench Excavation and Bedding Works for Medium Voltage Network | 2026-10-31 → 2027-01-18 (+79d) | 2026-11-12 → 2027-01-31 (+80d) | 0d → -68d |  |  |
| CO-MV-ML-260 | Cable Laying Works for Medium Voltage Network | 2026-11-12 → 2027-01-31 (+80d) | 2026-12-01 → 2027-02-22 (+83d) | 0d → -68d |  |  |
| CO-MV-ML-270 | Trench Backfilling and Compaction Works for Medium Voltage Network | 2026-12-01 → 2027-02-22 (+83d) | 2026-12-20 → 2027-03-20 (+90d) | 0d → -68d |  |  |
| SL | **Street Lighting Network** | 2026-10-31 → 2027-01-18 (+79d) | 2027-01-17 → 2027-04-17 (+90d) |  |  |  |
| LP | **Lighting Poles Works** | 2026-10-31 → 2027-01-18 (+79d) | 2026-12-10 → 2027-03-06 (+86d) |  |  |  |
| CO-SL-LP-300 | Foundation Excavation Works for Lighting Poles of Street Lighting Network | 2026-10-31 → 2027-01-18 (+79d) | 2026-11-09 → 2027-01-27 (+79d) | 3d → -65d |  |  |
| CO-SL-LP-310 | Installation Works for Lighting Poles Foundation of Street Lighting Network | 2026-11-09 → 2027-01-27 (+79d) | 2026-11-18 → 2027-02-06 (+80d) | 3d → -65d |  |  |
| CO-SL-LP-320 | Installation Works for Lighting Poles of Street Lighting Network | 2026-11-18 → 2027-02-06 (+80d) | 2026-11-29 → 2027-02-18 (+81d) | 3d → -65d |  |  |
| CO-SL-LP-210 | Backfilling Works for Lighting Poles of Street Lighting Network | 2026-11-29 → 2027-02-20 (+83d) | 2026-12-10 → 2027-03-06 (+86d) | 3d → -65d |  |  |
| CW | **Cabling Works** | 2026-11-09 → 2027-01-27 (+79d) | 2026-12-08 → 2027-03-03 (+85d) |  |  |  |
| CO-SL-CL-250 | Trench Excavation and Bedding Works for Street Lighting Network | 2026-11-09 → 2027-01-27 (+79d) | 2026-11-17 → 2027-02-04 (+79d) | 6d → -62d |  |  |
| CO-SL-CL-260 | Cable Laying Works for Street Lighting Network | 2026-11-17 → 2027-02-04 (+79d) | 2026-11-25 → 2027-02-14 (+81d) | 6d → -62d |  |  |
| CO-SL-CL-270 | Trench Backfilling and Compaction Works for Street Lighting Network | 2026-11-29 → 2027-02-20 (+83d) | 2026-12-08 → 2027-03-03 (+85d) | 3d → -65d |  |  |
| DPB | **Distrubution Panel Boards** | 2026-12-20 → 2027-03-20 (+90d) | 2027-01-17 → 2027-04-17 (+90d) |  |  |  |
| CO-SL-DB-250 | Foundation Excavation Works For Panel Boards of Street Lighting Network | 2026-12-20 → 2027-03-20 (+90d) | 2026-12-27 → 2027-03-27 (+90d) | 1.5d → -66.5d |  |  |
| CO-SL-DB-260 | Installation Works for Panel Board Concrete Foundations of Street Lighting Network | 2026-12-27 → 2027-03-27 (+90d) | 2027-01-03 → 2027-04-03 (+90d) | 1.5d → -66.5d |  |  |
| CO-SL-DB-270 | Installation Works for Lighting Panel Boards of Street Lighting Network | 2027-01-03 → 2027-04-03 (+90d) | 2027-01-10 → 2027-04-10 (+90d) | 1.5d → -66.5d |  |  |
| CO-SL-DB-220 | A wall of concrete blocks to install the KWH meter of Street Lighting Network | 2027-01-10 → 2027-04-10 (+90d) | 2027-01-17 → 2027-04-17 (+90d) | 8.5d → -59.5d |  |  |
| TE | **Telecom Network** | 2026-11-12 → 2027-01-31 (+80d) | 2026-12-31 → 2027-03-31 (+90d) |  |  |  |
| PD | **Ducts Works** | 2026-11-12 → 2027-01-31 (+80d) | 2026-12-13 → 2027-03-13 (+90d) |  |  |  |
| CO-TE-DW-100 | Trench Excavation and Bedding Works for Ducts of Telecom Network | 2026-11-12 → 2027-01-31 (+80d) | 2026-11-17 → 2027-02-04 (+79d) | 0.5d → -67.5d |  |  |
| CO-TE-DW-110 | Pipes Laying Works for Ducts of Telecom Network | 2026-11-17 → 2027-02-04 (+79d) | 2026-11-22 → 2027-02-09 (+79d) | 0.5d → -67.5d |  |  |
| CO-TE-DW-130 | Trench Backfilling and Compaction Works for Ducts of Telecom Network | 2026-11-22 → 2027-02-10 (+80d) | 2026-12-01 → 2027-02-22 (+83d) | 1.5d → -66.5d |  |  |
| CO-TE-DW-120 | Pouring Road Crossing Concrete Encasement | 2026-12-01 → 2027-02-22 (+83d) | 2026-12-13 → 2027-03-13 (+90d) | 1.5d → -66.5d |  |  |
| MH | **Manholes Works** | 2026-11-22 → 2027-02-10 (+80d) | 2026-12-14 → 2027-03-14 (+90d) |  |  |  |
| CO-TE-MH-140 | Excavation Works for Manholes of Telecom Network | 2026-11-22 → 2027-02-10 (+80d) | 2026-11-28 → 2027-02-17 (+81d) | 0.5d → -67.5d |  |  |
| CO-TE-MH-150 | Installation Works for Manholes of Telecom Network | 2026-11-28 → 2027-02-17 (+81d) | 2026-12-06 → 2027-02-28 (+84d) | 0.5d → -67.5d |  |  |
| CO-TE-MH-160 | Backfilling Works for Manholes of Telecom Network | 2026-12-06 → 2027-02-28 (+84d) | 2026-12-14 → 2027-03-14 (+90d) | 0.5d → -67.5d |  |  |
| DD | **CCTV System Wroks** | 2026-12-14 → 2027-03-14 (+90d) | 2026-12-31 → 2027-03-31 (+90d) |  |  |  |
| CO-TE-CTV-100 | Digging and Pulling Trenches PVC ducts , Backfilling, Excavations, of Power Cable | 2026-12-14 → 2027-03-14 (+90d) | 2026-12-20 → 2027-03-20 (+90d) | 0.5d → -67.5d |  |  |
| CO-TE-CTV-110 | Installation of Network Cable Cat.6A from Network switch to CCTV Camera and ACS Device | 2026-12-20 → 2027-03-20 (+90d) | 2026-12-26 → 2027-03-25 (+89d) | 0.5d → -67.5d |  |  |
| CO-TE-CTV-130 | Installation of Access Control System | 2026-12-26 → 2027-03-25 (+89d) | 2026-12-31 → 2027-03-31 (+90d) | 0.5d → -67.5d |  |  |
| RD | **Road Works** | 2026-12-03 → 2027-02-25 (+84d) | 2027-01-31 → 2027-05-01 (+90d) |  |  |  |
| 3 | **ST+1000:ST+1531** | 2026-12-03 → 2027-02-25 (+84d) | 2027-01-04 → 2027-04-04 (+90d) |  |  |  |
| RD | **Pre-Bituminous Construction** | 2026-12-03 → 2027-02-25 (+84d) | 2027-01-04 → 2027-04-04 (+90d) |  |  |  |
| CO-RD-PB-140 | Subgrade Layer for Road Works | 2026-12-03 → 2027-02-25 (+84d) | 2026-12-19 → 2027-03-18 (+89d) | 0d → -68d |  |  |
| CO-RD-PB-150 | Aggregate Base Course Layer for Road Works | 2026-12-20 → 2027-03-20 (+90d) | 2027-01-04 → 2027-04-04 (+90d) | 0d → -68d |  |  |
| 2 | **ST+500:ST+1000** | 2026-12-20 → 2027-03-20 (+90d) | 2027-01-17 → 2027-04-17 (+90d) |  |  |  |
| RD | **Pre-Bituminous Construction** | 2026-12-20 → 2027-03-20 (+90d) | 2027-01-17 → 2027-04-17 (+90d) |  |  |  |
| CO-RD-PB-120 | Subgrade Layer for Road Works | 2026-12-20 → 2027-03-20 (+90d) | 2027-01-02 → 2027-04-01 (+89d) | 0.7d → -67.3d | CO-RD-PB-140, CO-SD-ML-160, CO-SD-MH-260, CO-SD-CB-200, CO-SW-ML-160, CO-SW-MH-250, CO-PW-ML-130, CO-PW-VC-220, CO-PW-FH-160 SS+2d, CO-TSE-ML-180 SS+2d, CO-IR-ML-130 SS+2d, CO-MV-ML-270, CO-SL-LP-210, CO-SL-CL-270, CO-TE-DW-120, CO-TE-MH-160, CO-TE-DW-130, CO-TSE-ML-180 → CO-RD-PB-140, CO-SD-ML-160, CO-SD-MH-260, CO-SD-CB-200, CO-SW-ML-160, CO-SW-MH-250, CO-PW-ML-130, CO-PW-VC-220, CO-PW-FH-160 SS+2d, CO-TSE-ML-180 SS+2d, CO-IR-ML-130 SS+2d, CO-MV-ML-270, CO-SL-LP-210, CO-SL-CL-270, CO-TE-DW-120, CO-TE-MH-160, CO-TE-DW-130, CO-TSE-ML-180, CO-SD-PO-100-P1 |  |
| CO-RD-PB-130 | Aggregate Base Course Layer for Road Works | 2027-01-05 → 2027-04-05 (+90d) | 2027-01-17 → 2027-04-17 (+90d) | 0d → -68d |  |  |
| 1 | **ST+01:ST+500** | 2027-01-02 → 2027-04-01 (+89d) | 2027-01-31 → 2027-05-01 (+90d) |  |  |  |
| RD | **Pre-Bituminous Construction** | 2027-01-02 → 2027-04-01 (+89d) | 2027-01-31 → 2027-05-01 (+90d) |  |  |  |
| CO-RD-PB-100 | Subgrade Layer for Road Works | 2027-01-02 → 2027-04-01 (+89d) | 2027-01-16 → 2027-04-15 (+89d) | 0.7d → -67.3d |  |  |
| CO-RD-PB-110 | Aggregate Base Course Layer for Road Works | 2027-01-18 → 2027-04-18 (+90d) | 2027-01-31 → 2027-05-01 (+90d) | 0d → -68d |  |  |
| 3 | **Finishes for Infrastructure Networks** | 2026-10-12 → 2026-12-15 (+64d) | 2027-02-14 → 2027-05-12 (+87d) |  |  |  |
| 11 | **Storm Drainage Network** | 2026-11-02 → 2027-01-24 (+83d) | 2027-01-05 → 2027-04-10 (+95d) |  |  |  |
| TF | **Testing and Finishes** | 2026-11-02 → 2027-01-24 (+83d) | 2027-01-05 → 2027-04-10 (+95d) |  |  |  |
| CO-SD-ML-TF-100 | Testing Work for Pipes of Storm Drainage Network | 2026-11-02 → 2027-01-24 (+83d) | 2026-11-12 → 2027-02-04 (+84d) | 0d → -71.2d |  |  |
| CO-SD-CB-TF-130 | Catch Basin Internal Finishes (Benching ) for Storm Drainage Network | 2026-11-14 → 2027-02-04 (+82d) | 2026-11-24 → 2027-02-18 (+86d) | 0d → -71.2d |  |  |
| CO-SD-CB-TF-160 | Testing Works for Catch Basins of Storm Drainage Network | 2026-11-25 → 2027-02-18 (+85d) | 2026-12-06 → 2027-03-06 (+90d) | 0d → -71.2d | CO-SD-CB-170, CO-SD-ML-TF-100, CO-SD-CB-TF-130, CO-SD-CB-200 → CO-SD-CB-170, CO-SD-ML-TF-100, CO-SD-CB-TF-130, CO-SD-CB-200, CO-SD-PO-100-P1 |  |
| CO-SD-CB-TF-110 | Install Catch Basin Cover Works for External Finishes of Storm Drainage Network | 2026-12-07 → 2027-03-06 (+89d) | 2026-12-17 → 2027-03-22 (+95d) | 0d → -71.2d |  |  |

| ID | Task | Start | Finish | Total float | Predecessors |
| --- | --- | --- | --- | --- | --- |
| CO-SD-MH-TF-120 | Main Manhole Internal Finishes (Benching ) for Storm Drainage Network | 2026-12-19 → 2027-03-22 (+93d) | 2026-12-29 → 2027-04-03 (+95d) | 0d → -71.2d |  |
| CO-SD-MH-TF-210 | Testing Works for Manholes of Storm Drainage Network | 2026-12-30 → 2027-04-03 (+94d) | 2027-01-05 → 2027-04-10 (+95d) | 0d → -71.2d | CO-SD-MH-220, CO-SD-ML-TF-100, CO-SD-MH-TF-120, PRO-R25-SD-DL-140, CO-SD-CB-TF-110, CO-SD-MH-260 → CO-SD-MH-220, CO-SD-ML-TF-100, CO-SD-MH-TF-120, PRO-R25-SD-DL-140, CO-SD-CB-TF-110, CO-SD-MH-260, CO-SD-PO-100-P1 |
| 10 | **Sewage Network** | 2026-10-12 → 2026-12-15 (+64d) | 2027-01-13 → 2027-04-03 (+80d) |  |  |
| TF | **Testing and Finishes** | 2026-10-12 → 2026-12-15 (+64d) | 2027-01-13 → 2027-04-03 (+80d) |  |  |
| CO-SW-TF-100 | Final Testing For Main Line of Sewage Network | 2026-10-12 → 2026-12-15 (+64d) | 2026-10-22 → 2026-12-24 (+63d) | 7d → -47.5d |  |
| CO-SW-TF-130 | Main Manhole Internal Finishes (Benching + Insulation) of Sewage Network | 2026-10-22 → 2026-12-26 (+65d) | 2026-11-16 → 2027-01-18 (+63d) | 38.5d → -16d | CO-SW-MH-200, CO-SW-TF-100, CO-SW-MH-250 → CO-SW-MH-200, CO-SW-TF-100, CO-SW-MH-250, CO-SD-PO-100-P1 |
| CO-SW-TF-110 | Install Manhole Cover Works for External Finishes of Sewage Network | 2026-12-29 → 2027-03-18 (+79d) | 2027-01-09 → 2027-03-29 (+79d) | 2d → -57d |  |
| CO-SW-TF-210 | Testing Works for Main Line Manholes of Sewage Network | 2027-01-10 → 2027-03-30 (+79d) | 2027-01-13 → 2027-04-03 (+80d) | 2d → -57d |  |
| 9 | **Potable Water Network** | 2026-12-22 → 2027-03-22 (+90d) | 2027-01-26 → 2027-04-26 (+90d) |  |  |
| TF | **Testing and Finishes** | 2026-12-22 → 2027-03-22 (+90d) | 2027-01-26 → 2027-04-26 (+90d) |  |  |
| CO-PW-TF-110 | Testing Work for Main Line of Potable Water Network | 2026-12-22 → 2027-03-22 (+90d) | 2027-01-03 → 2027-04-03 (+90d) | 2d → -66d |  |
| CO-PW-TF-120 | Fire Hydrant Finishies (S.Box + Safety + Marker Post ) of Potable Water Network | 2027-01-04 → 2027-04-04 (+90d) | 2027-01-14 → 2027-04-14 (+90d) | 2d → -66d |  |
| CO-PW-TF-100 | Final Finishes works and Covers for Valves and Valve Chambers of Potable Water Network | 2027-01-16 → 2027-04-15 (+89d) | 2027-01-26 → 2027-04-26 (+90d) | 2d → -66d |  |
| 13 | **Irrigation Network** | 2026-12-19 → 2027-03-18 (+89d) | 2027-01-02 → 2027-04-01 (+89d) |  |  |
| TF | **Testing and Finishes** | 2026-12-19 → 2027-03-18 (+89d) | 2027-01-02 → 2027-04-01 (+89d) |  |  |
| CO-IR-TF-160 | Final Testing (pressure tests) of Irrigation Network | 2026-12-19 → 2027-03-18 (+89d) | 2027-01-02 → 2027-04-01 (+89d) | 10d → -58d |  |
| 1 | **Treated Sewage Effluent (Tse)** | 2027-01-02 → 2027-04-01 (+89d) | 2027-01-14 → 2027-04-14 (+90d) |  |  |
| TF | **Testing and Finishes** | 2027-01-02 → 2027-04-01 (+89d) | 2027-01-14 → 2027-04-14 (+90d) |  |  |
| CO-TSE-TF-170 | Final Testing (pressure tests) of Treated Sewage Effluent (Tse) | 2027-01-02 → 2027-04-01 (+89d) | 2027-01-14 → 2027-04-14 (+90d) | 10d → -58d |  |
| 14 | **Medium Voltage Network** | 2026-12-20 → 2027-03-20 (+90d) | 2027-01-10 → 2027-04-10 (+90d) |  |  |
| TT | **Termination and Testing Works** | 2026-12-20 → 2027-03-20 (+90d) | 2027-01-10 → 2027-04-10 (+90d) |  |  |
| CO-MV-TF-220 | Termination Works of Medium Voltage Network | 2026-12-20 → 2027-03-20 (+90d) | 2027-01-10 → 2027-04-10 (+90d) | 3.5d → -64.5d |  |
| 12 | **Street Lighting Network** | 2027-01-10 → 2027-04-10 (+90d) | 2027-02-03 → 2027-04-26 (+82d) |  |  |
| TR | **Termination and Testing Works** | 2027-01-10 → 2027-04-10 (+90d) | 2027-02-03 → 2027-04-26 (+82d) |  |  |
| CO-SL-LP-330 | Installation Works for Lighting Fixtures With Drop Wire of Street Lighting Network | 2027-01-10 → 2027-04-10 (+90d) | 2027-01-18 → 2027-04-18 (+90d) | 1.5d → -66.5d |  |
| CO-SL-TF-200 | Testing Works for Lighting Poles of Street Lighting Network | 2027-01-30 → 2027-04-18 (+78d) | 2027-02-03 → 2027-04-24 (+80d) | 0d → -58.5d |  |
| CO-SL-TF-220 | Termination Works For Lighting Poles Cables of Street Lighting Network | 2027-01-18 → 2027-04-18 (+90d) | 2027-01-26 → 2027-04-26 (+90d) | 7.5d → -60.5d |  |
| CO-SL-TF-230 | Termination Works For Panel Board Cables of Street Lighting Network | 2027-01-18 → 2027-04-18 (+90d) | 2027-01-26 → 2027-04-26 (+90d) | 7.5d → -60.5d |  |
| CO-SL-TF-380 | Testing Works For Panel Board Cables of Street Lighting Network | 2027-01-18 → 2027-04-18 (+90d) | 2027-01-20 → 2027-04-20 (+90d) | 12.5d → -55.5d |  |
| ES | **Earthing System Works** | 2027-01-10 → 2027-04-10 (+90d) | 2027-01-18 → 2027-04-18 (+90d) |  |  |
| CO-SL-ES-220 | Install Earthing System Works for Lighting Poles of Street Lighting Network | 2027-01-10 → 2027-04-10 (+90d) | 2027-01-18 → 2027-04-18 (+90d) | 1.5d → -66.5d |  |
| CO-SL-ES-230 | Install Earthing System Works for Lighting Panel Boards of Street Lighting Network | 2027-01-10 → 2027-04-10 (+90d) | 2027-01-18 → 2027-04-18 (+90d) | 1.5d → -66.5d |  |
| 3 | **Telecom Network** | 2026-12-31 → 2027-03-31 (+90d) | 2027-01-19 → 2027-04-19 (+90d) |  |  |
| 1 | **Testing and Finishes** | 2026-12-31 → 2027-03-31 (+90d) | 2027-01-19 → 2027-04-19 (+90d) |  |  |
| CO-TE-CTV-TF-110 | Smart Card Printer | 2026-12-31 → 2027-03-31 (+90d) | 2027-01-05 → 2027-04-05 (+90d) | 0.5d → -67.5d |  |
| CO-TE-CTV-TF-120 | Card Issue Work Station | 2027-01-05 → 2027-04-05 (+90d) | 2027-01-10 → 2027-04-10 (+90d) | 0.5d → -67.5d |  |
| CO-TE-CTV-TF-130 | Photographic Camera with stand | 2027-01-10 → 2027-04-10 (+90d) | 2027-01-14 → 2027-04-14 (+90d) | 0.5d → -67.5d |  |
| CO-TE-CTV-TF-140 | Interface modules with CCTV, Fire and other systems | 2027-01-14 → 2027-04-14 (+90d) | 2027-01-19 → 2027-04-19 (+90d) | 0.5d → -67.5d |  |
| 2 | **Road Works** | 2026-12-20 → 2027-03-20 (+90d) | 2027-02-14 → 2027-05-12 (+87d) |  |  |
| 3 | **ST+1000:ST+1531** | 2026-12-20 → 2027-03-20 (+90d) | 2027-02-06 → 2027-05-06 (+89d) |  |  |
| 1 | **Bituminous Construction** | 2027-01-05 → 2027-04-05 (+90d) | 2027-01-20 → 2027-04-20 (+90d) |  |  |
| CO-RD-B-150 | Application of Prime Coat Layer for Road Works | 2027-01-05 → 2027-04-05 (+90d) | 2027-01-12 → 2027-04-12 (+90d) | 1d → -67d |  |
| CO-RD-B-160 | Bituminous Base Courses Layers for Road Works- | 2027-01-13 → 2027-04-13 (+90d) | 2027-01-20 → 2027-04-20 (+90d) | 1d → -67d |  |
| LS | **Pavement Works** | 2026-12-20 → 2027-03-20 (+90d) | 2027-01-16 → 2027-04-15 (+89d) |  |  |
| CO-RD-PV-160 | Fixing of Curbstone for Sidewalks Pavement | 2026-12-20 → 2027-03-20 (+90d) | 2027-01-03 → 2027-04-03 (+90d) | 0.8d → -67.2d |  |
| CO-RD-PV-170 | Fixing of Interlock Tiles for Sidewalks Pavement | 2027-01-03 → 2027-04-03 (+90d) | 2027-01-16 → 2027-04-15 (+89d) | 0.8d → -67.2d |  |
| TS | **Traffic Signs Boards and Roads Marking** | 2027-01-21 → 2027-04-21 (+90d) | 2027-02-06 → 2027-05-06 (+89d) |  |  |
| CO-RD-F-RM-180 | Application of Road Marking Works For Road Works | 2027-01-21 → 2027-04-21 (+90d) | 2027-01-28 → 2027-04-28 (+90d) | 4d → -64d |  |
| CO-RD-F-TS-120 | Installation Works of Traffic Signs Boards For Road Works | 2027-01-30 → 2027-04-29 (+89d) | 2027-02-06 → 2027-05-06 (+89d) | 4d → -64d |  |
| 1 | **ST+500:ST+1000** | 2027-01-03 → 2027-04-03 (+90d) | 2027-02-11 → 2027-05-11 (+89d) |  |  |
| 1 | **Bituminous Construction** | 2027-01-21 → 2027-04-21 (+90d) | 2027-01-30 → 2027-04-29 (+89d) |  |  |
| CO-RD-B-130 | Application of Prime Coat Layer for Road Works | 2027-01-21 → 2027-04-21 (+90d) | 2027-01-25 → 2027-04-25 (+90d) | 1d → -67d |  |
| CO-RD-B-140 | Bituminous Base Courses Layers for Road Works- | 2027-01-26 → 2027-04-26 (+90d) | 2027-01-30 → 2027-04-29 (+89d) | 1d → -67d |  |
| LS | **Pavement Works** | 2027-01-03 → 2027-04-03 (+90d) | 2027-01-28 → 2027-04-28 (+90d) |  |  |
| CO-RD-PV-140 | Fixing of Curbstone for Sidewalks Pavement | 2027-01-03 → 2027-04-03 (+90d) | 2027-01-16 → 2027-04-15 (+89d) | 0.8d → -67.2d |  |
| CO-RD-PV-150 | Fixing of Interlock Tiles for Sidewalks Pavement | 2027-01-16 → 2027-04-15 (+89d) | 2027-01-28 → 2027-04-28 (+90d) | 0.8d → -67.2d |  |
| TS | **Traffic Signs Boards and Roads Marking** | 2027-02-01 → 2027-05-02 (+90d) | 2027-02-11 → 2027-05-11 (+89d) |  |  |
| CO-RD-F-RM-170 | Application of Road Marking Works For Road Works | 2027-02-01 → 2027-05-02 (+90d) | 2027-02-06 → 2027-05-06 (+89d) | 0d → -68d |  |
| CO-RD-F-TS-110 | Installation Works of Traffic Signs Boards For Road Works | 2027-02-07 → 2027-05-08 (+90d) | 2027-02-11 → 2027-05-11 (+89d) | 0d → -68d |  |
| 2 | **ST+01:ST+500** | 2027-01-16 → 2027-04-15 (+89d) | 2027-02-14 → 2027-05-12 (+87d) |  |  |
| 1 | **Bituminous Construction** | 2027-02-01 → 2027-05-02 (+90d) | 2027-02-11 → 2027-05-11 (+89d) |  |  |
| CO-RD-B-110 | Application of Prime Coat Layer for Road Works | 2027-02-01 → 2027-05-02 (+90d) | 2027-02-06 → 2027-05-06 (+89d) | 0d → -68d |  |
| CO-RD-B-120 | Bituminous Base Courses Layers for Road Works- | 2027-02-07 → 2027-05-08 (+90d) | 2027-02-11 → 2027-05-11 (+89d) | 0d → -68d |  |
| LS | **Pavement Works** | 2027-01-16 → 2027-04-15 (+89d) | 2027-02-11 → 2027-05-11 (+89d) |  |  |
| CO-RD-PV-120 | Fixing of Curbstone for Sidewalks Pavement | 2027-01-16 → 2027-04-15 (+89d) | 2027-01-28 → 2027-04-28 (+90d) | 0.7d → -67.3d |  |
| CO-RD-PV-130 | Fixing of Interlock Tiles for Sidewalks Pavement | 2027-01-28 → 2027-04-28 (+90d) | 2027-02-11 → 2027-05-11 (+89d) | 0.7d → -67.3d |  |
| TS | **Traffic Signs Boards and Roads Marking** | 2027-02-13 → 2027-05-12 (+88d) | 2027-02-14 → 2027-05-12 (+87d) |  |  |
| CO-RD-F-RM-160 | Application of Road Marking Works For Road Works | 2027-02-13 → 2027-05-12 (+88d) | 2027-02-14 → 2027-05-12 (+87d) | 3d → -65d |  |
| CO-RD-F-TS-100 | Installation Works of Traffic Signs Boards For Road Works | 2027-02-13 → 2027-05-12 (+88d) | 2027-02-14 → 2027-05-12 (+87d) | 3d → -65d |  |
| GEN | **Superstructure Work** |  | 2027-02-23 → 2027-04-25 (+61d) |  |  |

| ID | Task | Start | Finish | Complete | Total float | Predecessors |
| --- | --- | --- | --- | --- | --- | --- |
| 4 | **Utility Buildings** | 2026-08-24 → 2026-08-01 (-23d) | 2027-01-27 → 2027-04-25 (+88d) |  |  |  |
| 6 | **Storm Drainage Ponds** | 2026-10-22 → 2026-08-02 (-81d) | 2027-01-03 → 2026-09-01 (-124d) |  |  |  |
| CO-SD-PO-100-P1 | Excavation & Filling Works - PART 1 | 2026-10-22 → 2026-08-02 A (-81d) | 2026-11-08 → 2026-09-01 A (-68d) | 0% → 100% | 2d → none | ENG-SH-DPO-A-120, ENG-MT-DPO-CV-A-110, PRO-DPO-CV-1DL-10, PRO-DPO-CV-DL-10 FF, CO-SD-CB-190, CO-SD-MH-260, CO-SD-ML-160, CO-SD-CB-170, CO-SD-MH-220, CO-SD-ML-130, CO-SW-ML-130, CO-SW-MH-200, CO-SW-ML-160, CO-SW-MH-250 → ENG-SH-DPO-A-120, ENG-MT-DPO-CV-A-110, PRO-DPO-CV-1DL-10, PRO-DPO-CV-DL-10 FF, CO-SD-ML-130 SS |
| CO-SD-PO-100-P2 | Excavation & Filling Works - PART 2 | 2026-11-28 → 2026-08-02 A (-118d) | 2026-12-15 → 2026-09-01 A (-105d) | 0% → 100% | 2d → none |  |
| CO-SD-PO-110-P1 | Finished Grouted Riprap - PART 1 | 2026-11-09 → 2026-08-02 A (-99d) | 2026-11-26 → 2026-09-01 A (-86d) | 0% → 100% | 2d → none |  |
| CO-SD-PO-110-P2 | Finished Grouted Riprap - PART 2 | 2026-12-16 → 2026-08-02 A (-136d) | 2027-01-03 → 2026-09-01 A (-124d) | 0% → 100% | 2d → none |  |
| 4 | **Pump Station** | 2026-08-30 → 2026-08-01 (-29d) | 2027-01-27 → 2027-04-25 (+88d) |  |  |  |
| 1 | **Civil work** | 2026-08-30 → 2026-08-01 (-29d) | 2026-12-01 → 2026-12-20 (+19d) |  |  |  |
| 1 | **Sup Structure** | 2026-08-30 → 2026-08-01 (-29d) | 2026-10-17 → 2026-09-01 (-46d) |  |  |  |
| CO-UB-PS-100 | Excavation Work for for Pump station building | 2026-08-30 → 2026-08-01 A (-29d) | 2026-09-08 → 2026-08-08 A (-31d) | 0% → 100% | 1.54d → none | ENG-SH-SPS-A-160, PRO-SPS-CV-1DL-10, PRO-SPS-CV-DL-10 FF, PRO-SPS-CV-DL-10, CO-SW-ML-150 → ENG-SH-SPS-A-160, PRO-SPS-CV-DL-10 SS |
| CO-UB-PS-110 | pouring P.C Conceret for Pump station building | 2026-09-08 → 2026-08-02 A (-37d) | 2026-09-12 → 2026-09-01 A (-11d) | 0% → 100% | 1.54d → none |  |
| CO-UB-PS-120 | Formwork for Foundation for Pump station building | 2026-09-12 → 2026-08-02 A (-41d) | 2026-09-22 → 2026-09-01 A (-21d) | 0% → 100% | 1.54d → none |  |
| CO-UB-PS-130 | Steel fixing for Foundation for Pump station building | 2026-09-22 → 2026-08-02 A (-51d) | 2026-10-04 → 2026-09-01 A (-33d) | 0% → 100% | 1.54d → none |  |
| CO-UB-PS-140 | pouring for Foundation for Pump station building | 2026-10-04 → 2026-08-02 A (-63d) | 2026-10-05 → 2026-09-01 A (-34d) | 0% → 100% | 1.54d → none |  |
| CO-UB-PS-150 | curing and deshuttering formwork Pump station building | 2026-10-05 → 2026-08-02 A (-64d) | 2026-10-08 → 2026-09-01 A (-37d) | 0% → 100% | 1.54d → none |  |
| CO-UB-PS-160 | Backfilling and compaction work for pump station | 2026-10-08 → 2026-08-02 A (-67d) | 2026-10-17 → 2026-09-01 A (-46d) | 0% → 100% | 1.54d → none |  |
| 2 | **Super structure** | 2026-10-17 → 2026-11-05 (+19d) | 2026-12-01 → 2026-12-20 (+19d) |  |  |  |
| CO-UB-PS-170 | Formwork for Wall and columns for Pump station building | 2026-10-17 → 2026-11-05 (+19d) | 2026-10-27 → 2026-11-16 (+20d) |  | 1.54d → -14.96d |  |
| CO-UB-PS-180 | Steel fixing for Wall columns | 2026-10-27 → 2026-11-16 (+20d) | 2026-11-04 → 2026-11-24 (+20d) |  | 1.54d → -14.96d |  |
| CO-UB-PS-190 | pouring for Wall columns | 2026-11-04 → 2026-11-24 (+20d) | 2026-11-05 → 2026-11-25 (+20d) |  | 1.54d → -14.96d |  |
| CO-UB-PS-200 | curing and deshuttering formwork for Wall columns | 2026-11-05 → 2026-11-25 (+20d) | 2026-11-08 → 2026-11-28 (+20d) |  | 1.54d → -14.96d |  |
| CO-UB-PS-210 | Waterproofing for Walls columns | 2026-11-08 → 2026-11-28 (+20d) | 2026-11-14 → 2026-12-02 (+18d) |  | 1.54d → -14.96d |  |
| CO-UB-PS-220 | Formwork for pump roof | 2026-11-14 → 2026-12-02 (+18d) | 2026-11-21 → 2026-12-09 (+18d) |  | 1.54d → -14.96d |  |
| CO-UB-PS-230 | Steel fixing for pump roof | 2026-11-21 → 2026-12-09 (+18d) | 2026-11-28 → 2026-12-16 (+18d) |  | 1.54d → -14.96d |  |
| CO-UB-PS-240 | pouring for pump roof | 2026-11-28 → 2026-12-16 (+18d) | 2026-11-29 → 2026-12-17 (+18d) |  | 1.54d → -14.96d |  |
| CO-UB-PS-250 | curing and deshuttering formwork for pump roof | 2026-11-29 → 2026-12-17 (+18d) | 2026-12-01 → 2026-12-20 (+19d) |  | 1.54d → -14.96d |  |
| 2 | **Architectural work** | 2026-12-01 → 2026-12-20 (+19d) | 2027-01-11 → 2027-01-30 (+19d) |  |  |  |
| CO-UB-PS-260 | Executing Masonry Works for Pump station building | 2026-12-01 → 2026-12-20 (+19d) | 2026-12-07 → 2026-12-26 (+19d) |  | 1.54d → -14.96d |  |
| CO-UB-PS-270 | Executing Plastering Works for Pump station building | 2026-12-07 → 2026-12-26 (+19d) | 2026-12-13 → 2026-12-31 (+18d) |  | 1.54d → -14.96d |  |
| CO-UB-PS-280 | Executing Painting Works for Pump station building | 2026-12-13 → 2026-12-31 (+18d) | 2026-12-19 → 2027-01-06 (+18d) |  | 1.54d → -14.96d |  |
| CO-UB-PS-320 | Doors and windows Fixing &Stair Tiles | 2027-01-03 → 2027-01-21 (+18d) | 2027-01-11 → 2027-01-30 (+19d) |  | 5.54d → -10.96d |  |
| 3 | **Electrical work** | 2026-12-19 → 2027-01-06 (+18d) | 2027-01-21 → 2027-04-19 (+88d) |  |  |  |
| CO-UB-PS-290 | Lighting system for pump house | 2026-12-19 → 2027-01-06 (+18d) | 2026-12-24 → 2027-01-12 (+19d) |  | 1.54d → -14.96d |  |
| CO-UB-PS-300 | Wiring connection for pump house | 2026-12-24 → 2027-01-12 (+19d) | 2026-12-30 → 2027-01-18 (+19d) |  | 1.54d → -14.96d |  |
| CO-UB-PS-310 | Sockets and switches for pump house | 2026-12-30 → 2027-01-18 (+19d) | 2027-01-03 → 2027-01-21 (+18d) |  | 1.54d → -14.96d |  |
| CO-UB-PS-330 | Installation for Distribution boards for pump house | 2027-01-03 → 2027-01-21 (+18d) | 2027-01-12 → 2027-01-31 (+19d) |  | 1.54d → -14.96d |  |
| CO-UB-PS-370 | Executing Earthing and bonding for the entire system | 2027-01-12 → 2027-04-10 (+88d) | 2027-01-21 → 2027-04-19 (+88d) |  | 1.54d → -64.5d |  |
| 4 | **Mechanical work** | 2027-01-03 → 2027-01-21 (+18d) | 2027-01-27 → 2027-04-25 (+88d) |  |  |  |
| CO-UB-PS-340 | Executing HVAC System for Pump station building | 2027-01-03 → 2027-01-21 (+18d) | 2027-01-19 → 2027-02-07 (+19d) |  | 3.54d → -12.96d |  |
| CO-UB-PS-350 | Executing Fire Alarm System for Pump station building | 2027-01-03 → 2027-01-21 (+18d) | 2027-01-09 → 2027-01-27 (+18d) |  | 2.54d → -13.96d |  |
| CO-UB-PS-360 | Executing Fire fighting institution works(piping and wire installation) for Pump station building | 2027-01-09 → 2027-01-27 (+18d) | 2027-01-14 → 2027-02-02 (+19d) |  | 2.54d → -13.96d |  |
| CO-UB-PS-380 | Executing Fire fighting finishing works for Pump station building | 2027-01-14 → 2027-02-02 (+19d) | 2027-01-20 → 2027-02-09 (+20d) |  | 2.54d → -13.96d |  |
| CO-UB-PS-390 | Installation of pumps | 2027-01-21 → 2027-04-19 (+88d) | 2027-01-27 → 2027-04-25 (+88d) |  | 1.54d → -64.5d |  |
| 3 | **Lift Station** | 2026-09-08 → 2026-09-01 (-7d) | 2027-01-20 → 2027-03-15 (+54d) |  |  |  |
| 1 | **Civil work** | 2026-09-08 → 2026-09-01 (-7d) | 2026-11-26 → 2027-01-09 (+44d) |  |  |  |
| 1 | **Sup Structure** | 2026-09-08 → 2026-09-01 (-7d) | 2026-10-13 → 2026-11-25 (+43d) |  |  |  |
| CO-UB-LS-220 | Excavation Work for for Lift Station | 2026-09-08 → 2026-09-01 A (-7d) | 2026-09-15 → 2026-09-08 A (-7d) | 0% → 100% | 7.5d → none | CO-UB-PS-100, ENG-SH-LS-A-170, PRO-LS-CV-1DL-40, PRO-LS-CV-DL-50 → CO-UB-PS-100, ENG-SH-LS-A-170 |
| CO-UB-LS-230 | pouring P.C Conceret for Lift Station | 2026-09-15 → 2026-09-08 A (-7d) | 2026-09-21 → 2026-09-12 A (-9d) | 0% → 100% | 7.5d → none | CO-UB-LS-220 → CO-UB-LS-220, PRO-FE-CV-MF-60 |
| CO-UB-LS-240 | Formwork for Foundation for Lift Station | 2026-09-21 → 2026-11-05 (+45d) | 2026-09-28 → 2026-11-10 (+43d) |  | 7.5d → -30d |  |
| CO-UB-LS-250 | Steel fixing for Foundation for Lift Station | 2026-09-28 → 2026-11-11 (+44d) | 2026-10-05 → 2026-11-17 (+43d) |  | 7.5d → -30d |  |
| CO-UB-LS-260 | pouring for Foundation for Lift Station | 2026-10-05 → 2026-11-18 (+44d) | 2026-10-06 → 2026-11-18 (+43d) |  | 7.5d → -30d |  |
| CO-UB-LS-270 | curing and deshuttering formwork Lift Station | 2026-10-06 → 2026-11-19 (+44d) | 2026-10-08 → 2026-11-21 (+44d) |  | 7.5d → -30d |  |
| CO-UB-LS-280 | Backfilling and compaction work for pump station | 2026-10-08 → 2026-11-22 (+45d) | 2026-10-13 → 2026-11-25 (+43d) |  | 7.5d → -30d |  |
| 2 | **Super structure** | 2026-10-13 → 2026-11-26 (+44d) | 2026-11-26 → 2027-01-09 (+44d) |  |  |  |
| CO-UB-LS-290 | Formwork for Wall and columns for Lift Station | 2026-10-13 → 2026-11-26 (+44d) | 2026-10-21 → 2026-12-03 (+43d) |  | 7.5d → -30d |  |
| CO-UB-LS-300 | Steel fixing for Wall columns | 2026-10-21 → 2026-12-05 (+45d) | 2026-11-01 → 2026-12-14 (+43d) |  | 7.5d → -30d |  |
| CO-UB-LS-310 | pouring for Wall columns | 2026-11-01 → 2026-12-15 (+44d) | 2026-11-02 → 2026-12-15 (+43d) |  | 7.5d → -30d |  |
| CO-UB-LS-320 | curing and deshuttering formwork for Wall columns | 2026-11-02 → 2026-12-16 (+44d) | 2026-11-04 → 2026-12-17 (+43d) |  | 7.5d → -30d | CO-UB-LS-310 → CO-UB-LS-310, PRO-LS-CV-DL-50 |
| CO-UB-LS-330 | Waterproofing for Walls columns | 2026-11-04 → 2026-12-19 (+45d) | 2026-11-09 → 2026-12-22 (+43d) |  | 7.5d → -30d |  |
| CO-UB-LS-340 | Formwork for pump roof | 2026-11-09 → 2026-12-23 (+44d) | 2026-11-15 → 2026-12-28 (+43d) |  | 7.5d → -30d |  |
| CO-UB-LS-350 | Steel fixing for pump roof | 2026-11-15 → 2026-12-29 (+44d) | 2026-11-22 → 2027-01-04 (+43d) |  | 7.5d → -30d |  |
| CO-UB-LS-360 | pouring for pump roof | 2026-11-22 → 2027-01-05 (+44d) | 2026-11-23 → 2027-01-05 (+43d) |  | 7.5d → -30d |  |
| CO-UB-LS-370 | curing and deshuttering formwork for pump roof | 2026-11-23 → 2027-01-06 (+44d) | 2026-11-26 → 2027-01-09 (+44d) |  | 7.5d → -30d |  |
| 2 | **Architectural work** | 2026-11-26 → 2027-01-10 (+45d) | 2026-12-14 → 2027-01-26 (+43d) |  |  |  |
| CO-UB-LS-380 | Executing Masonry Works for Pump station building | 2026-11-26 → 2027-01-10 (+45d) | 2026-12-05 → 2027-01-17 (+43d) |  | 7.5d → -30d |  |
| CO-UB-LS-390 | Executing Plastering Works for Pump station building | 2026-12-05 → 2027-01-18 (+44d) | 2026-12-14 → 2027-01-26 (+43d) |  | 7.5d → -30d |  |
| 3 | **Electrical work** | 2026-12-14 → 2027-01-27 (+44d) | 2027-01-20 → 2027-03-15 (+54d) |  |  |  |
| CO-UB-LS-400 | Lighting system for pump house | 2026-12-14 → 2027-01-27 (+44d) | 2026-12-23 → 2027-02-04 (+43d) |  | 7.5d → -30d |  |
| CO-UB-LS-420 | Wiring connection for pump house | 2026-12-23 → 2027-02-06 (+45d) | 2026-12-30 → 2027-02-14 (+46d) |  | 7.5d → -30d |  |
| CO-UB-LS-440 | Sockets and switches for pump house | 2026-12-30 → 2027-02-14 (+46d) | 2027-01-06 → 2027-02-22 (+47d) |  | 7.5d → -30d |  |

| ID | Task | Start | Finish | Complete | Total float |
| --- | --- | --- | --- | --- | --- |
| CO-UB-LS-460 | Installation for Distribution boards for pump house | 2027-01-06 → 2027-02-23 (+48d) | 2027-01-13 → 2027-03-03 (+49d) |  | 7.5d → -30d |
| CO-UB-LS-480 | Executing Earthing and bonding for the entire system | 2027-01-13 → 2027-03-04 (+50d) | 2027-01-20 → 2027-03-15 (+54d) |  | 7.5d → -30d |
| 4 | **Mechanical work** | 2026-12-14 → 2027-01-27 (+44d) | 2027-01-18 → 2027-03-13 (+54d) |  |  |
| CO-UB-LS-410 | Internal pipe installation | 2026-12-14 → 2027-01-27 (+44d) | 2026-12-23 → 2027-02-04 (+43d) |  | 9.5d → -28d |
| CO-UB-LS-430 | Guide rails & lifting chains installation | 2026-12-23 → 2027-02-06 (+45d) | 2026-12-31 → 2027-02-15 (+46d) |  | 9.5d → -28d |
| CO-UB-LS-450 | ExeValve installation | 2026-12-31 → 2027-02-15 (+46d) | 2027-01-09 → 2027-02-25 (+47d) |  | 9.5d → -28d |
| CO-UB-LS-470 | Installation of pumps | 2027-01-09 → 2027-02-25 (+47d) | 2027-01-18 → 2027-03-13 (+54d) |  | 9.5d → -28d |
| 5 | **Potable Water Tank** | 2026-08-24 → 2026-11-17 (+85d) | 2026-11-09 → 2027-02-01 (+84d) |  |  |
| 1 | **Eearth Work** | 2026-08-24 → 2026-11-17 (+85d) | 2026-09-06 → 2026-11-30 (+85d) |  |  |
| CO-UB-PWT-100 | Excavation work for tank foundation tank formation level | 2026-08-24 → 2026-11-17 (+85d) | 2026-08-31 → 2026-11-24 (+85d) |  | 13d → -59d |
| CO-UB-PWT-110 | Soil replacement Up to tank formation level | 2026-09-01 → 2026-11-25 (+85d) | 2026-09-06 → 2026-11-30 (+85d) |  | 13d → -59d |
| 2 | **Structural Work** | 2026-09-07 → 2026-12-01 (+85d) | 2026-09-24 → 2026-12-17 (+84d) |  |  |
| CO-UB-PWT-120 | Plain Concrete works | 2026-09-07 → 2026-12-01 (+85d) | 2026-09-09 → 2026-12-03 (+85d) |  | 13d → -59d |
| CO-UB-PWT-130 | Form work for Tank Foundation | 2026-09-10 → 2026-12-05 (+86d) | 2026-09-15 → 2026-12-09 (+85d) |  | 13d → -59d |
| CO-UB-PWT-140 | Steel Reinforcement work for Tank Foundation | 2026-09-16 → 2026-12-10 (+85d) | 2026-09-22 → 2026-12-16 (+85d) |  | 13d → -59d |
| CO-UB-PWT-150 | Casting concrete for Tank Foundation | 2026-09-24 → 2026-12-17 (+84d) | 2026-09-24 → 2026-12-17 (+84d) |  | 13d → -59d |
| 3 | **Tank Shell Erection&Roof Installation** | 2026-09-26 → 2026-12-19 (+84d) | 2026-10-20 → 2027-01-12 (+84d) |  |  |
| CO-UB-PWT-160 | Bottom ring installation | 2026-09-26 → 2026-12-19 (+84d) | 2026-10-01 → 2026-12-24 (+84d) |  | 13d → -59d |
| CO-UB-PWT-170 | shell erection | 2026-10-03 → 2026-12-26 (+84d) | 2026-10-11 → 2027-01-03 (+84d) |  | 13d → -59d |
| CO-UB-PWT-180 | Aluminum dome / steel roof installation | 2026-10-12 → 2027-01-04 (+84d) | 2026-10-20 → 2027-01-12 (+84d) |  | 13d → -59d |
| 4 | **Mechanical Work&Accessories** | 2026-10-21 → 2027-01-13 (+84d) | 2026-11-09 → 2027-02-01 (+84d) |  |  |
| CO-UB-PWT-190 | Inlet / outlet piping connections | 2026-10-21 → 2027-01-13 (+84d) | 2026-10-27 → 2027-01-19 (+84d) |  | 13d → -59d |
| CO-UB-PWT-200 | installation Valves | 2026-10-28 → 2027-01-20 (+84d) | 2026-11-03 → 2027-01-26 (+84d) |  | 13d → -59d |
| CO-UB-PWT-210 | Ladders, platforms & handrails | 2026-11-04 → 2027-01-27 (+84d) | 2026-11-09 → 2027-02-01 (+84d) |  | 13d → -59d |
| 2 | **IrrigationTank** | 2026-11-10 → 2027-02-02 (+84d) | 2027-01-11 → 2027-04-15 (+94d) |  |  |
| 1 | **Eearth Work** | 2026-11-10 → 2027-02-02 (+84d) | 2026-11-22 → 2027-02-16 (+86d) |  |  |
| CO-UB-IRT-140 | Excavation work for tank foundation tank formation level | 2026-11-10 → 2027-02-02 (+84d) | 2026-11-16 → 2027-02-09 (+85d) |  | 13d → -59d |
| CO-UB-IRT-150 | Soil replacement Up to tank formation level | 2026-11-17 → 2027-02-09 (+84d) | 2026-11-22 → 2027-02-16 (+86d) |  | 13d → -59d |
| 2 | **Structural Work** | 2026-11-23 → 2027-02-17 (+86d) | 2026-12-09 → 2027-03-14 (+95d) |  |  |
| CO-UB-IRT-160 | Plain Concrete works | 2026-11-23 → 2027-02-17 (+86d) | 2026-11-25 → 2027-02-21 (+88d) |  | 13d → -59d |
| CO-UB-IRT-170 | Form work for Tank Foundation | 2026-11-26 → 2027-02-22 (+88d) | 2026-12-02 → 2027-03-02 (+90d) |  | 13d → -59d |
| CO-UB-IRT-180 | Steel Reinforcement work for Tank Foundation | 2026-12-03 → 2027-03-02 (+89d) | 2026-12-08 → 2027-03-13 (+95d) |  | 13d → -59d |
| CO-UB-IRT-190 | Casting concrete for Tank Foundation | 2026-12-09 → 2027-03-14 (+95d) | 2026-12-09 → 2027-03-14 (+95d) |  | 13d → -59d |
| 3 | **Tank Shell Erection&Roof Installation** | 2026-12-10 → 2027-03-15 (+95d) | 2026-12-30 → 2027-04-04 (+95d) |  |  |
| CO-UB-IRT-200 | Bottom ring installation | 2026-12-10 → 2027-03-15 (+95d) | 2026-12-16 → 2027-03-21 (+95d) |  | 13d → -59d |
| CO-UB-IRT-210 | shell erection | 2026-12-17 → 2027-03-22 (+95d) | 2026-12-23 → 2027-03-28 (+95d) |  | 13d → -59d |
| CO-UB-IRT-220 | Aluminum dome / steel roof installation | 2026-12-24 → 2027-03-29 (+95d) | 2026-12-30 → 2027-04-04 (+95d) |  | 13d → -59d |
| 4 | **Mechanical Work&Accessories** | 2026-12-31 → 2027-04-05 (+95d) | 2027-01-11 → 2027-04-15 (+94d) |  |  |
| CO-UB-IRT-230 | Inlet / outlet piping connections | 2026-12-31 → 2027-04-05 (+95d) | 2027-01-04 → 2027-04-08 (+94d) |  | 13d → -59d |
| CO-UB-IRT-240 | installation Valves | 2027-01-05 → 2027-04-10 (+95d) | 2027-01-09 → 2027-04-13 (+94d) |  | 13d → -59d |
| CO-UB-IRT-250 | Ladders, platforms & handrails | 2027-01-10 → 2027-04-14 (+94d) | 2027-01-11 → 2027-04-15 (+94d) |  | 13d → -59d |
| 1 | **Control Room** | 2026-09-15 → 2026-08-02 (-44d) | 2027-01-20 → 2027-03-02 (+41d) |  |  |
| 5 | **Civil Work** | 2026-09-15 → 2026-08-02 (-44d) | 2026-11-04 → 2026-12-09 (+35d) |  |  |
| CO-UB-CR-100 | Excavation Work For Control Room Foundation | 2026-09-15 → 2026-08-02 A (-44d) | 2026-09-24 → 2026-09-05 A (-19d) | 0% → 100% | 25.5d → none |
| CO-UB-CR-110 | Pouring for Plain Concrete | 2026-09-24 → 2026-09-08 A (-16d) | 2026-09-30 → 2026-09-12 A (-18d) | 0% → 100% | 25.5d → none |
| CO-UB-CR-120 | Pouring R.C Footing For Control Room | 2026-09-30 → 2026-11-05 (+36d) | 2026-10-17 → 2026-11-21 (+35d) |  | 25.5d → -5d |
| CO-UB-CR-130 | Pouring R.C Columns For Control Room | 2026-10-17 → 2026-11-22 (+36d) | 2026-10-26 → 2026-11-30 (+35d) |  | 25.5d → -5d |
| CO-UB-CR-140 | Pouring Beams and Slab For Control Room | 2026-10-26 → 2026-12-01 (+36d) | 2026-11-04 → 2026-12-09 (+35d) |  | 25.5d → -5d |
| 6 | **Finishing Work** | 2026-11-04 → 2026-12-10 (+36d) | 2027-01-20 → 2027-03-02 (+41d) |  |  |
| 1 | **Architictural work** | 2026-11-04 → 2026-12-10 (+36d) | 2026-12-21 → 2027-01-25 (+35d) |  |  |
| CO-UB-CR-150 | Brick Work For Control Room | 2026-11-04 → 2026-12-10 (+36d) | 2026-11-15 → 2026-12-20 (+35d) |  | 25.5d → -5d |
| CO-UB-CR-160 | Thermal & Moisture Protection Work for Control Room | 2026-11-15 → 2026-12-21 (+36d) | 2026-11-23 → 2026-12-28 (+35d) |  | 25.5d → -5d |
| CO-UB-CR-200 | Install For Curtian Wall and Windows and Doors | 2026-11-23 → 2026-12-29 (+36d) | 2026-12-02 → 2027-01-06 (+35d) |  | 25.5d → -5d |
| CO-UB-CR-240 | External Finshing Work (Walls and Floor) | 2026-12-02 → 2027-01-07 (+36d) | 2026-12-12 → 2027-01-16 (+35d) |  | 25.5d → -5d |
| CO-UB-CR-250 | Internal Finshing Work (Walls,Floor and Ceiling) | 2026-12-12 → 2027-01-17 (+36d) | 2026-12-21 → 2027-01-25 (+35d) |  | 25.5d → -5d |
| 3 | **Mechanical Work** | 2026-11-15 → 2026-12-21 (+36d) | 2027-01-02 → 2027-02-06 (+35d) |  |  |
| 3 | **HVAC System** | 2026-11-15 → 2026-12-21 (+36d) | 2027-01-02 → 2027-02-06 (+35d) |  |  |
| CO-UB-CR-170 | Install of Refrigerant Piping ( fabricated metal ducts with flanges complete with supports, vanes, dampers ) | 2026-11-15 → 2026-12-21 (+36d) | 2026-11-19 → 2026-12-24 (+35d) |  | 38.5d → 8d |
| CO-UB-CR-260 | Install of Mini split actual capacity 2 Ton and Ducted split actual capacity 4 Ton | 2026-12-21 → 2027-01-26 (+36d) | 2026-12-29 → 2027-02-02 (+35d) |  | 36.5d → 6d |
| CO-UB-CR-310 | Install of Air Grills 150mm x150mm and Air Diffuser 600mm x 600mm | 2026-12-29 → 2027-02-03 (+36d) | 2027-01-02 → 2027-02-06 (+35d) |  | 36.5d → 6d |
| 4 | **Fire Fitting System** | 2026-11-19 → 2026-12-26 (+37d) | 2026-12-24 → 2027-01-28 (+35d) |  |  |
| CO-UB-CR-180 | Installation & Testing of 2 hours Fire rated system for closing the openings between rooms with help of Rock wool | 2026-11-19 → 2026-12-26 (+37d) | 2026-11-24 → 2026-12-29 (+35d) |  | 38.5d → 8d |
| CO-UB-CR-270 | Install Fire Extinguishers | 2026-12-21 → 2027-01-26 (+36d) | 2026-12-24 → 2027-01-28 (+35d) |  | 43.5d → 13d |
| 4 | **Electrical Work** | 2026-11-24 → 2026-12-30 (+36d) | 2027-01-14 → 2027-02-22 (+39d) |  |  |
| 1 | **LV Power** | 2026-12-21 → 2027-01-26 (+36d) | 2027-01-07 → 2027-02-14 (+38d) |  |  |
| CO-UB-CR-190 | Install of Distribution board For Control Room | 2026-12-21 → 2027-01-26 (+36d) | 2026-12-27 → 2027-01-31 (+35d) |  | 31.5d → 1d |
| CO-UB-CR-220 | Install of Earting Cable for Control Room | 2026-12-27 → 2027-02-01 (+36d) | 2027-01-02 → 2027-02-06 (+35d) |  | 31.5d → 1d |
| CO-UB-CR-280 | Install of Socket outlet and LED Lighting | 2027-01-02 → 2027-02-07 (+36d) | 2027-01-07 → 2027-02-14 (+38d) |  | 31.5d → 1d |
| 3 | **Fire Detection And Alarm System** | 2026-11-24 → 2026-12-30 (+36d) | 2027-01-14 → 2027-02-22 (+39d) |  |  |
| CO-UB-CR-210 | Install of 2C x 1.5 Sqm FR Rated Armored - Cable For Loop Wiring | 2026-11-24 → 2026-12-30 (+36d) | 2026-11-30 → 2027-01-04 (+35d) |  | 38.5d → 8d |

| ID | Task | Start | Finish | Total float | Other |
| --- | --- | --- | --- | --- | --- |
| CO-UB-CR-230 | Install of Transmission Communication cable - Fiber Optics 12Core | 2026-11-30 → 2027-01-05 (+36d) | 2026-12-06 → 2027-01-10 (+35d) | 38.5d → 8d |  |
| CO-UB-CR-290 | Install of power supply system for fire alarm control panel | 2026-12-21 → 2027-01-26 (+36d) | 2026-12-27 → 2027-01-31 (+35d) | 25.5d → -5d |  |
| CO-UB-CR-300 | Install of Fire Alarm Control panel | 2026-12-27 → 2027-02-01 (+36d) | 2027-01-03 → 2027-02-07 (+35d) | 25.5d → -5d |  |
| CO-UB-CR-320 | Installation of the addressable manual call point with operation safety glass breaking | 2027-01-03 → 2027-02-08 (+36d) | 2027-01-06 → 2027-02-11 (+36d) | 25.5d → -5d |  |
| CO-UB-CR-330 | Install of the photoelectric heat & smoke detector | 2027-01-06 → 2027-02-13 (+38d) | 2027-01-10 → 2027-02-16 (+37d) | 25.5d → -5d |  |
| CO-UB-CR-340 | Install of Sounder With Beacon | 2027-01-06 → 2027-02-13 (+38d) | 2027-01-10 → 2027-02-16 (+37d) | 25.5d → -5d |  |
| CO-UB-CR-350 | Install of Addressable Control module | 2027-01-10 → 2027-02-17 (+38d) | 2027-01-14 → 2027-02-22 (+39d) | 25.5d → -5d |  |
| 2 | **Furnitures work** | 2027-01-14 → 2027-02-23 (+40d) | 2027-01-20 → 2027-03-02 (+41d) |  |  |
| CO-UB-CR-360 | Office Chairs,Tables and Stand | 2027-01-14 → 2027-02-23 (+40d) | 2027-01-20 → 2027-03-02 (+41d) | 25.5d → -5d |  |
| ML | **Softscape and Planting Works** | 2026-11-07 → 2027-01-11 (+65d) | 2026-12-22 → 2027-03-02 (+70d) |  |  |
| 1 | **Planting Beds Preparation** | 2026-11-07 → 2027-01-11 (+65d) | 2026-12-01 → 2027-02-03 (+64d) |  |  |
| CO-LS-PL-100 | Excavation of planting beds | 2026-11-07 → 2027-01-11 (+65d) | 2026-11-15 → 2027-01-18 (+64d) | 12.75d → -43d |  |
| CO-LS-PL-110 | Supply & placement of suitable topsoil | 2026-11-15 → 2027-01-19 (+65d) | 2026-11-23 → 2027-01-26 (+64d) | 12.75d → -43d |  |
| CO-LS-PL-120 | Soil improvement (fertilizer, compost, additives) | 2026-11-23 → 2027-01-27 (+65d) | 2026-12-01 → 2027-02-03 (+64d) | 12.75d → -43d |  |
| 2 | **Supports & Protection** | 2026-12-01 → 2027-02-04 (+65d) | 2026-12-08 → 2027-02-11 (+65d) |  |  |
| CO-LS-PL-130 | installation of plant supports / stakes | 2026-12-01 → 2027-02-04 (+65d) | 2026-12-05 → 2027-02-07 (+64d) | 12.75d → -43d |  |
| CO-LS-PL-140 | Ties and protection materials | 2026-12-05 → 2027-02-08 (+65d) | 2026-12-08 → 2027-02-11 (+65d) | 12.75d → -43d |  |
| 3 | **Plant Supply** | 2026-12-08 → 2027-02-13 (+67d) | 2026-12-12 → 2027-02-16 (+66d) |  |  |
| CO-LS-PL-150 | installation of trees | 2026-12-08 → 2027-02-13 (+67d) | 2026-12-12 → 2027-02-16 (+66d) | 12.75d → -43d |  |
| 4 | **Site Furnishings** | 2026-12-12 → 2027-02-17 (+67d) | 2026-12-22 → 2027-03-02 (+70d) |  |  |
| CO-LS-PL-160 | installation of Seating benches | 2026-12-12 → 2027-02-17 (+67d) | 2026-12-15 → 2027-02-21 (+68d) | 12.75d → -43d |  |
| CO-LS-PL-170 | tone boulders ï¿½ placement & fixing Works | 2026-12-15 → 2027-02-22 (+69d) | 2026-12-19 → 2027-02-25 (+68d) | 12.75d → -43d | was named tone boulders placement & fixing Works |
| CO-LS-PL-180 | Gravel Works | 2026-12-19 → 2027-02-25 (+68d) | 2026-12-22 → 2027-03-02 (+70d) | 12.75d → -43d |  |
| 1 | **Fence and Gaurd Room** |  | 2027-02-23 → 2027-04-25 (+61d) |  |  |
| 1 | **Gaurd Room Work** | 2026-08-29 → 2026-11-21 (+84d) | 2027-01-20 → 2027-04-25 (+95d) |  |  |
| 1 | **Civil Work** | 2026-08-29 → 2026-11-21 (+84d) | 2026-10-15 → 2027-01-07 (+84d) |  |  |
| A1000 | Excavation Work For Gaurd Room Foundation | 2026-08-29 → 2026-11-21 (+84d) | 2026-09-05 → 2026-11-29 (+85d) | 25d → -46.5d |  |
| A1010 | Pouring for Plain Concrete | 2026-09-06 → 2026-11-29 (+84d) | 2026-09-09 → 2026-12-03 (+85d) | 25d → -46.5d |  |
| A1020 | Pouring R.C Footing For Gaurd Room | 2026-09-10 → 2026-12-03 (+84d) | 2026-09-22 → 2026-12-16 (+85d) | 25d → -46.5d |  |
| A1030 | Pouring R.C Columns For Gaurd Room | 2026-09-24 → 2026-12-16 (+83d) | 2026-10-05 → 2026-12-28 (+84d) | 25d → -46.5d |  |
| A1040 | Pouring Beams and Slab For Gaurd Room | 2026-10-06 → 2026-12-28 (+83d) | 2026-10-15 → 2027-01-07 (+84d) | 25d → -46.5d |  |
| 2 | **Finishing Work** | 2026-10-17 → 2027-01-07 (+82d) | 2027-01-20 → 2027-04-25 (+95d) |  |  |
| 1 | **Architictural work** | 2026-10-17 → 2027-01-07 (+82d) | 2026-12-08 → 2027-03-13 (+95d) |  |  |
| A1050 | Brick Work For Gaurd Room | 2026-10-17 → 2027-01-07 (+82d) | 2026-10-26 → 2027-01-18 (+84d) | 25d → -46.5d |  |
| A1060 | Thermal & Moisture Protection Work for Gaurd Room | 2026-10-27 → 2027-01-18 (+83d) | 2026-11-03 → 2027-01-26 (+84d) | 31d → -40.5d |  |
| A1070 | Install For Curtian Wall and Windows and Doors | 2026-11-11 → 2027-02-02 (+83d) | 2026-11-19 → 2027-02-13 (+86d) | 25d → -46.5d |  |
| A1080 | External Finshing Work (Walls and Floor) | 2026-11-21 → 2027-02-13 (+84d) | 2026-11-29 → 2027-02-24 (+87d) | 25d → -46.5d |  |
| A1090 | Internal Finshing Work (Walls,Floor and Ceiling) | 2026-11-30 → 2027-02-25 (+87d) | 2026-12-08 → 2027-03-13 (+95d) | 25d → -46.5d |  |
| 3 | **Mechanical Work** | 2026-10-27 → 2027-01-18 (+83d) | 2026-12-20 → 2027-03-24 (+94d) |  |  |
| 1 | **Sanitary Drainage & Plumbing System** | 2026-10-27 → 2027-01-18 (+83d) | 2026-11-10 → 2027-02-02 (+84d) |  |  |
| A1110 | Install Sanitary Piping System (UPVC) | 2026-10-27 → 2027-01-18 (+83d) | 2026-10-31 → 2027-01-23 (+84d) | 25d → -46.5d |  |
| A1120 | Install Base mounted flush tank water Western water closet system | 2026-11-01 → 2027-01-23 (+83d) | 2026-11-07 → 2027-01-30 (+84d) | 25d → -46.5d |  |
| A1130 | Install 1 meter length 10mm diameter Flexible Hose and Gate Valves and Slow Closing Valve | 2026-11-08 → 2027-01-30 (+83d) | 2026-11-10 → 2027-02-02 (+84d) | 25d → -46.5d |  |
| 2 | **Water Supply System** | 2026-10-27 → 2027-01-18 (+83d) | 2026-12-10 → 2027-03-15 (+95d) |  |  |
| A1240 | Install GRP water tanks capacity of each 1000 liter | 2026-10-27 → 2027-01-18 (+83d) | 2026-10-29 → 2027-01-21 (+84d) | 26d → -45.5d |  |
| A1140 | Install for Cold Water Pipe complete with joints, angles, reducer etc. | 2026-10-31 → 2027-01-21 (+82d) | 2026-11-04 → 2027-01-27 (+84d) | 26d → -45.5d |  |
| A1150 | Install for Hot Water Pipe complete with joints, angles, reducer etc. | 2026-11-05 → 2027-01-27 (+83d) | 2026-11-09 → 2027-02-01 (+84d) | 26d → -45.5d |  |
| A1160 | Install for Isolation Valve,Spray Head,Roof Drain,Floor Drain,Gully teap,Vend on Roof to exhaust air | 2026-11-10 → 2027-02-01 (+83d) | 2026-11-12 → 2027-02-04 (+84d) | 45d → -26.5d |  |
| A1170 | Install of Inspection chamber, size 800x900x1000 | 2026-11-14 → 2027-02-04 (+82d) | 2026-11-15 → 2027-02-07 (+84d) | 45d → -26.5d |  |
| A1180 | Install OF Electric Water Heater set with connection and Water meter complete with accessories | 2026-12-09 → 2027-03-13 (+94d) | 2026-12-10 → 2027-03-15 (+95d) | 25d → -46.5d |  |
| 3 | **HVAC System** | 2026-11-01 → 2027-01-23 (+83d) | 2026-12-20 → 2027-03-24 (+94d) |  |  |
| A1200 | Install of Refrigerant Piping ( fabricated metal ducts with flanges complete with supports, vanes, dampers ) | 2026-11-01 → 2027-01-23 (+83d) | 2026-11-04 → 2027-01-27 (+84d) | 46d → -25.5d |  |
| A1190 | Install of Mini split actual capacity 2 Ton and Ducted split actual capacity 4 Ton | 2026-12-09 → 2027-03-13 (+94d) | 2026-12-16 → 2027-03-21 (+95d) | 47d → -24.5d |  |
| A1210 | Install of Air Grills 150mm x150mm and Air Diffuser 600mm x 600mm | 2026-12-17 → 2027-03-21 (+94d) | 2026-12-20 → 2027-03-24 (+94d) | 47d → -24.5d |  |
| 4 | **Fire Fitting System** | 2026-11-05 → 2027-01-27 (+83d) | 2026-12-15 → 2027-03-20 (+95d) |  |  |
| A1220 | Installation & Testing of 2 hours Fire rated system for closing the openings between rooms with help of Rock wool | 2026-11-05 → 2027-01-27 (+83d) | 2026-11-11 → 2027-02-03 (+84d) | 46d → -25.5d |  |
| A1230 | Install Fire Extinguishers | 2026-12-09 → 2027-03-13 (+94d) | 2026-12-15 → 2027-03-20 (+95d) | 51d → -20.5d |  |
| 4 | **Electrical Work** | 2026-11-05 → 2027-01-27 (+83d) | 2027-01-14 → 2027-04-19 (+95d) |  |  |
| 1 | **LV Power** | 2026-11-05 → 2027-01-27 (+83d) | 2026-12-14 → 2027-03-18 (+94d) |  |  |
| A1250 | Install of Distribution board For Gaurd Room | 2026-11-05 → 2027-01-27 (+83d) | 2026-11-10 → 2027-02-02 (+84d) | 46d → -25.5d |  |
| A1270 | Install of Earting Cable for Gaurd Room | 2026-11-11 → 2027-02-02 (+83d) | 2026-11-16 → 2027-02-08 (+84d) | 46d → -25.5d |  |
| A1260 | Install of Socket outlet and LED Lighting | 2026-12-09 → 2027-03-13 (+94d) | 2026-12-14 → 2027-03-18 (+94d) | 52d → -19.5d |  |
| 3 | **Fire Detection And Alarm System** | 2026-11-12 → 2027-02-03 (+83d) | 2027-01-02 → 2027-04-06 (+94d) |  |  |
| A1340 | Install of 2C x 1.5 Sqm FR Rated Armored - Cable For Loop Wiring | 2026-11-12 → 2027-02-03 (+83d) | 2026-11-17 → 2027-02-09 (+84d) | 46d → -25.5d |  |
| A1350 | Install of Transmission Communication cable - Fiber Optics 12Core | 2026-11-18 → 2027-02-10 (+84d) | 2026-11-23 → 2027-02-17 (+86d) | 46d → -25.5d | resources Transmission Communication cable - Fiber Optics 12Core [3731.34]; Transmission Communication cable - Ethernet Cable [746.27]; Supply, install to site and installation of power cable [2388.06]; Fire Fighter s Telephone Centre [1.49]; Fireman s Telephone Jack [2.99]; Voice Command Center [1.49]; Unskilled Labor [40 h]; Electrical Technician [80 h] → Transmission Communication cable - Fiber Optics 12Core [3731.34]; Transmission Communication cable - Ethernet Cable [746.27]; Supply, install to site and installation of power cable [2388.06]; Fire Fighter’s Telephone Centre [1.49]; Fireman’s Telephone Jack [2.99]; Voice Command Center [1.49]; Unskilled Labor [40 h]; Electrical Technician [80 h] |
| A1360 | Install of power supply system for fire alarm control panel | 2026-12-09 → 2027-03-13 (+94d) | 2026-12-14 → 2027-03-18 (+94d) | 33d → -38.5d |  |
| A1280 | Install of Fire Alarm Control panel | 2026-12-15 → 2027-03-18 (+93d) | 2026-12-21 → 2027-03-25 (+94d) | 33d → -38.5d |  |
| A1290 | Installation of the addressable manual call point with operation safety glass breaking | 2026-12-22 → 2027-03-25 (+93d) | 2026-12-24 → 2027-03-29 (+95d) | 33d → -38.5d |  |
| A1300 | Install of the photoelectric heat & smoke detector | 2026-12-26 → 2027-03-29 (+93d) | 2026-12-28 → 2027-04-01 (+94d) | 33d → -38.5d |  |
| A1310 | Install of Sounder With Beacon | 2026-12-26 → 2027-03-29 (+93d) | 2026-12-28 → 2027-04-01 (+94d) | 33d → -38.5d |  |

| ID | Task | Start | Finish | Complete | Total float | Predecessors | Other |
| --- | --- | --- | --- | --- | --- | --- | --- |
| A1320 | Install of Addressable Control module | 2026-12-29 → 2027-04-01 (+93d) | 2027-01-02 → 2027-04-06 (+94d) |  | 33d → -38.5d |  |  |
| 2 | **Security System** | 2026-12-12 → 2027-03-15 (+93d) | 2027-01-14 → 2027-04-19 (+95d) |  |  |  |  |
| A1580 | Install 8 Port Industrial PoE Switch 10/100BaseT (0 deg to +70 deg. Celsius) | 2026-12-12 → 2027-03-15 (+93d) | 2026-12-16 → 2027-03-21 (+95d) |  | 25d → -46.5d |  |  |
| A1590 | Optical Fiber,48 Core Splice Closure | 2026-12-17 → 2027-03-21 (+94d) | 2026-12-20 → 2027-03-24 (+94d) |  | 26d → -45.5d |  |  |
| A1650 | Pole/Bollard mounted IP( PoE) and 12U rack dimension | 2026-12-17 → 2027-03-21 (+94d) | 2026-12-21 → 2027-03-25 (+94d) |  | 25d → -46.5d |  |  |
| A1600 | Boom Barrier at Security Guard Room | 2026-12-22 → 2027-03-25 (+93d) | 2026-12-27 → 2027-03-31 (+94d) |  | 25d → -46.5d |  |  |
| A1610 | Pedestrian turnstile at Security Guard Room | 2026-12-28 → 2027-03-31 (+93d) | 2027-01-02 → 2027-04-06 (+94d) |  | 25d → -46.5d |  |  |
| A1620 | Access Control Unit and Access Card Reader | 2027-01-03 → 2027-04-06 (+93d) | 2027-01-06 → 2027-04-11 (+95d) |  | 25d → -46.5d |  |  |
| A1630 | Magnetic Lock and Break Glass and Exit Push button | 2027-01-07 → 2027-04-11 (+94d) | 2027-01-11 → 2027-04-15 (+94d) |  | 25d → -46.5d |  |  |
| A1640 | Door Sensor and Biometrics Reader | 2027-01-12 → 2027-04-15 (+93d) | 2027-01-14 → 2027-04-19 (+95d) |  | 25d → -46.5d |  |  |
| 2 | **Furnitures work** | 2027-01-16 → 2027-04-19 (+93d) | 2027-01-20 → 2027-04-25 (+95d) |  |  |  |  |
| A1100 | Office Chairs,Tables and Stand | 2027-01-16 → 2027-04-19 (+93d) | 2027-01-20 → 2027-04-25 (+95d) |  | 25d → -46.5d |  |  |
| 2 | **Fence Work** |  | 2027-02-23 → 2027-04-14 (+50d) |  |  |  |  |
| 1 | **Northern Fence N01:N03** |  | 2027-01-17 → 2027-01-24 (+7d) |  |  |  |  |
| 1 | **Civil Work** |  | 2026-09-01 → 2026-10-13 (+42d) |  |  |  |  |
| CO-SU-FE-N-CI-100 | Excavation Work For Northern Fence | 2026-07-28 A | 2026-08-01 A | 0% → 100% | -0.15d → none | ENG-SH-GR-A-200_R, PRO-FE-CV-DL-80 SS+3d, CO-EW-110_R SS+5d, PRO-FE-CV-MF-60 SS → ENG-SH-GR-A-200_R, PRO-FE-CV-DL-80 SS+3d, CO-EW-110_R SS+5d |  |
| CO-SU-FE-N-CI-110 | Pouring for Plain Concrete Northern Fence | 2026-08-02 A | 2026-08-05 → 2026-09-19 (+45d) | 0% → 95% | -0.15d → -33.5d |  |  |
| CO-SU-FE-N-CI-120 | Pouring R.C Footing For Northern Fence | 2026-08-05 → 2026-08-02 A (-3d) | 2026-08-12 → 2026-09-21 (+40d) | 0% → 41% | -0.15d → -33.5d | CO-SU-FE-N-CI-110 → CO-SU-FE-N-CI-110 SS |  |
| CO-SU-FE-N-CI-130 | Pouring R.C Columns For Northern Fence | 2026-08-12 → 2026-09-22 (+41d) | 2026-08-18 → 2026-09-28 (+41d) |  | -0.15d → -33.5d | CO-SU-FE-N-CI-120 → CO-SU-FE-N-CI-120, CO-SU-FE-N-CI-100 |  |
| CO-SU-FE-N-CI-140 | Pouring Beams For Northern Fence | 2026-08-29 → 2026-10-08 (+40d) | 2026-09-01 → 2026-10-13 (+42d) |  | 0.35d → -24.5d | CO-SU-FE-N-CI-130, CO-SU-FE-N-AR-100 → CO-SU-FE-N-CI-130, CO-SU-FE-N-AR-100, CO-SU-FE-WP1-CI-150 |  |
| 5 | **Finishing Work** | 2026-08-18 → 2026-09-29 (+42d) | 2027-01-17 → 2027-01-24 (+7d) |  |  |  |  |
| 3 | **Electrical Work** | 2026-08-29 → 2026-10-08 (+40d) | 2026-12-08 → 2027-01-12 (+35d) |  |  |  |  |
| CO-SU-FE-N-EL-100 | Trench excavation to receive 2 nos 50mm diameter PVC Conduit | 2026-08-29 → 2026-10-08 (+40d) | 2026-09-06 → 2026-10-18 (+42d) |  | 1d → -33.5d |  |  |
| CO-SU-FE-N-EL-110 | Trench excavation to receive 3 nos 50mm diameter PVC Conduit | 2026-08-29 → 2026-10-08 (+40d) | 2026-09-06 → 2026-10-18 (+42d) |  | 1d → -33.5d |  |  |
| CO-SU-FE-N-EL-120 | Fixing of Control cable,CAT6A cable | 2026-09-07 → 2026-10-18 (+41d) | 2026-09-16 → 2026-10-28 (+42d) |  | 1d → -33.5d |  |  |
| CO-SU-FE-N-EL-130 | Install 800mm x 800mm x 800mm height concrete handhole | 2026-09-07 → 2026-10-18 (+41d) | 2026-09-16 → 2026-10-28 (+42d) |  | 1d → -33.5d |  |  |
| CO-SU-FE-N-EL-140 | Hot dipped galvanized cable conduits for CAT6A cable and Control Cables embedded to wall | 2026-09-07 → 2026-10-18 (+41d) | 2026-09-15 → 2026-10-27 (+42d) |  | 2d → -32.5d |  |  |
| CO-SU-FE-N-EL-150 | Fixing Earthing Work (Earth Pit,Grounding rod,Tinned Copper wire) | 2026-09-17 → 2026-10-28 (+41d) | 2026-09-27 → 2026-11-07 (+41d) |  | 1d → -33.5d |  |  |
| CO-SU-FE-N-EL-160 | Field Equipment Cabinet enclosed outdoor complete with precast concrete footing, | 2026-09-28 → 2026-11-07 (+40d) | 2026-10-06 → 2026-11-16 (+41d) |  | 1d → -33.5d |  |  |
| CO-SU-FE-N-EL-170 | Fence Lightining 400V, 3PH, 60Hz lighting control panelï¿½ (LCP-02) | 2026-09-28 → 2026-11-07 (+40d) | 2026-10-06 → 2026-11-16 (+41d) |  | 1d → -33.5d |  | was named Fence Lightining 400V, 3PH, 60Hz lighting control panel (LCP-02) |
| CO-SU-FE-N-EL-180 | Install of direct buried armored cable 4C-16mm2 ,10mm2 | 2026-10-07 → 2026-11-16 (+40d) | 2026-10-17 → 2026-11-26 (+40d) |  | 1d → -33.5d |  |  |
| CO-SU-FE-N-EL-190 | Install 16mm2,10mm2 CU/PVC wire | 2026-10-07 → 2026-11-16 (+40d) | 2026-10-17 → 2026-11-26 (+40d) |  | 1d → -33.5d |  |  |
| CO-SU-FE-N-EL-200 | FEC-CCTV ( 4C-16mm2 CU/XLPE/PVC direct buried armored cable,16mm2 CU/PVC wire | 2026-10-07 → 2026-11-16 (+40d) | 2026-10-15 → 2026-11-25 (+41d) |  | 2d → -32.5d |  |  |
| CO-SU-FE-N-EL-210 | Junction Box for lighting fixture | 2026-10-18 → 2026-11-26 (+39d) | 2026-10-26 → 2026-12-06 (+41d) |  | 3d → -31.5d |  |  |
| CO-SU-FE-N-EL-220 | IR Intrusion Detection System Quad Beams | 2026-11-19 → 2026-12-24 (+35d) | 2026-11-29 → 2027-01-03 (+35d) |  | 38.5d → 8.5d |  |  |
| CO-SU-FE-N-EL-230 | Install of 38W, 230V, 1PH, 60Hz fence, led linear uplight lighting, IP66 | 2026-11-19 → 2026-12-24 (+35d) | 2026-11-30 → 2027-01-04 (+35d) |  | 37.5d → 7.5d |  |  |
| CO-SU-FE-N-EL-240 | Install, fixings, testing and commissioning 80W LED | 2026-11-30 → 2027-01-04 (+35d) | 2026-12-08 → 2027-01-12 (+35d) |  | 37.5d → 7.5d |  |  |
| 4 | **Architictural work** | 2026-08-18 → 2026-09-29 (+42d) | 2027-01-17 → 2027-01-24 (+7d) |  |  |  |  |
| CO-SU-FE-N-AR-100 | Install Brick Work For Northern Fence | 2026-08-18 → 2026-09-29 (+42d) | 2026-08-27 → 2026-10-08 (+42d) |  | 0.35d → -33.5d |  |  |
| CO-SU-FE-N-AR-110 | External plastering to walls and columns | 2026-10-18 → 2026-11-26 (+39d) | 2026-10-25 → 2026-12-05 (+41d) |  | 1d → -33.5d |  |  |
| CO-SU-FE-N-AR-120 | Install 50mm thick random cut stone cladding | 2026-10-26 → 2026-12-05 (+40d) | 2026-11-02 → 2026-12-13 (+41d) |  | 1d → -33.5d |  |  |
| CO-SU-FE-N-AR-130 | Install 2 coats of weatherproof paint at walls | 2026-11-03 → 2026-12-13 (+40d) | 2026-11-09 → 2026-12-20 (+41d) |  | 1d → -33.5d |  |  |
| CO-SU-FE-N-AR-140 | Install Stone coping 500mm,525mm | 2026-11-10 → 2026-12-20 (+40d) | 2026-11-14 → 2026-12-24 (+40d) |  | 1d → -33.5d |  |  |
| CO-SU-FE-N-AR-150 | Install MODON Signage | 2027-01-09 → 2027-01-16 (+7d) | 2027-01-17 → 2027-01-24 (+7d) |  | -0.15d → -6.5d |  |  |
| 2 | **Western Fence P1 ( W01:W06 )** | 2026-08-18 → 2026-08-02 (-16d) | 2027-01-26 → 2027-03-13 (+46d) |  |  |  |  |
| 1 | **Civil Work** | 2026-08-18 → 2026-08-02 (-16d) | 2026-11-01 → 2026-12-01 (+30d) |  |  |  |  |
| CO-SU-FE-WP1-CI-160 | Pouring for Plain Concrete Northern Fence | 2026-08-27 → 2026-08-02 A (-25d) | 2026-09-02 → 2026-09-20 (+18d) | 0% → 95% | -0.15d → -9d |  |  |
| CO-SU-FE-WP1-CI-170 | Pouring R.C Footing For Northern Fence | 2026-09-02 → 2026-08-02 A (-31d) | 2026-09-12 → 2026-10-13 (+31d) | 0% → 35% | -0.15d → -24.5d | CO-SU-FE-WP1-CI-160, CO-SU-FE-N-CI-140 → CO-SU-FE-WP1-CI-160 SS, CO-SU-FE-N-CI-140 FF |  |
| CO-SU-FE-WP1-CI-150 | Excavation Work For Northern Fence | 2026-08-18 A | 2026-08-27 A | 0% → 100% | -0.15d → none | CO-SU-FE-N-CI-120, CO-SU-FE-N-CI-130, CO-SU-FE-N-CI-130 FF → CO-SU-FE-N-CI-120 SS |  |
| CO-SU-FE-WP1-CI-180 | Pouring R.C Columns For Northern Fence | 2026-09-12 → 2026-10-13 (+31d) | 2026-10-01 → 2026-11-01 (+31d) |  | -0.15d → -24.5d | CO-SU-FE-WP1-CI-170 → CO-SU-FE-WP1-CI-170, CO-SU-FE-WP1-CI-150 |  |
| CO-SU-FE-WP1-CI-190 | Pouring Beams For Northern Fence | 2026-10-12 → 2026-11-11 (+30d) | 2026-11-01 → 2026-12-01 (+30d) |  | 19.5d → -6.5d | CO-SU-FE-WP1-CI-180, CO-SU-FE-WP1-AR-160 → CO-SU-FE-WP1-CI-180, CO-SU-FE-WP1-AR-160, CO-SU-FE-WP2-CI-200 |  |
| 5 | **Finishing Work** | 2026-10-01 → 2026-11-01 (+31d) | 2027-01-26 → 2027-03-13 (+46d) |  |  |  |  |
| 3 | **Electrical Work** | 2026-10-12 → 2026-11-11 (+30d) | 2027-01-20 → 2027-03-13 (+52d) |  |  |  |  |
| CO-SU-FE-WP1-EL-260 | Trench excavation to receive 2 nos 50mm diameter PVC Conduit | 2026-10-12 → 2026-11-11 (+30d) | 2026-10-28 → 2026-11-28 (+31d) |  | 1.5d → -24.5d |  |  |
| CO-SU-FE-WP1-EL-320 | Trench excavation to receive 3 nos 50mm diameter PVC Conduit | 2026-10-12 → 2026-11-11 (+30d) | 2026-10-28 → 2026-11-28 (+31d) |  | 1.5d → -24.5d |  |  |
| CO-SU-FE-WP1-EL-300 | Fixing of Control cable,CAT6A cable | 2026-10-28 → 2026-11-28 (+31d) | 2026-11-14 → 2026-12-14 (+30d) |  | 1.5d → -24.5d |  |  |
| CO-SU-FE-WP1-EL-330 | Hot dipped galvanized cable conduits for CAT6A cable and Control Cables embedded to wall | 2026-10-28 → 2026-11-28 (+31d) | 2026-11-14 → 2026-12-14 (+30d) |  | 1.5d → -24.5d |  |  |
| CO-SU-FE-WP1-EL-310 | Install 800mm x 800mm x 800mm height concrete handhole | 2026-10-28 → 2026-12-06 (+39d) | 2026-11-14 → 2026-12-22 (+38d) |  | 1.5d → -31.5d |  |  |
| CO-SU-FE-WP1-EL-280 | Fixing Earthing Work (Earth Pit,Grounding rod,Tinned Copper wire) | 2026-11-15 → 2026-12-24 (+39d) | 2026-11-26 → 2027-01-06 (+41d) |  | 1d → -33.5d |  |  |
| CO-SU-FE-WP1-EL-340 | Field Equipment Cabinet enclosed outdoor complete with precast concrete footing, | 2026-11-28 → 2027-01-06 (+39d) | 2026-12-07 → 2027-01-17 (+41d) |  | 1d → -33.5d |  |  |
| CO-SU-FE-WP1-EL-350 | Fence Lightining 400V, 3PH, 60Hz lighting control panelï¿½ (LCP-02) | 2026-11-28 → 2027-01-06 (+39d) | 2026-12-07 → 2027-01-17 (+41d) |  | 1d → -33.5d |  | was named Fence Lightining 400V, 3PH, 60Hz lighting control panel (LCP-02) |
| CO-SU-FE-WP1-EL-360 | Install of direct buried armored cable 4C-16mm2 ,10mm2 | 2026-12-08 → 2027-01-17 (+40d) | 2026-12-16 → 2027-01-26 (+41d) |  | 2d → -32.5d |  |  |
| CO-SU-FE-WP1-EL-370 | Install 16mm2,10mm2 CU/PVC wire | 2026-12-08 → 2027-01-17 (+40d) | 2026-12-16 → 2027-01-26 (+41d) |  | 2d → -32.5d |  |  |
| CO-SU-FE-WP1-EL-390 | FEC-CCTV ( 4C-16mm2 CU/XLPE/PVC direct buried armored cable,16mm2 CU/PVC wire | 2026-12-08 → 2027-01-17 (+40d) | 2026-12-17 → 2027-01-27 (+41d) |  | 1d → -33.5d |  |  |
| CO-SU-FE-WP1-EL-250 | Junction Box for lighting fixture | 2026-12-17 → 2027-01-26 (+40d) | 2026-12-29 → 2027-02-08 (+41d) |  | 5d → -29.5d |  |  |
| CO-SU-FE-WP1-EL-290 | IR Intrusion Detection System Quad Beams | 2027-01-12 → 2027-02-25 (+44d) | 2027-01-16 → 2027-03-03 (+46d) |  | 1d → -33.5d |  |  |
| CO-SU-FE-WP1-EL-380 | Install of 38W, 230V, 1PH, 60Hz fence, led linear uplight lighting, IP66 | 2027-01-12 → 2027-02-25 (+44d) | 2027-01-16 → 2027-03-03 (+46d) |  | 4d → -30.5d |  |  |
| CO-SU-FE-WP1-EL-270 | Install, fixings, testing and commissioning 80W LED | 2027-01-17 → 2027-03-03 (+45d) | 2027-01-20 → 2027-03-13 (+52d) |  | 4d → -30.5d |  |  |
| 4 | **Architictural work** | 2026-10-01 → 2026-11-01 (+31d) | 2027-01-26 → 2027-03-13 (+46d) |  |  |  |  |
| CO-SU-FE-WP1-AR-160 | Install Brick Work For Northern Fence | 2026-10-01 → 2026-11-01 (+31d) | 2026-10-12 → 2026-11-11 (+30d) |  | 1.5d → -24.5d |  |  |

| ID | Task | Start | Finish | Complete | Total float | Predecessors | Other |
| --- | --- | --- | --- | --- | --- | --- | --- |
| CO-SU-FE-WP1-AR-170 | External plastering to walls and columns | 2026-12-19 → 2027-01-27 (+39d) | 2026-12-24 → 2027-02-03 (+41d) |  | 1d → -33.5d |  |  |
| CO-SU-FE-WP1-AR-180 | Install 50mm thick random cut stone cladding | 2026-12-26 → 2027-02-03 (+39d) | 2026-12-30 → 2027-02-09 (+41d) |  | 1d → -33.5d |  |  |
| CO-SU-FE-WP1-AR-190 | Install 2 coats of weatherproof paint at walls | 2026-12-31 → 2027-02-10 (+41d) | 2027-01-06 → 2027-02-18 (+43d) |  | 1d → -33.5d |  |  |
| CO-SU-FE-WP1-AR-200 | Install Stone coping 500mm,525mm | 2027-01-07 → 2027-02-20 (+44d) | 2027-01-11 → 2027-02-24 (+44d) |  | 1d → -33.5d |  |  |
| CO-SU-FE-WP1-AR-210 | Install MODON Signage | 2027-01-17 → 2027-02-25 (+39d) | 2027-01-26 → 2027-03-13 (+46d) |  | -0.15d → -30.5d |  |  |
| 3 | **Western Fence P2 ( W07:W12 )** | 2026-09-16 → 2026-08-02 (-45d) | 2027-02-04 → 2027-03-24 (+48d) |  |  |  |  |
| 1 | **Civil Work** | 2026-09-16 → 2026-08-02 (-45d) | 2026-11-09 → 2026-12-09 (+30d) |  |  |  |  |
| CO-SU-FE-WP2-CI-200 | Excavation Work For Northern Fence | 2026-09-16 → 2026-08-02 A (-45d) | 2026-09-22 → 2026-09-01 A (-21d) | 0% → 100% | -0.15d → none | CO-SU-FE-WP1-CI-170, CO-SU-FE-WP1-CI-180 SS+3.65d → CO-SU-FE-WP1-CI-170 SS |  |
| CO-SU-FE-WP2-CI-210 | Pouring for Plain Concrete Northern Fence | 2026-09-22 → 2026-08-02 A (-51d) | 2026-09-29 → 2026-10-10 (+11d) | 0% → 95% | -0.15d → -4.5d |  |  |
| CO-SU-FE-WP2-CI-220 | Pouring R.C Footing For Northern Fence | 2026-09-29 → 2026-08-02 A (-58d) | 2026-10-07 → 2026-10-12 (+5d) | 0% → 41% | -0.15d → -4.5d | CO-SU-FE-WP2-CI-210 → CO-SU-FE-WP2-CI-210 SS |  |
| CO-SU-FE-WP2-CI-230 | Pouring R.C Columns For Northern Fence | 2026-10-07 → 2026-10-12 (+5d) | 2026-10-18 → 2026-10-22 (+4d) |  | -0.15d → -4.5d |  |  |
| CO-SU-FE-WP2-CI-240 | Pouring Beams For Northern Fence | 2026-11-01 → 2026-12-01 (+30d) | 2026-11-09 → 2026-12-09 (+30d) |  | 19.5d → -6.5d |  |  |
| 5 | **Finishing Work** | 2026-10-18 → 2026-10-22 (+4d) | 2027-02-04 → 2027-03-24 (+48d) |  |  |  |  |
| 3 | **Electrical Work** | 2026-10-27 → 2026-11-01 (+5d) | 2027-02-01 → 2027-03-24 (+51d) |  |  |  |  |
| CO-SU-FE-WP2-EL-410 | Trench excavation to receive 2 nos 50mm diameter PVC Conduit | 2026-10-27 → 2026-11-01 (+5d) | 2026-11-01 → 2026-11-05 (+4d) |  | -0.15d → -4.5d |  |  |
| CO-SU-FE-WP2-EL-470 | Trench excavation to receive 3 nos 50mm diameter PVC Conduit | 2026-10-27 → 2026-11-01 (+5d) | 2026-11-03 → 2026-11-08 (+5d) |  | -0.15d → -4.5d |  |  |
| CO-SU-FE-WP2-EL-450 | Fixing of Control cable,CAT6A cable | 2026-11-03 → 2026-11-08 (+5d) | 2026-11-11 → 2026-11-16 (+5d) |  | -0.15d → -4.5d |  |  |
| CO-SU-FE-WP2-EL-460 | Install 800mm x 800mm x 800mm height concrete handhole | 2026-11-03 → 2026-11-08 (+5d) | 2026-11-10 → 2026-11-16 (+6d) |  | 0.05d → -4.3d |  |  |
| CO-SU-FE-WP2-EL-480 | Hot dipped galvanized cable conduits for CAT6A cable and Control Cables embedded to wall | 2026-11-03 → 2026-11-08 (+5d) | 2026-11-10 → 2026-11-15 (+5d) |  | 0.85d → -3.5d |  |  |
| CO-SU-FE-WP2-EL-430 | Fixing Earthing Work (Earth Pit,Grounding rod,Tinned Copper wire) | 2026-11-11 → 2026-11-16 (+5d) | 2026-11-18 → 2026-11-23 (+5d) |  | -0.15d → -4.5d |  |  |
| CO-SU-FE-WP2-EL-490 | Field Equipment Cabinet enclosed outdoor complete with precast concrete footing, | 2026-11-18 → 2026-11-23 (+5d) | 2026-11-23 → 2026-11-28 (+5d) |  | -0.15d → -4.5d |  |  |
| CO-SU-FE-WP2-EL-510 | Install of direct buried armored cable 4C-16mm2 ,10mm2 | 2026-11-23 → 2026-11-28 (+5d) | 2026-12-01 → 2026-12-06 (+5d) |  | 0.35d → -4d |  |  |
| CO-SU-FE-WP2-EL-520 | Install 16mm2,10mm2 CU/PVC wire | 2026-11-23 → 2026-11-28 (+5d) | 2026-12-01 → 2026-12-06 (+5d) |  | 0.35d → -4d |  |  |
| CO-SU-FE-WP2-EL-540 | FEC-CCTV ( 4C-16mm2 CU/XLPE/PVC direct buried armored cable,16mm2 CU/PVC wire | 2026-11-23 → 2026-11-28 (+5d) | 2026-12-02 → 2026-12-07 (+5d) |  | -0.15d → -4.5d |  |  |
| CO-SU-FE-WP2-EL-400 | Junction Box for lighting fixture | 2026-12-01 → 2026-12-07 (+6d) | 2026-12-05 → 2026-12-09 (+4d) |  | 14.35d → 10d |  |  |
| CO-SU-FE-WP2-EL-440 | IR Intrusion Detection System Quad Beams | 2027-01-17 → 2027-03-03 (+45d) | 2027-01-24 → 2027-03-16 (+51d) |  | 1d → -33.5d |  |  |
| CO-SU-FE-WP2-EL-530 | Install of 38W, 230V, 1PH, 60Hz fence, led linear uplight lighting, IP66 | 2027-01-17 → 2027-03-03 (+45d) | 2027-01-24 → 2027-03-16 (+51d) |  | 1d → -33.5d |  |  |
| CO-SU-FE-WP2-EL-420 | Install, fixings, testing and commissioning 80W LED | 2027-01-25 → 2027-03-16 (+50d) | 2027-02-01 → 2027-03-24 (+51d) |  | 1d → -33.5d |  |  |
| 4 | **Architictural work** | 2026-10-18 → 2026-10-22 (+4d) | 2027-02-04 → 2027-03-22 (+46d) |  |  |  |  |
| CO-SU-FE-WP2-AR-220 | Install Brick Work For Northern Fence | 2026-10-18 → 2026-10-22 (+4d) | 2026-10-27 → 2026-11-01 (+5d) |  | -0.15d → -4.5d |  |  |
| CO-SU-FE-WP2-AR-230 | External plastering to walls and columns | 2026-12-02 → 2026-12-09 (+7d) | 2026-12-12 → 2026-12-19 (+7d) |  | -0.15d → -6.5d |  |  |
| CO-SU-FE-WP2-AR-240 | Install 50mm thick random cut stone cladding | 2026-12-12 → 2026-12-19 (+7d) | 2026-12-21 → 2026-12-28 (+7d) |  | -0.15d → -6.5d |  |  |
| CO-SU-FE-WP2-AR-250 | Install 2 coats of weatherproof paint at walls | 2026-12-21 → 2026-12-28 (+7d) | 2026-12-30 → 2027-01-06 (+7d) |  | -0.15d → -6.5d |  |  |
| CO-SU-FE-WP2-AR-260 | Install Stone coping 500mm,525mm | 2026-12-30 → 2027-01-06 (+7d) | 2027-01-09 → 2027-01-16 (+7d) |  | -0.15d → -6.5d |  |  |
| CO-SU-FE-WP2-AR-270 | Install MODON Signage | 2027-01-26 → 2027-03-13 (+46d) | 2027-02-04 → 2027-03-22 (+46d) |  | -0.15d → -30.5d |  |  |
| 4 | **Southern Fence S01:S05** |  | 2027-02-15 → 2027-04-01 (+45d) |  |  |  |  |
| 1 | **Civil Work** |  | 2026-09-13 → 2026-10-17 (+34d) |  |  |  |  |
| CO-SU-FE-S-CI-250 | Excavation Work For Northern Fence | 2026-08-01 A | 2026-08-09 A | 0% → 100% | 33.5d → none | CO-EW-110_R, ENG-SH-GR-A-200_R, PRO-FE-CV-DL-80, PRO-FE-CV-MF-60 → ENG-SH-GR-A-200_R, CO-EW-110_R SS, PRO-FE-CV-DL-80 SS, CO-SU-FE-N-CI-100 |  |
| CO-SU-FE-S-CI-260 | Pouring for Plain Concrete Northern Fence | 2026-08-09 → 2026-08-02 A (-7d) | 2026-08-12 → 2026-09-17 (+36d) | 0% → 95% | 33.5d → 22d |  |  |
| CO-SU-FE-S-CI-270 | Pouring R.C Footing For Northern Fence | 2026-08-12 → 2026-08-02 A (-10d) | 2026-08-22 → 2026-09-24 (+33d) | 0% → 41% | 33.5d → 22d | CO-SU-FE-S-CI-260 → CO-SU-FE-S-CI-260 SS |  |
| CO-SU-FE-S-CI-280 | Pouring R.C Columns For Northern Fence | 2026-08-22 → 2026-09-26 (+35d) | 2026-09-02 → 2026-10-06 (+34d) |  | 50.5d → 22d |  |  |
| CO-SU-FE-S-CI-290 | Pouring Beams For Northern Fence | 2026-09-02 → 2026-10-07 (+35d) | 2026-09-13 → 2026-10-17 (+34d) |  | 50.5d → 35d |  |  |
| 5 | **Finishing Work** | 2026-09-02 → 2026-10-07 (+35d) | 2027-02-15 → 2027-04-01 (+45d) |  |  |  |  |
| 3 | **Electrical Work** | 2026-09-02 → 2026-10-07 (+35d) | 2027-02-10 → 2027-04-01 (+50d) |  |  |  |  |
| CO-SU-FE-S-EL-560 | Trench excavation to receive 2 nos 50mm diameter PVC Conduit | 2026-09-02 → 2026-10-07 (+35d) | 2026-09-20 → 2026-10-24 (+34d) |  | 52.5d → 22d |  |  |
| CO-SU-FE-S-EL-620 | Trench excavation to receive 3 nos 50mm diameter PVC Conduit | 2026-09-02 → 2026-10-07 (+35d) | 2026-09-20 → 2026-10-24 (+34d) |  | 52.5d → 22d |  |  |
| CO-SU-FE-S-EL-600 | Fixing of Control cable,CAT6A cable | 2026-09-20 → 2026-10-25 (+35d) | 2026-10-08 → 2026-11-10 (+33d) |  | 52.5d → 22d |  |  |
| CO-SU-FE-S-EL-610 | Install 800mm x 800mm x 800mm height concrete handhole | 2026-09-20 → 2026-10-25 (+35d) | 2026-10-08 → 2026-11-10 (+33d) |  | 52.5d → 22d |  |  |
| CO-SU-FE-S-EL-630 | Hot dipped galvanized cable conduits for CAT6A cable and Control Cables embedded to wall | 2026-09-20 → 2026-10-25 (+35d) | 2026-10-08 → 2026-11-10 (+33d) |  | 52.5d → 22d |  |  |
| CO-SU-FE-S-EL-580 | Fixing Earthing Work (Earth Pit,Grounding rod,Tinned Copper wire) | 2026-10-08 → 2026-11-11 (+34d) | 2026-10-15 → 2026-11-17 (+33d) |  | 52.5d → 22d |  |  |
| CO-SU-FE-S-EL-640 | Field Equipment Cabinet enclosed outdoor complete with precast concrete footing, | 2026-10-08 → 2026-11-14 (+37d) | 2026-10-13 → 2026-11-17 (+35d) |  | 52.5d → 22d |  |  |
| CO-SU-FE-S-EL-650 | Fence Lightining 400V, 3PH, 60Hz lighting control panelï¿½ (LCP-02) | 2026-10-08 → 2026-11-14 (+37d) | 2026-10-13 → 2026-11-17 (+35d) |  | 52.5d → 22d |  | was named Fence Lightining 400V, 3PH, 60Hz lighting control panel (LCP-02) |
| CO-SU-FE-S-EL-660 | Install of direct buried armored cable 4C-16mm2 ,10mm2 | 2026-10-08 → 2026-11-14 (+37d) | 2026-10-20 → 2026-11-24 (+35d) |  | 53.5d → 23d |  |  |
| CO-SU-FE-S-EL-670 | Install 16mm2,10mm2 CU/PVC wire | 2026-10-13 → 2026-11-18 (+36d) | 2026-10-20 → 2026-11-24 (+35d) |  | 53.5d → 23d |  |  |
| CO-SU-FE-S-EL-690 | FEC-CCTV ( 4C-16mm2 CU/XLPE/PVC direct buried armored cable,16mm2 CU/PVC wire | 2026-10-13 → 2026-11-18 (+36d) | 2026-10-21 → 2026-11-25 (+35d) |  | 52.5d → 22d |  |  |
| CO-SU-FE-S-EL-550 | Junction Box for lighting fixture | 2026-12-05 → 2026-12-10 (+5d) | 2026-12-13 → 2026-12-17 (+4d) |  | 14.35d → 10d |  |  |
| CO-SU-FE-S-EL-590 | IR Intrusion Detection System Quad Beams | 2027-01-09 → 2027-02-21 (+43d) | 2027-01-16 → 2027-03-03 (+46d) |  | 15d → -19.5d |  |  |
| CO-SU-FE-S-EL-680 | Install of 38W, 230V, 1PH, 60Hz fence, led linear uplight lighting, IP66 | 2027-01-25 → 2027-03-16 (+50d) | 2027-02-01 → 2027-03-24 (+51d) |  | 1d → -33.5d |  |  |
| CO-SU-FE-S-EL-570 | Install, fixings, testing and commissioning 80W LED | 2027-02-02 → 2027-03-24 (+50d) | 2027-02-10 → 2027-04-01 (+50d) |  | 1d → -33.5d |  |  |
| 4 | **Architictural work** | 2026-09-02 → 2026-10-07 (+35d) | 2027-02-15 → 2027-03-31 (+44d) |  |  |  |  |
| CO-SU-FE-S-AR-280 | Install Brick Work For Northern Fence | 2026-09-02 → 2026-10-07 (+35d) | 2026-09-09 → 2026-10-13 (+34d) |  | 50.5d → 22d |  |  |
| CO-SU-FE-S-AR-290 | External plastering to walls and columns | 2026-10-21 → 2026-11-26 (+36d) | 2026-10-28 → 2026-12-02 (+35d) |  | 52.5d → 22d |  |  |
| CO-SU-FE-S-AR-300 | Install 50mm thick random cut stone cladding | 2026-10-28 → 2026-12-03 (+36d) | 2026-11-04 → 2026-12-09 (+35d) |  | 52.5d → 22d |  |  |
| CO-SU-FE-S-AR-310 | Install 2 coats of weatherproof paint at walls | 2026-12-30 → 2027-02-08 (+40d) | 2027-01-07 → 2027-02-21 (+45d) |  | 5d → -29.5d |  |  |
| CO-SU-FE-S-AR-320 | Install Stone coping 500mm,525mm | 2027-01-09 → 2027-02-21 (+43d) | 2027-01-19 → 2027-03-08 (+48d) |  | 5d → -29.5d |  |  |
| CO-SU-FE-S-AR-330 | Install MODON Signage | 2027-02-04 → 2027-03-22 (+46d) | 2027-02-15 → 2027-03-31 (+44d) |  | -0.15d → -30.5d |  |  |
| 5 | **Eastern Fence P1 ( E01:E06 )** | 2026-08-12 → 2026-08-02 (-10d) | 2027-02-20 → 2027-04-06 (+45d) |  |  |  |  |
| 1 | **Civil Work** | 2026-08-12 → 2026-08-02 (-10d) | 2026-10-25 → 2026-11-03 (+9d) |  |  |  |  |
| CO-SU-FE-EP1-CI-310 | Pouring for Plain Concrete Northern Fence | 2026-08-26 → 2026-08-02 A (-24d) | 2026-09-05 → 2026-09-24 (+19d) | 0% → 95% | 33.5d → 26d |  |  |
| CO-SU-FE-EP1-CI-320 | Pouring R.C Footing For Northern Fence | 2026-09-05 → 2026-08-02 A (-34d) | 2026-09-19 → 2026-09-29 (+10d) | 0% → 41% | 33.5d → 26d | CO-SU-FE-EP1-CI-310 → CO-SU-FE-EP1-CI-310 SS |  |

| ID | Task | Start | Finish | Complete | Total float | Predecessors | Other |
| --- | --- | --- | --- | --- | --- | --- | --- |
| CO-SU-FE-EP1-CI-300 | Excavation Work For Northern Fence | 2026-08-12 A | 2026-08-26 A | 0% → 100% | 33.5d → none |  |  |
| CO-SU-FE-EP1-CI-330 | Pouring R.C Columns For Northern Fence | 2026-09-19 → 2026-09-30 (+11d) | 2026-10-07 → 2026-10-17 (+10d) |  | 34.5d → 26d |  |  |
| CO-SU-FE-EP1-CI-340 | Pouring Beams For Northern Fence | 2026-10-17 → 2026-10-27 (+10d) | 2026-10-25 → 2026-11-03 (+9d) |  | 35.5d → 27d |  |  |
| 5 | **Finishing Work** | 2026-10-07 → 2026-10-18 (+11d) | 2027-02-20 → 2027-04-06 (+45d) |  |  |  |  |
| 3 | **Electrical Work** | 2026-10-17 → 2026-10-27 (+10d) | 2027-02-16 → 2027-04-06 (+49d) |  |  |  |  |
| CO-SU-FE-EP1-EL-710 | Trench excavation to receive 2 nos 50mm diameter PVC Conduit | 2026-10-17 → 2026-10-27 (+10d) | 2026-10-21 → 2026-10-31 (+10d) |  | 34.5d → 26d |  |  |
| CO-SU-FE-EP1-EL-770 | Trench excavation to receive 3 nos 50mm diameter PVC Conduit | 2026-10-17 → 2026-10-27 (+10d) | 2026-10-21 → 2026-10-31 (+10d) |  | 34.5d → 26d |  |  |
| CO-SU-FE-EP1-EL-750 | Fixing of Control cable,CAT6A cable | 2026-10-21 → 2026-11-01 (+11d) | 2026-10-26 → 2026-11-04 (+9d) |  | 34.5d → 26d |  |  |
| CO-SU-FE-EP1-EL-760 | Install 800mm x 800mm x 800mm height concrete handhole | 2026-10-21 → 2026-11-01 (+11d) | 2026-10-26 → 2026-11-04 (+9d) |  | 34.5d → 26d |  |  |
| CO-SU-FE-EP1-EL-780 | Hot dipped galvanized cable conduits for CAT6A cable and Control Cables embedded to wall | 2026-10-21 → 2026-11-01 (+11d) | 2026-10-26 → 2026-11-04 (+9d) |  | 34.5d → 26d |  |  |
| CO-SU-FE-EP1-EL-730 | Fixing Earthing Work (Earth Pit,Grounding rod,Tinned Copper wire) | 2026-10-26 → 2026-11-05 (+10d) | 2026-11-02 → 2026-11-11 (+9d) |  | 34.5d → 26d |  |  |
| CO-SU-FE-EP1-EL-790 | Field Equipment Cabinet enclosed outdoor complete with precast concrete footing, | 2026-11-02 → 2026-11-12 (+10d) | 2026-11-07 → 2026-11-16 (+9d) |  | 34.5d → 26d |  |  |
| CO-SU-FE-EP1-EL-800 | Fence Lightining 400V, 3PH, 60Hz lighting control panelï¿½ (LCP-02) | 2026-11-02 → 2026-11-12 (+10d) | 2026-11-07 → 2026-11-16 (+9d) |  | 34.5d → 26d |  | was named Fence Lightining 400V, 3PH, 60Hz lighting control panel (LCP-02) |
| CO-SU-FE-EP1-EL-810 | Install of direct buried armored cable 4C-16mm2 ,10mm2 | 2026-11-07 → 2026-11-17 (+10d) | 2026-11-11 → 2026-11-21 (+10d) |  | 36.5d → 28d |  |  |
| CO-SU-FE-EP1-EL-820 | Install 16mm2,10mm2 CU/PVC wire | 2026-11-07 → 2026-11-17 (+10d) | 2026-11-11 → 2026-11-21 (+10d) |  | 36.5d → 28d |  |  |
| CO-SU-FE-EP1-EL-840 | FEC-CCTV ( 4C-16mm2 CU/XLPE/PVC direct buried armored cable,16mm2 CU/PVC wire | 2026-11-07 → 2026-11-17 (+10d) | 2026-11-11 → 2026-11-21 (+10d) |  | 34.5d → 26d |  |  |
| CO-SU-FE-EP1-EL-700 | Junction Box for lighting fixture | 2026-12-13 → 2026-12-19 (+6d) | 2026-12-16 → 2026-12-21 (+5d) |  | 14.35d → 10d |  |  |
| CO-SU-FE-EP1-EL-740 | IR Intrusion Detection System Quad Beams | 2027-01-17 → 2027-03-03 (+45d) | 2027-01-20 → 2027-03-13 (+52d) |  | 18d → -16.5d |  |  |
| CO-SU-FE-EP1-EL-830 | Install of 38W, 230V, 1PH, 60Hz fence, led linear uplight lighting, IP66 | 2027-01-17 → 2027-03-03 (+45d) | 2027-01-20 → 2027-03-13 (+52d) |  | 18d → -16.5d |  |  |
| CO-SU-FE-EP1-EL-720 | Install, fixings, testing and commissioning 80W LED | 2027-02-10 → 2027-04-01 (+50d) | 2027-02-16 → 2027-04-06 (+49d) |  | 1d → -33.5d |  |  |
| 4 | **Architictural work** | 2026-10-07 → 2026-10-18 (+11d) | 2027-02-20 → 2027-04-04 (+43d) |  |  |  |  |
| CO-SU-FE-EP1-AR-340 | Install Brick Work For Northern Fence | 2026-10-07 → 2026-10-18 (+11d) | 2026-10-17 → 2026-10-26 (+9d) |  | 34.5d → 26d |  |  |
| CO-SU-FE-EP1-AR-350 | External plastering to walls and columns | 2026-11-11 → 2026-11-22 (+11d) | 2026-11-21 → 2026-11-30 (+9d) |  | 36.5d → 28d |  |  |
| CO-SU-FE-EP1-AR-360 | Install 50mm thick random cut stone cladding | 2026-11-21 → 2026-12-01 (+10d) | 2026-12-02 → 2026-12-12 (+10d) |  | 36.5d → 28d |  |  |
| CO-SU-FE-EP1-AR-370 | Install 2 coats of weatherproof paint at walls | 2026-12-02 → 2026-12-13 (+11d) | 2026-12-14 → 2026-12-23 (+9d) |  | 36.5d → 28d |  |  |
| CO-SU-FE-EP1-AR-380 | Install Stone coping 500mm,525mm | 2026-12-14 → 2026-12-24 (+10d) | 2026-12-26 → 2027-01-04 (+9d) |  | 36.5d → 28d |  |  |
| CO-SU-FE-EP1-AR-390 | Install MODON Signage | 2027-02-15 → 2027-03-31 (+44d) | 2027-02-20 → 2027-04-04 (+43d) |  | -0.15d → -30.5d |  |  |
| 6 | **Eastern Fence P2 ( E07:E13 )** | 2026-09-19 → 2026-08-02 (-48d) | 2027-02-23 → 2027-04-14 (+50d) |  |  |  |  |
| 1 | **Civil Work** | 2026-09-19 → 2026-08-02 (-48d) | 2026-12-01 → 2026-12-09 (+8d) |  |  |  |  |
| CO-SU-FE-EP2-CI-350 | Excavation Work For Northern Fence | 2026-09-19 → 2026-08-02 A (-48d) | 2026-10-04 → 2026-09-01 A (-33d) | 0% → 100% | 33.5d → none | CO-SU-FE-EP1-CI-320 → CO-SU-FE-EP1-CI-320 SS |  |
| CO-SU-FE-EP2-CI-360 | Pouring for Plain Concrete Northern Fence | 2026-10-04 → 2026-08-02 A (-63d) | 2026-10-18 → 2026-10-17 (-1d) | 0% → 95% | 33.5d → 46d | CO-SU-FE-EP2-CI-350, CO-SU-FE-S-CI-290 → CO-SU-FE-EP2-CI-350, CO-SU-FE-S-CI-290 FF |  |
| CO-SU-FE-EP2-CI-370 | Pouring R.C Footing For Northern Fence | 2026-10-18 → 2026-08-02 A (-77d) | 2026-11-01 → 2026-10-17 (-15d) | 0% → 41% | 33.5d → 46d | CO-SU-FE-EP2-CI-360 → CO-SU-FE-EP2-CI-360 SS |  |
| CO-SU-FE-EP2-CI-380 | Pouring R.C Columns For Northern Fence | 2026-11-01 → 2026-10-18 (-14d) | 2026-11-12 → 2026-10-28 (-15d) |  | 33.5d → 46d |  |  |
| CO-SU-FE-EP2-CI-390 | Pouring Beams For Northern Fence | 2026-11-19 → 2026-11-29 (+10d) | 2026-12-01 → 2026-12-09 (+8d) |  | 43.5d → 36d |  |  |
| 5 | **Finishing Work** | 2026-11-12 → 2026-11-22 (+10d) | 2027-02-23 → 2027-04-14 (+50d) |  |  |  |  |
| 3 | **Electrical Work** | 2026-11-19 → 2026-11-29 (+10d) | 2027-02-21 → 2027-04-14 (+52d) |  |  |  |  |
| CO-SU-FE-EP2-EL-860 | Trench excavation to receive 2 nos 50mm diameter PVC Conduit | 2026-11-19 → 2026-11-29 (+10d) | 2026-11-24 → 2026-12-02 (+8d) |  | 33.5d → 26d |  |  |
| CO-SU-FE-EP2-EL-920 | Trench excavation to receive 3 nos 50mm diameter PVC Conduit | 2026-11-19 → 2026-11-29 (+10d) | 2026-11-24 → 2026-12-02 (+8d) |  | 33.5d → 26d |  |  |
| CO-SU-FE-EP2-EL-910 | Install 800mm x 800mm x 800mm height concrete handhole | 2026-11-24 → 2026-12-03 (+9d) | 2026-11-28 → 2026-12-06 (+8d) |  | 33.5d → 26d |  |  |
| CO-SU-FE-EP2-EL-930 | Hot dipped galvanized cable conduits for CAT6A cable and Control Cables embedded to wall | 2026-11-24 → 2026-12-03 (+9d) | 2026-11-28 → 2026-12-06 (+8d) |  | 33.5d → 26d |  |  |
| CO-SU-FE-EP2-EL-900 | Fixing of Control cable,CAT6A cable | 2026-12-16 → 2026-12-22 (+6d) | 2026-12-20 → 2026-12-24 (+4d) |  | 14.35d → 10d |  |  |
| CO-SU-FE-EP2-EL-880 | Fixing Earthing Work (Earth Pit,Grounding rod,Tinned Copper wire) | 2026-12-20 → 2026-12-26 (+6d) | 2026-12-23 → 2026-12-28 (+5d) |  | 14.35d → 10d |  |  |
| CO-SU-FE-EP2-EL-940 | Field Equipment Cabinet enclosed outdoor complete with precast concrete footing, | 2026-12-23 → 2026-12-29 (+6d) | 2026-12-28 → 2027-01-02 (+5d) |  | 14.35d → 10d |  |  |
| CO-SU-FE-EP2-EL-950 | Fence Lightining 400V, 3PH, 60Hz lighting control panelï¿½ (LCP-02) | 2026-12-23 → 2026-12-29 (+6d) | 2026-12-28 → 2027-01-02 (+5d) |  | 14.35d → 10d |  | was named Fence Lightining 400V, 3PH, 60Hz lighting control panel (LCP-02) |
| CO-SU-FE-EP2-EL-960 | Install of direct buried armored cable 4C-16mm2 ,10mm2 | 2026-12-28 → 2027-01-03 (+6d) | 2026-12-31 → 2027-01-05 (+5d) |  | 14.35d → 10d |  |  |
| CO-SU-FE-EP2-EL-970 | Install 16mm2,10mm2 CU/PVC wire | 2026-12-28 → 2027-01-03 (+6d) | 2026-12-31 → 2027-01-05 (+5d) |  | 14.35d → 10d |  |  |
| CO-SU-FE-EP2-EL-990 | FEC-CCTV ( 4C-16mm2 CU/XLPE/PVC direct buried armored cable,16mm2 CU/PVC wire | 2026-12-28 → 2027-01-03 (+6d) | 2027-01-04 → 2027-01-09 (+5d) |  | 14.35d → 10d |  |  |
| CO-SU-FE-EP2-EL-850 | Junction Box for lighting fixture | 2026-12-31 → 2027-01-06 (+6d) | 2027-01-04 → 2027-01-09 (+5d) |  | 14.35d → 10d |  |  |
| CO-SU-FE-EP2-EL-890 | IR Intrusion Detection System Quad Beams | 2027-01-26 → 2027-04-08 (+72d) | 2027-01-30 → 2027-04-11 (+71d) |  | 14.35d → -38d |  |  |
| CO-SU-FE-EP2-EL-980 | Install of 38W, 230V, 1PH, 60Hz fence, led linear uplight lighting, IP66 | 2027-01-26 → 2027-04-08 (+72d) | 2027-01-30 → 2027-04-11 (+71d) |  | 14.35d → -38d |  |  |
| CO-SU-FE-EP2-EL-870 | Install, fixings, testing and commissioning 80W LED | 2027-02-17 → 2027-04-12 (+54d) | 2027-02-21 → 2027-04-14 (+52d) |  | 1d → -38d |  |  |
| 4 | **Architictural work** | 2026-11-12 → 2026-11-22 (+10d) | 2027-02-23 → 2027-04-10 (+46d) |  |  |  |  |
| CO-SU-FE-EP2-AR-400 | Install Brick Work For Northern Fence | 2026-11-12 → 2026-11-22 (+10d) | 2026-11-19 → 2026-11-28 (+9d) |  | 33.5d → 26d |  |  |
| CO-SU-FE-EP2-AR-410 | External plastering to walls and columns | 2027-01-04 → 2027-01-10 (+6d) | 2027-01-10 → 2027-01-14 (+4d) |  | 14.35d → 10d |  |  |
| CO-SU-FE-EP2-AR-420 | Install 50mm thick random cut stone cladding | 2027-01-10 → 2027-01-16 (+6d) | 2027-01-16 → 2027-01-20 (+4d) |  | 14.35d → 10d |  |  |
| CO-SU-FE-EP2-AR-430 | Install 2 coats of weatherproof paint at walls | 2027-01-16 → 2027-01-21 (+5d) | 2027-01-21 → 2027-01-26 (+5d) |  | 14.35d → 10d |  |  |
| CO-SU-FE-EP2-AR-440 | Install Stone coping 500mm,525mm | 2027-01-21 → 2027-04-04 (+73d) | 2027-01-26 → 2027-04-07 (+71d) |  | 14.35d → -38d |  |  |
| CO-SU-FE-EP2-AR-450 | Install MODON Signage | 2027-02-20 → 2027-04-08 (+47d) | 2027-02-23 → 2027-04-10 (+46d) |  | -0.15d → -34d |  |  |
| TC | **Testing and Comissioning** | 2027-01-04 → 2026-10-03 (-93d) | 2027-02-18 → 2027-05-22 (+93d) |  |  |  |  |
| INF | **Infrastructure Networks** | 2027-01-06 → 2027-04-10 (+94d) | 2027-02-18 → 2027-05-22 (+93d) |  |  |  |  |
| PW1 | **Irrigation Network** | 2027-01-27 → 2027-04-27 (+90d) | 2027-02-02 → 2027-05-02 (+89d) |  |  |  |  |
| T/C-IR | Testing and Commissioning of Irrigation Network | 2027-01-27 → 2027-04-27 (+90d) | 2027-02-02 → 2027-05-02 (+89d) |  | 1.54d → -66d |  | resources pipe line O.D 32 mm PN 10, in depth 0 to 1.5 m; pipe line O.D 40 mm PN 10, in depth 0 to 1.5 m; pipe line O.D 50 mm PN 10, in depth 0 to 1.5 m; Gate valve 50 mm PN16; Direct Burried Gate valve 40 mm PN16; Pressure compensating bubblers 110 Lit/Hr; Flushing Bronze gate valve dia 1.5" inside PVC box; Air release valve 1.5" inside PVC box; Extra flexible pressure compensating on surface inline dripline`s, O.D. is 16.1 mm; Electrical Solenoid Valve ( 1.5") inside PVC box; Electrical Solenoid Valve ( 2") inside PVC box; Quick coupling valve 1" inside a round valve box 10" size with a manual gate valve, hose swivel and key with all accessories; Advanced Irrigation controller subject to client approval, can connect with Centarl Control system; Decoder cables 12 AWG between valves and controllers, The cables shall be pulled through 32 UPVC conduit; Preparing the irrigation program for the entire system and providing technical services for monitoring and controlling the central irrigation systems → pipe line O.D 32 mm PN 10, in depth 0 to 1.5 m; pipe line O.D 40 mm PN 10, in depth 0 to 1.5 m; pipe line O.D 50 mm PN 10, in depth 0 to 1.5 m; Gate valve 50 mm PN16; Direct Burried Gate valve 40 mm PN16; Pressure–compensating bubblers 110 Lit/Hr; Flushing Bronze gate valve dia 1.5" inside PVC box; Air release valve 1.5" inside PVC box; Extra flexible pressure compensating on surface inline dripline`s, O.D. is 16.1 mm; Electrical Solenoid Valve ( 1.5") inside PVC box; Electrical Solenoid Valve ( 2") inside PVC box; Quick coupling valve 1" inside a round valve box 10" size with a manual gate valve, hose swivel and key with all accessories; Advanced Irrigation controller subject to client approval, can connect with Centarl Control system; Decoder cables 12 AWG between valves and controllers, The cables shall be pulled through 32Ø UPVC conduit; Preparing the irrigation program for the entire system and providing technical services for monitoring and controlling the central irrigation systems |
| PW11 | **TSE Network** | 2027-01-17 → 2027-04-20 (+93d) | 2027-02-02 → 2027-05-08 (+95d) |  |  |  |  |
| T/C-TSE-10 | Testing and Commissioning of TSE Network | 2027-01-17 → 2027-04-20 (+93d) | 2027-02-02 → 2027-05-08 (+95d) |  | 9d → -62.2d |  |  |
| PW | **Potable Water Network** | 2027-01-27 → 2027-04-27 (+90d) | 2027-02-03 → 2027-05-03 (+89d) |  |  |  |  |
| T/C-PW | Testing and Commissioning of Potable Water Network | 2027-01-27 → 2027-04-27 (+90d) | 2027-02-03 → 2027-05-03 (+89d) |  | 1.54d → -66d |  |  |
| SW | **Sewage Network** | 2027-01-17 → 2027-04-20 (+93d) | 2027-01-19 → 2027-04-24 (+95d) |  |  |  |  |
| T/C-SW | Testing and Commissioning of Sewage Network | 2027-01-17 → 2027-04-20 (+93d) | 2027-01-19 → 2027-04-24 (+95d) |  | 0d → -71.2d |  |  |
| SD | **Storm Drainage Network** | 2027-01-06 → 2027-04-10 (+94d) | 2027-01-16 → 2027-04-20 (+94d) |  |  |  |  |
| T/C-SD | Testing and Commissioning of Storm Drainage Network | 2027-01-06 → 2027-04-10 (+94d) | 2027-01-16 → 2027-04-20 (+94d) |  | 0d → -71.2d |  |  |

| ID | Task | Start | Finish | Total float | Other |
| --- | --- | --- | --- | --- | --- |
| SL | **Street Lighting Network** | 2027-02-04 → 2027-05-03 (+88d) | 2027-02-11 → 2027-05-09 (+87d) |  |  |
| T/C-SL | Testing and Commissioning of Street Lighting Network | 2027-02-04 → 2027-05-03 (+88d) | 2027-02-11 → 2027-05-09 (+87d) | 0d → -66d |  |
| TE | **Telecom Network** | 2027-01-20 → 2027-04-24 (+94d) | 2027-01-23 → 2027-04-27 (+94d) |  |  |
| T/C-TE | Testing and Commissioning of Telecom Network | 2027-01-20 → 2027-04-24 (+94d) | 2027-01-23 → 2027-04-27 (+94d) | 0d → -71.2d |  |
| MV | **Medium Voltage Network** | 2027-01-20 → 2027-04-24 (+94d) | 2027-02-04 → 2027-05-10 (+95d) |  |  |
| T/C-MV | Testing and Commissioning of Medium Voltage Network | 2027-01-20 → 2027-04-24 (+94d) | 2027-02-04 → 2027-05-10 (+95d) | 0d → -71.2d |  |
| RD | **Road Works** | 2027-02-13 → 2027-05-12 (+88d) | 2027-02-18 → 2027-05-22 (+93d) |  |  |
| T/C-RD | Testing and Commissioning of Road Works | 2027-02-13 → 2027-05-12 (+88d) | 2027-02-18 → 2027-05-22 (+93d) | 0d → -68d |  |
| 1 | **Utility Buildings** | 2027-01-04 → 2026-10-03 (-93d) | 2027-02-03 → 2027-05-08 (+94d) |  |  |
| T/C-DPO | Testing and Commissioning of Storm Drainage Ponds | 2027-01-04 → 2026-10-03 (-93d) | 2027-01-04 → 2026-10-03 (-93d) | 26d → 106d |  |
| T/C-CTV | Testing and Commissioning of Guard Room and Fence | 2027-01-21 → 2027-04-25 (+94d) | 2027-01-21 → 2027-04-25 (+94d) | 25d → -46.5d | resources 100 mm thickness lean concrete under the foundation; Foundation; Slab on Grade; Walls; Beams; Columns; Slabs; Lightweight Concrete Roof insulation as per Architect's specification; Common brickwork. 300mm thick; vertical straight wall complete with accessories.; Insulated brickwork. with expanded polystyrene 200mm thick; vertical straight wall complete with accessories .; Common brickwork. 150mm thick; vertical straight wall complete with accessories.; Two Layers of Bituminous Coating; 20x20 Approved Polysulfide Joint Sealant; 2 perpendicular layers of cold bitumen coats; 2 layer of 4mm HDPE membrane, 2 perpendicular layers cold bitumen coats; 1 layer EPOXY Paint 300 micron; Membrane fully bonded to prime deck and upstand; Geotextile Filter membrane uv resistance; 85mm thick thermal insulation; 1.5mm thick epdm waterproofing membrane; CW01 - 4500 mm width x 3700 mm height; CW02 - 4500 mm width x 3700 mm height; CW03 - 4500 mm width x 3700 mm height; CW04 - 4500 mm width x 3700 mm height; CW05 - 7500 mm width x 4250 mm height; CW06 - 7500 mm width x 4250 mm height; W01 - 1000 mm width x 2000 mm height; W02 - 2000 mm width x 2000 mm height; W03 - 2000 mm width x 1000 mm height; D2 - 900 mm x 2200 mm height temper door; D3 - 950 mm x 2000 mm height temper door; Supply and install 33mm thick Lexan cladding blue complete with necessary framings; Supply and install 50mm thick random cut stone cladding complete with 600m; Supply and install External plastering to walls and columns min. 15mm thick with cement mortar of specified grade including; Supply and install 2 coats of weatherproof paint at walls including one prime coat and; Supply and install 300*300mm terrazzo tiles with 150mm high skirting at perimeter with approv; Supply and install 300*300mm glazed ceramic wall tiles on cement mortar and including rough; Supply and install internal plastering and 2 coats of acrylic paint at walls includin; Supply and install 300*300mm glazed ceramic wall tiles on cement mortar and including rough and smooth p; Supply and install 600*600mm porcelain tiles with approved quality on 30 mm mortar inclu; Supply and install 12.5mm thk, gypsum board suspended ceiling including s; Guard room coping 350mm; Guard room coping 450mm; Stone coping 500mm; Stone coping 525mm; Supply and install MODON Signage with Logo Type 1; Supply and install MODON Signage Type 2; Supply and install "Triangle Style" signage; Office Chairs; Office Tables; Guard Stand; Magnetic Control Access barrier, Automatic Vehicular Barriers to be installed on ground with magnetic access; Supply and install Hand Wash Basin with Water Tap, angle valve, P-trap connected to 50mm diameter s; Supply and install paper towel dispenser, surface mounted, satin finish stainless steel as per approv; Supply and install mirror, size 460*910mm as per approved sample including frames, backing and all accessories to complete.; Supply and install towel ring , surface mounted, satin finish stainless steel as per approved sample including accessories.; Kitchen sink with single bowl with hot/cold water mixer.; Supply and install Base mounted flush tank water Western water closet system with lid connected to 110mm soil pipe; Gate Valves; Slow Closing Valve; 1 meter length 10mm diameter Flexible Hose with insulated handle complete with fork support, index push, vacuum breaker; 50mm diameter; 75mm diameter; 80mm diameter; 100mm diameter; 110mm diameter; 13mm diameter; 15mm diameter; 20mm diameter; 25mm diameter; 32mm diameter; 40mm diameter; Isolation Valve Size 20; Isolation Valve Size 25; Isolation Valve Size 32; Isolation Valve Size 40; Isolation Valve Size 50; 20 mm diameter spray head for cold water supply; Supply and install Electric Water Heater set with connection; Water meter complete with accessories.; Roof drain; Vent on a roof to exhaust air; Floor drain 100x80mm; Gully trap 300x300 mm; inspection chamber, size 800x900x1000; Mini split actual capacity 2 Ton; Ducted split actual capacity 4 Ton; Supply, fabricate, install and testing factory fabricated metal ducts with flanges complete with supports, vanes,; Supplying, installation testing & commissioning of external insulation on ducts; Supply, fix, testing and commissioning of exhaust air/fresh air louvers of powder coated extruded aluminium construction.; Providing, fixing, testing and commissioning of powder coated extruded aluminum sections grills and diffusers with dampers.; Air Grills 150mm x150mm; Air Diffuser 600mm x 600mm; Supply, Installation & Testing of 2 hours Fire rated system for closing the openings between roo; 4.5 KG CO2 Type Fire Extinguishers; 6 KG ABC Type Fire Extinguishers; Floor cleanout, size 75 mm diameter; Floor cleanout, size 110 mm diameter; GRP water tanks capacity of each 1000 liter complete with all fittings, all valves and concrete pad; Junction Box for lighting fixture; Trench excavation to receive 2 nos 50mm diameter PVC Conduit, sand bedding and embedded with sa; Supply, Install, fixings, testing and commissioning 80W LED Projector waterproof DJ effect light including c; Earth Pit; Grounding rod 20mmX3m; Grounding rod with Pit 20mmX3m; Earthing Bar; 120mm2 Tinned copper wire; Guard Room 1; Guard Room 2; Guard Room 3; 30A, 2P AC Disconnect Switch; 20A Duplex Receptacle Floor Mounted; Twin Socket outlet; Twin Socket outlet, Weather Proof; Single gang Lighting switch; 2way Single gang Lighting switch; 36W LED linear Pendant lighting; 36W LED Emergency linear Pendant lighting; 13W recess mounted LED down light fitting; 13W recess emergency mounted LED down light fitting with 1.5 Hr Battery; 10.4W LED Exit light with 1.5 Hr Battery; 4mm2 Cu./FRLSZH Cable; 6mm2 Cu./FRLSZH Cable; IR Intrusion Detection System Quad Beams (Tx & Rx) (SL-350 QDM); Control cable; CAT6A cable; Field Equipment Cabinet enclosed outdoor complete with precast concrete footing, suitable for parame; Supply and install 800mm x 800mm x 800mm height concrete handhole with bituminous paint all aroun; 800mm depth minimum Trench excavation to receive 3 nos 50mm diameter PVC Conduit with spacer, sand bedding an; Hot dipped galvanized cable conduits for CAT6A cable and Control Cables embedded to wall; 8 Port Industrial PoE Switch 10/100BaseT (0 deg to +70 deg. Celsius); 06C Optical Fiber SM; 48C Optical Fiber SM; 48 Core Splice Closure; Boom Barrier at Security Guard Room; Pedestrian turnstile at Security Guard Room; Access Control Unit; Access Card Reader; Magnetic Lock; Break Glass; Exit Push button; Door Sensor; Biometrics Reader; Pole/Bollard mounted IP( PoE), Automatic Number Plate Recognition (ANPR, camera, 5MP,IP 66, IR illumin; 12U rack dimension (W x H x L) 600 x 625 x 600 mm; 400V, 3PH, 60Hz lighting control panel (LCP-02); 38W, 230V, 1PH, 60Hz fence, led linear uplight lighting, IP66; 4C-16mm2 CU/XLPE/PVC direct buried armored cable; 4C-10mm2 CU/XLPE/PVC direct buried armored cable; 16mm2 CU/PVC wire; 10mm2 CU/PVC wire; Fire Alarm Control panel with fire alarm zoning with Mimic panel with fire alarm zoning; Main Fire Alarm Control panel with fire alarm zoning with Mimic panel with fire alarm zoning; Supply and installation of the addressable manual call point with operation safety glass breaking and pushbutton; Supply and installation of the photoelectric heat & smoke detector with base; Sounder With Beacon; Addressable Control module for Sounders; Addressable Control module for HVAC System; Addressable Monitor module for HVAC System; 2C x 1.5 Sqm FR Rated Armored - Cable For Loop Wiring; DACT (Auto - Dailer) for 24x7 Civil Defence; Transmission Communication cable - Fiber Optics 12Core; Transmission Communication cable - Ethernet Cable; Supply, install to site and installation of power supply system for fire alarm control panel; Supply, install to site and installation of power cable; Fire Fighter s Telephone Centre; Fireman s Telephone Jack; Voice Command Center → 100 mm thickness lean concrete under the foundation; Foundation; Slab on Grade; Walls; Beams; Columns; Slabs; Lightweight Concrete Roof insulation as per Architect's specification; Common brickwork. 300mm thick; vertical straight wall complete with accessories.; Insulated brickwork. with expanded polystyrene 200mm thick; vertical straight wall complete with accessories .; Common brickwork. 150mm thick; vertical straight wall complete with accessories.; Two Layers of Bituminous Coating; 20x20 Approved Polysulfide Joint Sealant; 2 perpendicular layers of cold bitumen coats; 2 layer of 4mm HDPE membrane, 2 perpendicular layers cold bitumen coats; 1 layer EPOXY Paint 300 micron; Membrane fully bonded to prime deck and upstand; Geotextile Filter membrane uv resistance; 85mm thick thermal insulation; 1.5mm thick epdm waterproofing membrane; CW01 - 4500 mm width x 3700 mm height; CW02 - 4500 mm width x 3700 mm height; CW03 - 4500 mm width x 3700 mm height; CW04 - 4500 mm width x 3700 mm height; CW05 - 7500 mm width x 4250 mm height; CW06 - 7500 mm width x 4250 mm height; W01 - 1000 mm width x 2000 mm height; W02 - 2000 mm width x 2000 mm height; W03 - 2000 mm width x 1000 mm height; D2 - 900 mm x 2200 mm height temper door; D3 - 950 mm x 2000 mm height temper door; Supply and install 33mm thick Lexan cladding blue complete with necessary framings; Supply and install 50mm thick random cut stone cladding complete with 600m; Supply and install External plastering to walls and columns min. 15mm thick with cement mortar of specified grade including; Supply and install 2 coats of weatherproof paint at walls including one prime coat and; Supply and install 300*300mm terrazzo tiles with 150mm high skirting at perimeter with approv; Supply and install 300*300mm glazed ceramic wall tiles on cement mortar and including rough; Supply and install internal plastering and 2 coats of acrylic paint at walls includin; Supply and install 300*300mm glazed ceramic wall tiles on cement mortar and including rough and smooth p; Supply and install 600*600mm porcelain tiles with approved quality on 30 mm mortar inclu; Supply and install 12.5mm thk, gypsum board suspended ceiling including s; Guard room coping 350mm; Guard room coping 450mm; Stone coping 500mm; Stone coping 525mm; Supply and install MODON Signage with Logo Type 1; Supply and install MODON Signage Type 2; Supply and install "Triangle Style" signage; Office Chairs; Office Tables; Guard Stand; Magnetic Control Access barrier, Automatic Vehicular Barriers to be installed on ground with magnetic access; Supply and install Hand Wash Basin with Water Tap, angle valve, P-trap connected to 50mm diameter s; Supply and install paper towel dispenser, surface mounted, satin finish stainless steel as per approv; Supply and install mirror, size 460*910mm as per approved sample including frames, backing and all accessories to complete.; Supply and install towel ring , surface mounted, satin finish stainless steel as per approved sample including accessories.; Kitchen sink with single bowl with hot/cold water mixer.; Supply and install Base mounted flush tank water Western water closet system with lid connected to 110mm soil pipe; Gate Valves; Slow Closing Valve; 1 meter length 10mm diameter Flexible Hose with insulated handle complete with fork support, index push, vacuum breaker; 50mm diameter; 75mm diameter; 80mm diameter; 100mm diameter; 110mm diameter; 13mm diameter; 15mm diameter; 20mm diameter; 25mm diameter; 32mm diameter; 40mm diameter; Isolation Valve Size 20; Isolation Valve Size 25; Isolation Valve Size 32; Isolation Valve Size 40; Isolation Valve Size 50; 20 mm diameter spray head for cold water supply; Supply and install Electric Water Heater set with connection; Water meter complete with accessories.; Roof drain; Vent on a roof to exhaust air; Floor drain 100x80mm; Gully trap 300x300 mm; inspection chamber, size 800x900x1000; Mini split actual capacity 2 Ton; Ducted split actual capacity 4 Ton; Supply, fabricate, install and testing factory fabricated metal ducts with flanges complete with supports, vanes,; Supplying, installation testing & commissioning of external insulation on ducts; Supply, fix, testing and commissioning of exhaust air/fresh air louvers of powder coated extruded aluminium construction.; Providing, fixing, testing and commissioning of powder coated extruded aluminum sections grills and diffusers with dampers.; Air Grills 150mm x150mm; Air Diffuser 600mm x 600mm; Supply, Installation & Testing of 2 hours Fire rated system for closing the openings between roo; 4.5 KG CO2 Type Fire Extinguishers; 6 KG ABC Type Fire Extinguishers; Floor cleanout, size 75 mm diameter; Floor cleanout, size 110 mm diameter; GRP water tanks capacity of each 1000 liter complete with all fittings, all valves and concrete pad; Junction Box for lighting fixture; Trench excavation to receive 2 nos 50mm diameter PVC Conduit, sand bedding and embedded with sa; Supply, Install, fixings, testing and commissioning 80W LED Projector waterproof DJ effect light including c; Earth Pit; Grounding rod 20mmX3m; Grounding rod with Pit 20mmX3m; Earthing Bar; 120mm2 Tinned copper wire; Guard Room 1; Guard Room 2; Guard Room 3; 30A, 2P AC Disconnect Switch; 20A Duplex Receptacle Floor Mounted; Twin Socket outlet; Twin Socket outlet, Weather Proof; Single gang Lighting switch; 2way Single gang Lighting switch; 36W LED linear Pendant lighting; 36W LED Emergency linear Pendant lighting; 13W recess mounted LED down light fitting; 13W recess emergency mounted LED down light fitting with 1.5 Hr Battery; 10.4W LED Exit light with 1.5 Hr Battery; 4mm2 Cu./FRLSZH Cable; 6mm2 Cu./FRLSZH Cable; IR Intrusion Detection System Quad Beams (Tx & Rx) (SL-350 QDM); Control cable; CAT6A cable; Field Equipment Cabinet enclosed outdoor complete with precast concrete footing, suitable for parame; Supply and install 800mm x 800mm x 800mm height concrete handhole with bituminous paint all aroun; 800mm depth minimum Trench excavation to receive 3 nos 50mm diameter PVC Conduit with spacer, sand bedding an; Hot dipped galvanized cable conduits for CAT6A cable and Control Cables embedded to wall; 8 Port Industrial PoE Switch 10/100BaseT (0 deg to +70 deg. Celsius); 06C Optical Fiber SM; 48C Optical Fiber SM; 48 Core Splice Closure; Boom Barrier at Security Guard Room; Pedestrian turnstile at Security Guard Room; Access Control Unit; Access Card Reader; Magnetic Lock; Break Glass; Exit Push button; Door Sensor; Biometrics Reader; Pole/Bollard mounted IP( PoE), Automatic Number Plate Recognition (ANPR, camera, 5MP,IP 66, IR illumin; 12U rack dimension (W x H x L) 600 x 625 x 600 mm; 400V, 3PH, 60Hz lighting control panel (LCP-02); 38W, 230V, 1PH, 60Hz fence, led linear uplight lighting, IP66; 4C-16mm2 CU/XLPE/PVC direct buried armored cable; 4C-10mm2 CU/XLPE/PVC direct buried armored cable; 16mm2 CU/PVC wire; 10mm2 CU/PVC wire; Fire Alarm Control panel with fire alarm zoning with Mimic panel with fire alarm zoning; Main Fire Alarm Control panel with fire alarm zoning with Mimic panel with fire alarm zoning; Supply and installation of the addressable manual call point with operation safety glass breaking and pushbutton; Supply and installation of the photoelectric heat & smoke detector with base; Sounder With Beacon; Addressable Control module for Sounders; Addressable Control module for HVAC System; Addressable Monitor module for HVAC System; 2C x 1.5 Sqm FR Rated Armored - Cable For Loop Wiring; DACT (Auto - Dailer) for 24x7 Civil Defence; Transmission Communication cable - Fiber Optics 12Core; Transmission Communication cable - Ethernet Cable; Supply, install to site and installation of power supply system for fire alarm control panel; Supply, install to site and installation of power cable; Fire Fighter’s Telephone Centre; Fireman’s Telephone Jack; Voice Command Center |
| T/C-SPS | Testing and Commissioning of Sewage Pump Stations& soft scape and planting work | 2027-02-03 → 2027-05-08 (+94d) | 2027-02-03 → 2027-05-08 (+94d) | 13d → -58.2d |  |
| 1 | **Handing over and close out** | 2027-01-04 → 2026-10-03 (-93d) | 2027-02-22 → 2027-05-30 (+97d) |  |  |
| 2 | **As-Built** | 2027-01-04 → 2026-10-03 (-93d) | 2027-02-22 → 2027-05-30 (+97d) |  |  |
| HO-130 | Submission As-Built Drawing For Pond | 2027-01-04 → 2026-10-03 (-93d) | 2027-01-19 → 2026-10-18 (-93d) | 26d → 106d |  |
| HO-100 | Submission As-Built Drawing For Sewage Network | 2027-01-20 → 2027-04-24 (+94d) | 2027-02-04 → 2027-05-10 (+95d) | 12d → -59.2d |  |
| HO-160 | Submission As-Built Drawing For Telecom Network | 2027-01-24 → 2027-04-27 (+93d) | 2027-02-06 → 2027-05-11 (+94d) | 11d → -60.2d |  |
| HO-180 | Submission As-Built Drawing For Irrigation Network | 2027-02-02 → 2027-05-03 (+90d) | 2027-02-18 → 2027-05-22 (+93d) | 2.54d → -65d |  |
| HO-190 | As-Built Drawing For Potable Water Network | 2027-02-03 → 2027-05-04 (+90d) | 2027-02-21 → 2027-05-23 (+91d) | 1.54d → -66d |  |
| HO-210 | Submission As-Built Drawing For Pump station | 2027-02-03 → 2027-05-08 (+94d) | 2027-02-03 → 2027-05-09 (+95d) | 13d → -58.2d |  |
| HO-150 | Submission As-Built Drawing For Street Lighting Network | 2027-02-13 → 2027-05-10 (+86d) | 2027-02-22 → 2027-05-23 (+90d) | 0d → -66d |  |
| HO-170 | Submission As-Built Drawing For Medium Voltage Network | 2027-02-06 → 2027-05-10 (+93d) | 2027-02-22 → 2027-05-30 (+97d) | 0d → -71.2d |  |
| HO-140 | Submission As-Built Drawing For Roads Network | 2027-02-18 → 2027-05-23 (+94d) | 2027-02-22 → 2027-05-25 (+92d) | 0d → -68d |  |
| 1 | **De-Mobilization Works** | 2027-02-13 → 2027-05-12 (+88d) | 2027-02-20 → 2027-05-23 (+92d) |  |  |
| HO-230 | Remove Temporary Car Shades | 2027-02-13 → 2027-05-12 (+88d) | 2027-02-20 → 2027-05-23 (+92d) | 2d → -66d |  |
| 3 | **Handing Over** | 2027-02-18 → 2027-05-23 (+94d) | 2027-02-22 → 2027-05-25 (+92d) |  |  |
| HO-250 | Review B.O.Q Qty. to ensure compliance with the actual status | 2027-02-18 → 2027-05-23 (+94d) | 2027-02-22 → 2027-05-25 (+92d) | 0d → -68d |  |

## Version 3 (data date 2026-10-13, saved 2026-10-12, file MOD3-3147-BL0-R0-6UPDATE 13-10-2026.xer)

Last finish 2027-05-30 → 2027-06-10 (+11d). Complete tasks 239 → 290.

Changed:

| ID | Task | Start | Finish | Total float |
| --- | --- | --- | --- | --- |
| MS | **Key Milestones** |  | 2027-05-30 → 2027-06-10 (+11d) |  |
| CM | **Contractual Milestones** |  | 2027-05-30 → 2027-06-10 (+11d) |  |
| MS-CF-ENG | Completion of Submitting and Approval of Shopdrwing and Material | 2026-09-24 → 2026-10-21 (+27d) | 2026-09-24 → 2026-10-21 (+27d) | -53d → -76d |
| MS-CF-SD | Completion of Construction Works for Storm Drainage Network | 2027-04-03 → 2027-04-10 (+7d) | 2027-04-03 → 2027-04-10 (+7d) | -65.2d → -72d |
| MS-CF-IR | Completion of Construction Works for Irrigation Network | 2027-04-01 → 2027-04-12 (+11d) | 2027-04-01 → 2027-04-12 (+11d) | -33.5d → -43d |
| MS-CF-MV | Completion of Construction Works for Medium Voltage Network | 2027-04-10 → 2027-04-20 (+10d) | 2027-04-10 → 2027-04-20 (+10d) | -59.5d → -69d |
| MS-CF-SW | Completion of Construction Works for Sewage Network | 2027-04-03 → 2027-04-21 (+18d) | 2027-04-03 → 2027-04-21 (+18d) | -57d → -72.5d |
| MS-CF-TSE | Completion of Construction Works for Treated Sewage Effluent Network | 2027-04-14 → 2027-04-26 (+12d) | 2027-04-14 → 2027-04-26 (+12d) | -45d → -54.5d |
| MS-CF-TE | Completion of Construction Works for Telecom Network | 2027-04-19 → 2027-04-29 (+10d) | 2027-04-19 → 2027-04-29 (+10d) | -67.5d → -77d |
| MS-CF-SL | Completion of Construction Works for Street Lighting Network | 2027-04-26 → 2027-05-06 (+10d) | 2027-04-26 → 2027-05-06 (+10d) | -60.5d → -70d |
| MS-CF-PW | Completion of Construction Works for Potable Water Network | 2027-04-26 → 2027-05-12 (+16d) | 2027-04-26 → 2027-05-12 (+16d) | -55d → -69d |
| MS-CF-RD | Completion of Construction Works for Road Works | 2027-05-12 → 2027-05-30 (+18d) | 2027-05-12 → 2027-05-30 (+18d) | -62d → -71.5d |
| MS-CF-PF | Project Completion Date | 2027-05-30 → 2027-06-10 (+11d) | 2027-05-30 → 2027-06-10 (+11d) | -71.2d → -82d |
| ENG | **Engineering Works** |  | 2026-09-24 → 2026-10-21 (+27d) |  |
| SD11 | **Material Submittals and Approvals** |  | 2026-09-24 → 2026-10-21 (+27d) |  |
| 2 | **Short Lead Time Items** |  | 2026-09-22 → 2026-10-20 (+28d) |  |
| 1 | **Superstructure Works** |  | 2026-09-22 → 2026-10-20 (+28d) |  |
| SL111 | **Storage Tank (TSE)** |  | 2026-09-22 → 2026-10-20 (+28d) |  |
| 1 | **Submission of Material** | 2026-09-15 → 2026-10-13 (+28d) | 2026-09-22 → 2026-10-20 (+28d) |  |
| ENG-MT-TSE-CV-S-130 | Material Submittal for Civil Works for Storage Tank (TSE) | 2026-09-15 → 2026-10-13 (+28d) | 2026-09-22 → 2026-10-20 (+28d) | -58.75d → -81.75d |
| 1 | **Long Lead Time Items** |  | 2026-09-24 → 2026-10-21 (+27d) |  |
| 2 | **Superstructure Works** | 2026-09-15 → 2026-10-13 (+28d) | 2026-09-24 → 2026-10-21 (+27d) |  |
| SL | **Pump Stations** | 2026-09-15 → 2026-10-13 (+28d) | 2026-09-24 → 2026-10-21 (+27d) |  |
| 1 | **Submission of Material** | 2026-09-15 → 2026-10-13 (+28d) | 2026-09-22 → 2026-10-20 (+28d) |  |
| ENG-MT-SPS-MC-S-100 | Material Submittal for Electromechanical Works for Pump Stations | 2026-09-15 → 2026-10-13 (+28d) | 2026-09-22 → 2026-10-20 (+28d) | -53d → -76d |
| 2 | **Approval of Material** | 2026-09-15 → 2026-10-13 (+28d) | 2026-09-24 → 2026-10-21 (+27d) |  |
| ENG-MT-SPS-MC-A-110 | Material Approval for Electromechanical Works for Pump Stations | 2026-09-15 → 2026-10-13 (+28d) | 2026-09-24 → 2026-10-21 (+27d) | -53d → -76d |
| SL1 | **Storage Tank (TSE)** | 2026-09-15 → 2026-10-13 (+28d) | 2026-09-24 → 2026-10-21 (+27d) |  |
| 1 | **Submission of Material** | 2026-09-15 → 2026-10-13 (+28d) | 2026-09-22 → 2026-10-20 (+28d) |  |
| ENG-MT-TSE-MC-S-110 | Material Submittal for Electromechanical Works for Storage Tank (TSE) | 2026-09-15 → 2026-10-13 (+28d) | 2026-09-22 → 2026-10-20 (+28d) | -53d → -76d |
| 2 | **Approval of Material** | 2026-09-15 → 2026-10-13 (+28d) | 2026-09-24 → 2026-10-21 (+27d) |  |
| ENG-MT-TSE-MC-A-120 | Material Approval for Electromechanical Works for Storage Tank (TSE) | 2026-09-15 → 2026-10-13 (+28d) | 2026-09-24 → 2026-10-21 (+27d) | -53d → -76d |
| PROC | **Procurement Cycle** |  | 2027-04-17 → 2027-04-24 (+7d) |  |
| NLL | **Short Lead Time Items** |  | 2027-04-17 → 2027-04-05 (-12d) |  |
| INF | **Infrastructure Networks** |  | 2027-04-17 → 2027-04-05 (-12d) |  |
| RD | **Road Works** |  | 2026-09-15 → 2026-10-13 (+28d) |  |
| DL | **Material Delivery & Site Inspection** |  | 2026-09-15 → 2026-10-13 (+28d) |  |
| 1 | **Pre-Bituminous Construction** |  | 2026-09-15 → 2026-10-13 (+28d) |  |
| PRO-R25-RD-DL-100 | Material Delivery & Site Inspection for Subgrade of Road Works |  | 2026-09-15 → 2026-10-13 (+28d) | 67.5d → 44.5d |
| PRO-R25-RD-DL-110 | Material Delivery & Site Inspection for Aggregate Base Course of Road Works | 2026-09-15 → 2026-10-13 (+28d) | 2026-09-15 → 2026-10-13 (+28d) | 81d → 58d |
| 4 | **Bituminous Construction** | 2026-09-15 → 2026-10-13 (+28d) | 2026-09-15 → 2026-10-13 (+28d) |  |
| PRO-R25-RD-DL-160 | Material Delivery & Site Inspection for Prime Coat of Road Works | 2026-09-15 → 2026-10-13 (+28d) | 2026-09-15 → 2026-10-13 (+28d) | 96d → 73d |
| PRO-R25-RD-DL-170 | Material Delivery & Site Inspection for Bituminous Base & Wearing Courses of Road Works | 2026-09-15 → 2026-10-13 (+28d) | 2026-09-15 → 2026-10-13 (+28d) | 103d → 80d |
| 2 | **Pavement Works** | 2026-09-15 → 2026-10-13 (+28d) | 2026-09-15 → 2026-10-13 (+28d) |  |
| PRO-R25-RD-DL-120 | Material Delivery & Site Inspection of Interlock Tiles for Landscaping | 2026-09-15 → 2026-10-13 (+28d) | 2026-09-15 → 2026-10-13 (+28d) | 94d → 71d |
| PRO-R25-RD-DL-130 | Material Delivery & Site Inspection of Curbstones for Landscaping | 2026-09-15 → 2026-10-13 (+28d) | 2026-09-15 → 2026-10-13 (+28d) | 81.8d → 58.8d |
| 3 | **Traffic Signs Boards and Roads Marking** | 2026-09-15 → 2026-10-13 (+28d) | 2026-09-15 → 2026-10-13 (+28d) |  |
| PRO-R25-RD-DL-140 | Material Delivery & Site Inspection of Traffic Signs Boards For Road Works | 2026-09-15 → 2026-10-13 (+28d) | 2026-09-15 → 2026-10-13 (+28d) | 120d → 97d |
| PRO-R25-RD-DL-150 | Material Delivery & Site Inspection of Road Markings For Road Works | 2026-09-15 → 2026-10-13 (+28d) | 2026-09-15 → 2026-10-13 (+28d) | 113d → 90d |
| IR1 | **Softscape and Planting Works** | 2026-09-15 → 2026-10-13 (+28d) | 2027-01-14 → 2027-02-14 (+31d) |  |
| PO | **Issuance of Purchase Orders** | 2026-09-15 → 2026-10-13 (+28d) | 2026-09-21 → 2026-10-19 (+28d) |  |
| 1 | **Main Line Pipes** | 2026-09-15 → 2026-10-13 (+28d) | 2026-09-21 → 2026-10-19 (+28d) |  |
| PRO-IR-PO-140 | Issuance of Purchase Order for Softscape and Planting Works | 2026-09-15 → 2026-10-13 (+28d) | 2026-09-21 → 2026-10-19 (+28d) | -42.75d → -65.75d |
| PRO-IR-PO-150 | Issuance of Purchase Order for Site Furnishings (Seating Bench,Stone Boulders and Gravel) | 2026-09-15 → 2026-10-13 (+28d) | 2026-09-21 → 2026-10-19 (+28d) | -39.75d → -62.75d |
| MF | **Manufacturing of Material** | 2026-09-22 → 2026-10-20 (+28d) | 2026-12-20 → 2027-01-17 (+28d) |  |
| 1 | **Main Line Pipes** | 2026-09-22 → 2026-10-20 (+28d) | 2026-12-20 → 2027-01-17 (+28d) |  |
| PRO-IR-MF-140 | Manufacturing of Softscape and Planting Works | 2026-09-22 → 2026-10-20 (+28d) | 2026-12-20 → 2027-01-17 (+28d) | -50d → -78d |
| PRO-IR-MF-150 | Manufacturing of Valves for Site Furnishings (Seating Bench,Stone Boulders and Gravel) | 2026-09-22 → 2026-10-20 (+28d) | 2026-12-20 → 2027-01-17 (+28d) | -47d → -75d |
| 1DL | **1st Material Delivery & Site Inspection** | 2026-12-21 → 2027-01-18 (+28d) | 2026-12-27 → 2027-01-24 (+28d) |  |
| 1 | **Main Line Pipes** | 2026-12-21 → 2027-01-18 (+28d) | 2026-12-27 → 2027-01-24 (+28d) |  |
| PRO-IR-1DL-140 | 1ST Material Delivery for Softscape and Planting Works | 2026-12-21 → 2027-01-18 (+28d) | 2026-12-27 → 2027-01-24 (+28d) | -43d → -67d |
| PRO-IR-1DL-150 | 1ST Material Delivery for Site Furnishings (Seating Bench,Stone Boulders and Gravel) | 2026-12-21 → 2027-01-18 (+28d) | 2026-12-27 → 2027-01-24 (+28d) | -40d → -64d |
| DL | **Material Delivery & Site Inspection** | 2026-12-28 → 2027-01-25 (+28d) | 2027-01-14 → 2027-02-14 (+31d) |  |
| 1 | **Main Line Pipes** | 2026-12-28 → 2027-01-25 (+28d) | 2027-01-14 → 2027-02-14 (+31d) |  |
| PRO-R25-IR-DL-140 | Material Delivery & Site Inspection of Softscape and Planting Works | 2026-12-28 → 2027-01-25 (+28d) | 2027-01-10 → 2027-02-07 (+28d) | -43d → -67d |
| PRO-R25-IR-DL-150 | Material Delivery & Site Inspection of Site Furnishings (Seating Bench,Stone Boulders and Gravel) | 2026-12-28 → 2027-01-25 (+28d) | 2027-01-14 → 2027-02-14 (+31d) | -40d → -64d |
| SW | **Sewage Network** | 2026-06-23 → 2026-03-03 (-112d) | 2027-03-17 → 2027-04-05 (+19d) |  |
| PO | **Issuance of Purchase Orders** | 2026-06-23 → 2026-03-03 (-112d) | 2026-09-21 → 2026-03-03 (-202d) |  |
| 1 | **Main Line Sections** | 2026-06-23 → 2026-03-03 (-112d) | 2026-06-29 → 2026-03-03 (-118d) |  |
| PRO-SW-PO-100 | Issuance of Purchase Order for Main Line Pipes of Sewage Network | 2026-06-23 A → 2026-03-03 A (-112d) | 2026-06-29 A → 2026-03-03 A (-118d) |  |

| ID | Task | Start | Finish | Duration | Complete | Total float |
| --- | --- | --- | --- | --- | --- | --- |
| PRO-SW-PO-110 | Issuance of Purchase Order for Manhole of Sewage Network | 2026-06-23 A → 2026-03-03 A (-112d) | 2026-06-29 A → 2026-03-03 A (-118d) |  |  |  |
| 3 | **Testing and Finishes** | 2026-09-15 → 2026-03-03 (-196d) | 2026-09-21 → 2026-03-03 (-202d) |  |  |  |
| PRO-SW-PO-120 | Issuance of Purchase Order for Manhole Covers of Sewage Network | 2026-09-15 → 2026-03-03 A (-196d) | 2026-09-21 → 2026-03-03 A (-202d) | 6d → 0.75d | 0% → 100% | -57d → none |
| MF | **Manufacturing of Material** |  | 2027-01-29 → 2027-02-19 (+21d) |  |  |  |
| 3 | **Testing and Finishes** | 2026-09-22 → 2026-10-13 (+21d) | 2027-01-29 → 2027-02-19 (+21d) |  |  |  |
| PRO-SW-MF-120 | Manufacturing of Manhole Covers for Sewage Network | 2026-09-22 → 2026-10-13 (+21d) | 2027-01-29 → 2027-02-19 (+21d) |  |  | -67d → -88d |
| 1DL | **1st Material Delivery & Site Inspection** |  | 2027-02-04 → 2027-02-28 (+24d) |  |  |  |
| 3 | **Testing and Finishes** | 2027-01-30 → 2027-02-20 (+21d) | 2027-02-04 → 2027-02-28 (+24d) |  |  |  |
| PRO-SW-1DL-120 | 1ST Material Delivery for Manholes Covers of Sewage Network | 2027-01-30 → 2027-02-20 (+21d) | 2027-02-04 → 2027-02-28 (+24d) |  |  | -57d → -72.5d |
| DL | **Material Delivery & Site Inspection** |  | 2027-03-17 → 2027-04-05 (+19d) |  |  |  |
| 1 | **Main Line Sections** |  | 2026-09-15 → 2026-10-13 (+28d) |  |  |  |
| PRO-R25-SW-DL-110 | Material Delivery & Site Inspection of Manholes for Sewage Network | 2026-09-15 → 2026-09-13 A (-2d) | 2026-09-15 → 2026-10-13 (+28d) |  | 0% → 30% | -8d → -31d |
| 3 | **Testing and Finishes** | 2027-02-06 → 2027-02-28 (+22d) | 2027-03-17 → 2027-04-05 (+19d) |  |  |  |
| PRO-R25-SW-DL-120 | Material Delivery & Site Inspection of Manholes Covers for Sewage Network | 2027-02-06 → 2027-02-28 (+22d) | 2027-03-17 → 2027-04-05 (+19d) |  |  | -57d → -72.5d |
| SD | **Storm Drainage Network** | 2026-08-02 → 2026-03-03 (-152d) | 2027-02-16 → 2027-03-24 (+36d) |  |  |  |
| MF | **Manufacturing of Material** | 2026-09-18 → 2026-05-03 (-138d) | 2026-12-30 → 2027-01-20 (+21d) |  |  |  |
| 1 | **Main Line Sections** | 2026-09-18 → 2026-05-03 (-138d) | 2026-11-01 → 2026-05-17 (-168d) |  |  |  |
| PRO-SD-MF-100 | Manufacturing of Materials for Manholes of Storm Drainage Network | 2026-09-22 → 2026-05-03 A (-142d) | 2026-11-01 → 2026-05-17 A (-168d) |  | 0% → 100% | -84.2d → none |
| PRO-SD-MF-110 | Manufacturing of Materials for Main Line Pipes of Storm Drainage Network | 2026-09-18 → 2026-05-03 A (-138d) | 2026-09-25 → 2026-05-17 A (-131d) |  | 0% → 100% | -63d → none |
| 2 | **Catch Basin Sections** | 2026-09-22 → 2026-05-03 (-142d) | 2026-10-11 → 2026-05-17 (-147d) |  |  |  |
| PRO-SD-MF-130 | Manufacturing of Materials for Catch Basins of Storm Drainage Network | 2026-09-22 → 2026-05-03 A (-142d) | 2026-10-11 → 2026-05-17 A (-147d) |  | 0% → 100% | -54d → none |
| PRO-SD-MF-150 | Manufacturing of Materials for Catch Basin Pipes of Storm Drainage Network | 2026-09-22 → 2026-05-03 A (-142d) | 2026-10-11 → 2026-05-17 A (-147d) |  | 0% → 100% | -54d → none |
| 3 | **Testing and Finishes** | 2026-09-22 → 2026-10-13 (+21d) | 2026-12-30 → 2027-01-20 (+21d) |  |  |  |
| PRO-SD-MF-120 | Manufacturing of Materials for Manhole Covers of Storm Drainage Network | 2026-09-22 → 2026-10-13 (+21d) | 2026-12-30 → 2027-01-20 (+21d) |  |  | -38d → -59d |
| PRO-SD-MF-140 | Manufacturing of Materials for Catch Basin Covers of Storm Drainage Network | 2026-09-22 → 2026-10-13 (+21d) | 2026-12-30 → 2027-01-20 (+21d) |  |  | -43d → -64d |
| PO | **Issuance of Purchase Orders** | 2026-09-15 → 2026-03-03 (-196d) | 2026-09-22 → 2026-03-03 (-203d) |  |  |  |
| 1 | **Main Line Sections** | 2026-09-15 → 2026-03-03 (-196d) | 2026-09-22 → 2026-03-03 (-203d) |  |  |  |
| PRO-SD-PO-100 | Issuance of Purchase Order for Manholes of Storm Drainage Network | 2026-09-15 → 2026-03-03 A (-196d) | 2026-09-22 → 2026-03-03 A (-203d) |  | 0% → 100% | -71.95d → none |
| PRO-SD-PO-110 | Issuance of Purchase Order for Main Line Pipes of Storm Drainage Network | 2026-09-15 → 2026-03-03 A (-196d) | 2026-09-17 → 2026-03-03 A (-198d) |  | 0% → 100% | -66.75d → none |
| 2 | **Catch Basin Sections** | 2026-09-15 → 2026-03-03 (-196d) | 2026-09-21 → 2026-03-03 (-202d) |  |  |  |
| PRO-SD-PO-130 | Issuance of Purchase Order for Catch Basins of Storm Drainage Network | 2026-09-15 → 2026-03-03 A (-196d) | 2026-09-21 → 2026-03-03 A (-202d) |  | 0% → 100% | -45.75d → none |
| PRO-SD-PO-150 | Issuance of Purchase Order for Catch Basin Pipes of Storm Drainage Network | 2026-09-15 → 2026-03-03 A (-196d) | 2026-09-21 → 2026-03-03 A (-202d) |  | 0% → 100% | -45.75d → none |
| 3 | **Testing and Finishes** | 2026-09-15 → 2026-03-03 (-196d) | 2026-09-21 → 2026-03-03 (-202d) |  |  |  |
| PRO-SD-PO-120 | Issuance of Purchase Order for Manhole Covers of Storm Drainage Network | 2026-09-15 → 2026-03-03 A (-196d) | 2026-09-21 → 2026-03-03 A (-202d) |  | 0% → 100% | -32.75d → none |
| PRO-SD-PO-140 | Issuance of Purchase Order for Catch Basin Covers of Storm Drainage Network | 2026-09-15 → 2026-03-03 A (-196d) | 2026-09-21 → 2026-03-03 A (-202d) |  | 0% → 100% | -36.75d → none |
| 1DL | **1st Material Delivery & Site Inspection** | 2026-09-26 → 2026-09-13 (-13d) | 2027-01-06 → 2027-01-27 (+21d) |  |  |  |
| 1 | **Main Line Sections** | 2026-09-26 → 2026-09-13 (-13d) | 2026-10-01 → 2026-09-27 (-4d) |  |  |  |
| PRO-SD-1DL-110 | 1ST Material Delivery for Main Line Pipes of Storm Drainage Network | 2026-09-26 → 2026-09-13 A (-13d) | 2026-10-01 → 2026-09-27 A (-4d) |  | 0% → 100% | -53d → none |
| 2 | **Catch Basin Sections** | 2026-10-12 → 2026-09-13 (-29d) | 2026-10-18 → 2026-10-19 (+1d) |  |  |  |
| PRO-SD-1DL-120 | 1ST Material Delivery for Catch Basin Pipes of Storm Drainage Network | 2026-10-12 → 2026-09-13 A (-29d) | 2026-10-18 → 2026-10-19 (+1d) |  | 0% → 40% | -45d → -46d |
| PRO-SD-1DL-130 | 1ST Material Delivery for Catch Basins of Storm Drainage Network | 2026-10-12 → 2026-09-13 A (-29d) | 2026-10-18 → 2026-10-19 (+1d) |  | 0% → 40% | -45d → -46d |
| 3 | **Testing and Finishes** | 2026-12-31 → 2027-01-21 (+21d) | 2027-01-06 → 2027-01-27 (+21d) |  |  |  |
| PRO-SD-1DL-140 | 1ST Material Delivery for Manholes Covers of Storm Drainage Network | 2026-12-31 → 2027-01-21 (+21d) | 2027-01-06 → 2027-01-27 (+21d) |  |  | -33d → -51d |
| PRO-SD-1DL-150 | 1ST Material Delivery for Catch Basin Covers of Storm Drainage Network | 2026-12-31 → 2027-01-21 (+21d) | 2027-01-06 → 2027-01-27 (+21d) |  |  | -37d → -55d |
| DL | **Material Delivery & Site Inspection** |  | 2027-02-16 → 2027-03-24 (+36d) |  |  |  |
| 1 | **Main Line Sections** |  | 2026-11-01 → 2026-10-13 (-19d) |  |  |  |
| PRO-R25-SD-DL-100 | Material Delivery & Site Inspection of Manholes of Storm Drainage Network |  | 2026-11-01 → 2026-10-13 (-19d) |  |  | -71.2d → -55d |
| PRO-R25-SD-DL-120 | Material Delivery & Site Inspection of Main Line Pipes of Storm Drainage Network |  | 2026-10-03 → 2026-09-20 A (-13d) |  | 82% → 100% | -53d → none |
| 2 | **Catch Basin Sections** |  | 2026-10-19 → 2026-10-20 (+1d) |  |  |  |
| PRO-R25-SD-DL-110 | Material Delivery & Site Inspection of Catch Basin Pipes for Storm Drainage Network |  | 2026-10-19 → 2026-10-20 (+1d) |  |  | -35d → -36d |
| PRO-R25-SD-DL-130 | Material Delivery & Site Inspection of Catch Basins for Storm Drainage Network |  | 2026-10-19 → 2026-10-20 (+1d) |  |  | -35d → -36d |
| 3 | **Testing and Finishes** | 2027-01-07 → 2027-01-28 (+21d) | 2027-02-16 → 2027-03-24 (+36d) |  |  |  |
| PRO-R25-SD-DL-150 | Material Delivery & Site Inspection of Catch Basin Covers for Storm Drainage Network | 2027-01-07 → 2027-01-28 (+21d) | 2027-01-30 → 2027-02-24 (+25d) |  |  | -37d → -55d |
| PRO-R25-SD-DL-140 | Material Delivery & Site Inspection of Manholes Covers for Storm Drainage Network | 2027-01-16 → 2027-02-14 (+29d) | 2027-02-16 → 2027-03-24 (+36d) |  |  | -40d → -64d |
| PW | **Potable Water Network** |  | 2027-02-25 → 2027-03-30 (+33d) |  |  |  |
| PO | **Issuance of Purchase Orders** |  | 2026-09-27 → 2026-10-24 (+27d) |  |  |  |
| 1 | **Main Line Sections** |  | 2026-09-24 → 2026-10-19 (+25d) |  |  |  |
| PRO-PW-PO-100_R | Issuance of Purchase Order for Main Line Pipes of Potable Water Network(Remaining) | 2026-09-19 → 2026-04-02 A (-170d) | 2026-09-24 → 2026-06-15 A (-101d) |  | 0% → 100% | -66.75d → none |
| PRO-PW-PO-110 | Issuance of Purchase Order for Valves of Potable Water Network | 2026-09-15 → 2026-10-13 (+28d) | 2026-09-21 → 2026-10-19 (+28d) |  |  | -39.25d → -62.25d |
| 3 | **Fire Hydrant** | 2026-09-15 → 2026-10-13 (+28d) | 2026-09-27 → 2026-10-24 (+27d) |  |  |  |
| PRO-PW-PO-120 | Issuance of Purchase Order for Fire Hydrants of Potable Water Network | 2026-09-15 → 2026-10-13 (+28d) | 2026-09-27 → 2026-10-24 (+27d) |  |  | -24.25d → -47.25d |
| 4 | **Testing and Finishes** | 2026-09-15 → 2026-10-13 (+28d) | 2026-09-27 → 2026-10-24 (+27d) |  |  |  |
| PRO-PW-PO-130 | Issuance of Purchase Order for Surface Box of Potable Water Network | 2026-09-15 → 2026-10-13 (+28d) | 2026-09-27 → 2026-10-24 (+27d) |  |  | -28.75d → -51.75d |
| MF | **Manufacturing of Material** |  | 2027-01-15 → 2027-02-11 (+27d) |  |  |  |
| 1 | **Main Line Sections** |  | 2026-12-30 → 2027-01-17 (+18d) |  |  |  |
| PRO-PW-MF-100_R | Manufacturing of Main Line Pipes for Potable Water Network(Remaining) | 2026-09-25 → 2026-07-01 A (-86d) | 2026-12-30 → 2026-07-10 A (-173d) |  | 0% → 100% | -79d → none |
| PRO-PW-MF-110 | Manufacturing of Valves for Potable Water Network | 2026-09-22 → 2026-10-20 (+28d) | 2026-12-20 → 2027-01-17 (+28d) |  |  | -46.5d → -74.5d |
| 3 | **Fire Hydrant** | 2026-09-28 → 2026-10-25 (+27d) | 2026-11-26 → 2026-12-23 (+27d) |  |  |  |
| PRO-PW-MF-120 | Manufacturing of Fire Hydrants for Potable Water Network | 2026-09-28 → 2026-10-25 (+27d) | 2026-11-26 → 2026-12-23 (+27d) |  |  | -29.5d → -56.5d |
| 4 | **Testing and Finishes** | 2026-09-28 → 2026-10-25 (+27d) | 2027-01-15 → 2027-02-11 (+27d) |  |  |  |

| ID | Task | Start | Finish | Complete | Total float |
| --- | --- | --- | --- | --- | --- |
| PRO-PW-MF-130 | Manufacturing for Surface Box of Potable Water Network | 2026-09-28 → 2026-10-25 (+27d) | 2027-01-15 → 2027-02-11 (+27d) |  | -35d → -62d |
| 1DL | **1st Material Delivery & Site Inspection** |  | 2027-01-21 → 2027-02-21 (+31d) |  |  |
| 1 | **Main Line Sections** |  | 2026-12-27 → 2027-01-24 (+28d) |  |  |
| PRO-PW-1DL-100_R | 1ST Material Delivery for Main Line Pipes of Potable Water Network(Remaining) | 2026-09-26 → 2026-07-30 A (-58d) | 2026-12-16 → 2027-01-03 (+18d) | 0% → 90% | -56d → -71d |
| PRO-PW-1DL-110 | 1ST Material Delivery for Valves of Potable Water Network | 2026-12-21 → 2027-01-18 (+28d) | 2026-12-27 → 2027-01-24 (+28d) |  | -39.5d → -63.5d |
| 3 | **Fire Hydrant** | 2026-11-28 → 2026-12-24 (+26d) | 2026-12-03 → 2026-12-30 (+27d) |  |  |
| PRO-PW-1DL-120 | 1ST Material Delivery for Fire Hydrants of Potable Water Network | 2026-11-28 → 2026-12-24 (+26d) | 2026-12-03 → 2026-12-30 (+27d) |  | -25.5d → -48.5d |
| 4 | **Testing and Finishes** | 2027-01-16 → 2027-02-13 (+28d) | 2027-01-21 → 2027-02-21 (+31d) |  |  |
| PRO-PW-1DL-130 | 1ST Material Delivery for Finishes of Potable Water Network | 2027-01-16 → 2027-02-13 (+28d) | 2027-01-21 → 2027-02-21 (+31d) |  | -30d → -53d |
| DL | **Material Delivery & Site Inspection** |  | 2027-02-25 → 2027-03-30 (+33d) |  |  |
| 1 | **Main Line Sections** |  | 2026-12-28 → 2027-01-25 (+28d) |  |  |
| PRO-R25-PW-DL-100_R | Material Delivery & Site Inspection of Main Line Pipes for Potable Water Network(Remaining) |  | 2026-12-16 → 2027-01-03 (+18d) |  | -56d → -71d |
| PRO-R25-PW-DL-110 | Material Delivery & Site Inspection of Valves for Potable Water Network | 2026-12-28 → 2027-01-25 (+28d) | 2026-12-28 → 2027-01-25 (+28d) |  | -33.5d → -57.5d |
| 3 | **Fire Hydrant** | 2026-12-05 → 2026-12-31 (+26d) | 2026-12-05 → 2026-12-31 (+26d) |  |  |
| PRO-R25-PW-DL-120 | Material Delivery & Site Inspection of Fire Hydrants for Potable Water Network | 2026-12-05 → 2026-12-31 (+26d) | 2026-12-05 → 2026-12-31 (+26d) |  | -25.5d → -48.5d |
| 4 | **Testing and Finishes** | 2027-01-23 → 2027-02-22 (+30d) | 2027-02-25 → 2027-03-30 (+33d) |  |  |
| PRO-R25-PW-DL-130 | Material Delivery & Site Inspection for Finishes of Potable Water Network | 2027-01-23 → 2027-02-22 (+30d) | 2027-02-25 → 2027-03-30 (+33d) |  | -30d → -53d |
| IR | **Irrigation Network** |  | 2027-01-05 → 2027-02-01 (+27d) |  |  |
| PO | **Issuance of Purchase Orders** |  | 2026-09-29 → 2026-10-26 (+27d) |  |  |
| 1 | **Main Line Pipes** |  | 2026-09-29 → 2026-10-26 (+27d) |  |  |
| PRO-IR-PO-100_R | Issuance of Purchase Order for Main Line Pipes of Irrigation Network(Remaining) | 2026-09-26 → 2026-01-28 A (-241d) | 2026-09-29 → 2026-06-15 A (-106d) | 0% → 100% | -51.05d → none |
| PRO-IR-PO-110 | Issuance of Purchase Order for Valves of Irrigation Network | 2026-09-22 → 2026-10-20 (+28d) | 2026-09-29 → 2026-10-26 (+27d) |  | -37.25d → -60.25d |
| MF | **Manufacturing of Material** | 2026-09-29 → 2026-06-29 (-92d) | 2026-12-28 → 2027-01-24 (+27d) |  |  |
| 1 | **Main Line Pipes** | 2026-09-29 → 2026-06-29 (-92d) | 2026-12-28 → 2027-01-24 (+27d) |  |  |
| PRO-IR-MF-100 | Manufacturing of Main Line Pipes for Irrigation Network | 2026-09-29 → 2026-06-29 A (-92d) | 2026-12-24 → 2026-07-20 A (-157d) | 0% → 100% | -61.3d → none |
| PRO-IR-MF-110 | Manufacturing of Valves for Irrigation Network | 2026-09-30 → 2026-10-27 (+27d) | 2026-12-28 → 2027-01-24 (+27d) |  | -44.5d → -71.5d |
| 1DL | **1st Material Delivery & Site Inspection** | 2026-12-24 → 2026-07-22 (-155d) | 2027-01-04 → 2027-01-31 (+27d) |  |  |
| 1 | **Main Line Pipes** | 2026-12-24 → 2026-07-22 (-155d) | 2027-01-04 → 2027-01-31 (+27d) |  |  |
| PRO-IR-1DL-100 | 1ST Material Delivery for Main Line Pipes of Irrigation Network | 2026-12-24 → 2026-07-22 A (-155d) | 2026-12-30 → 2026-10-13 (-78d) | 0% → 30% | -53.3d → 14d |
| PRO-IR-1DL-110 | 1ST Material Delivery for Valves of Irrigation Network | 2026-12-29 → 2027-01-25 (+27d) | 2027-01-04 → 2027-01-31 (+27d) |  | -38.5d → -61.5d |
| DL | **Material Delivery & Site Inspection** | 2026-12-30 → 2026-10-13 (-78d) | 2027-01-05 → 2027-02-01 (+27d) |  |  |
| 1 | **Main Line Pipes** | 2026-12-30 → 2026-10-13 (-78d) | 2027-01-05 → 2027-02-01 (+27d) |  |  |
| PRO-R25-IR-DL-100 | Material Delivery & Site Inspection of Main Line Pipes for Irrigation Network | 2026-12-30 → 2026-10-13 (-78d) | 2026-12-30 → 2026-10-13 (-78d) |  | -53.3d → 14d |
| PRO-R25-IR-DL-110 | Material Delivery & Site Inspection of Valves for Irrigation Network | 2027-01-05 → 2027-02-01 (+27d) | 2027-01-05 → 2027-02-01 (+27d) |  | -38.5d → -61.5d |
| TSE | **Treated Sewage Effluent (Tse)** | 2026-04-01 → 2026-03-03 (-29d) | 2026-12-28 → 2027-01-25 (+28d) |  |  |
| PO | **Issuance of Purchase Orders** | 2026-09-15 → 2026-03-03 (-196d) | 2026-09-21 → 2026-10-19 (+28d) |  |  |
| 1 | **Main Line Pipes** | 2026-09-15 → 2026-03-03 (-196d) | 2026-09-21 → 2026-10-19 (+28d) |  |  |
| PRO-TSE-PO-120 | Issuance of Purchase Order for Main Line Pipes of Treated Sewage Effluent (Tse) | 2026-09-15 → 2026-03-03 A (-196d) | 2026-09-21 → 2026-03-03 A (-202d) | 0% → 100% | -49.25d → none |
| PRO-TSE-PO-130 | Issuance of Purchase Order for Valves of Treated Sewage Effluent (Tse) | 2026-09-15 → 2026-10-13 (+28d) | 2026-09-21 → 2026-10-19 (+28d) |  | -30.25d → -53.25d |
| MF | **Manufacturing of Material** | 2026-09-22 → 2026-07-20 (-64d) | 2026-12-20 → 2027-01-17 (+28d) |  |  |
| 1 | **Main Line Pipes** | 2026-09-22 → 2026-07-20 (-64d) | 2026-12-20 → 2027-01-17 (+28d) |  |  |
| PRO-TSE-MF-120 | Manufacturing of Main Line Pipes for Treated Sewage Effluent (Tse) | 2026-09-22 → 2026-07-20 A (-64d) | 2026-12-20 → 2026-08-03 A (-139d) | 0% → 100% | -57.5d → none |
| PRO-TSE-MF-130 | Manufacturing of Valves for Treated Sewage Effluent (Tse) | 2026-09-22 → 2026-10-20 (+28d) | 2026-12-20 → 2027-01-17 (+28d) |  | -35.5d → -63.5d |
| 1DL | **1st Material Delivery & Site Inspection** | 2026-12-21 → 2026-10-13 (-69d) | 2026-12-27 → 2027-01-24 (+28d) |  |  |
| 1 | **Main Line Pipes** | 2026-12-21 → 2026-10-13 (-69d) | 2026-12-27 → 2027-01-24 (+28d) |  |  |
| PRO-TSE-1DL-120 | 1ST Material Delivery for Main Line Pipes of Treated Sewage Effluent (Tse) | 2026-12-21 → 2026-10-13 (-69d) | 2026-12-27 → 2026-10-19 (-69d) |  | -49.5d → 9.5d |
| PRO-TSE-1DL-130 | 1ST Material Delivery for Valves of Treated Sewage Effluent (Tse) | 2026-12-21 → 2027-01-18 (+28d) | 2026-12-27 → 2027-01-24 (+28d) |  | -30.5d → -54.5d |
| DL | **Material Delivery & Site Inspection** |  | 2026-12-28 → 2027-01-25 (+28d) |  |  |
| 1 | **Main Line Pipes** |  | 2026-12-28 → 2027-01-25 (+28d) |  |  |
| PRO-R25-TSE-DL-120_R | Material Delivery & Site Inspection of Main Line Pipes for Treated Sewage Effluent (Tse)(Remaining) |  | 2026-12-28 → 2026-10-20 (-69d) |  | -49.5d → 9.5d |
| PRO-R25-TSE-DL-130 | Material Delivery & Site Inspection of Valves for Treated Sewage Effluent (Tse) | 2026-12-28 → 2027-01-25 (+28d) | 2026-12-28 → 2027-01-25 (+28d) |  | -30.5d → -54.5d |
| MV | **Medium Voltage Network** | 2026-09-15 → 2026-10-13 (+28d) | 2027-02-15 → 2027-03-22 (+35d) |  |  |
| PO | **Issuance of Purchase Orders** | 2026-09-15 → 2026-10-13 (+28d) | 2026-09-29 → 2026-10-26 (+27d) |  |  |
| 1 | **Cabling Works** | 2026-09-15 → 2026-10-13 (+28d) | 2026-09-29 → 2026-10-26 (+27d) |  |  |
| PRO-MV-PO-100 | Issuance of Purchase Order for Medium Voltage Cables of Medium Voltage Network | 2026-09-15 → 2026-10-13 (+28d) | 2026-09-29 → 2026-10-26 (+27d) |  | -35.25d → -58.25d |
| 3 | **Termination and Testing Works** | 2026-09-15 → 2026-10-13 (+28d) | 2026-09-29 → 2026-10-26 (+27d) |  |  |
| PRO-MV-PO-120 | Issuance of Purchase Order for Termination and Joints Kits of Medium Voltage Network | 2026-09-15 → 2026-10-13 (+28d) | 2026-09-29 → 2026-10-26 (+27d) |  | -42.75d → -65.75d |
| MF | **Manufacturing of Material** | 2026-09-30 → 2026-10-27 (+27d) | 2026-12-28 → 2027-01-24 (+27d) |  |  |
| 1 | **Cabling Works** | 2026-09-30 → 2026-10-27 (+27d) | 2026-11-28 → 2026-12-25 (+27d) |  |  |
| PRO-MV-MF-100 | Manufacturing of Medium Voltage Cables for Medium Voltage Network | 2026-09-30 → 2026-10-27 (+27d) | 2026-11-28 → 2026-12-25 (+27d) |  | -42.5d → -69.5d |
| 3 | **Termination and Testing Works** | 2026-09-30 → 2026-10-27 (+27d) | 2026-12-28 → 2027-01-24 (+27d) |  |  |
| PRO-MV-MF-110 | Manufacturing of Termination and Joints Kits for Medium Voltage Network | 2026-09-30 → 2026-10-27 (+27d) | 2026-12-28 → 2027-01-24 (+27d) |  | -51d → -78d |
| 1DL | **1st Material Delivery & Site Inspection** | 2026-11-29 → 2026-12-26 (+27d) | 2027-01-13 → 2027-02-10 (+28d) |  |  |
| 1 | **Cabling Works** | 2026-11-29 → 2026-12-26 (+27d) | 2026-12-12 → 2027-01-07 (+26d) |  |  |
| PRO-MV-1DL-100 | 1ST Material Delivery for Medium Voltage Cables of Medium Voltage Network | 2026-11-29 → 2026-12-26 (+27d) | 2026-12-12 → 2027-01-07 (+26d) |  | -36.5d → -59.5d |
| 3 | **Termination and Testing Works** | 2026-12-29 → 2027-01-25 (+27d) | 2027-01-13 → 2027-02-10 (+28d) |  |  |
| PRO-MV-1DL-120 | 1ST Material Delivery for Termination and Joints Kits of Medium Voltage Network | 2026-12-29 → 2027-01-25 (+27d) | 2027-01-13 → 2027-02-10 (+28d) |  | -44d → -67d |
| DL | **Material Delivery & Site Inspection** | 2026-12-13 → 2027-01-09 (+27d) | 2027-02-15 → 2027-03-22 (+35d) |  |  |
| 1 | **Cabling Works** | 2026-12-13 → 2027-01-09 (+27d) | 2026-12-13 → 2027-01-09 (+27d) |  |  |
| PRO-MV-DL-100 | Material Delivery & Site Inspection of Medium Voltage Cables for Medium Voltage Network | 2026-12-13 → 2027-01-09 (+27d) | 2026-12-13 → 2027-01-09 (+27d) |  | -36.5d → -59.5d |

| ID | Task | Start | Finish | Complete | Total float |
| --- | --- | --- | --- | --- | --- |
| 3 | **Termination and Testing Works** | 2027-01-14 → 2027-02-10 (+27d) | 2027-02-15 → 2027-03-22 (+35d) |  |  |
| PRO-MV-DL-110 | Material Delivery & Site Inspection of Termination and Joints Kits for Medium Voltage Network | 2027-01-14 → 2027-02-10 (+27d) | 2027-02-15 → 2027-03-22 (+35d) |  | -44d → -67d |
| SL | **Low Voltage and Street Lighting Network** | 2026-09-15 → 2026-05-13 (-125d) | 2027-04-17 → 2026-11-29 (-139d) |  |  |
| PO | **Issuance of Purchase Orders** | 2026-09-15 → 2026-05-13 (-125d) | 2026-09-27 → 2026-05-25 (-125d) |  |  |
| 1 | **Cabling Works** | 2026-09-15 → 2026-05-13 (-125d) | 2026-09-21 → 2026-05-25 (-119d) |  |  |
| PRO-SL-PO-100 | Issuance of Purchase Order for Lighting Cables of Street Lighting Network | 2026-09-15 → 2026-05-13 A (-125d) | 2026-09-21 → 2026-05-25 A (-119d) | 0% → 100% | -35.25d → none |
| 2 | **Lighting Poles Works** | 2026-09-15 → 2026-05-13 (-125d) | 2026-09-21 → 2026-05-25 (-119d) |  |  |
| PRO-SL-PO-110 | Issuance of Purchase Order for Lighting Poles Foundations of Street Lighting Network | 2026-09-15 → 2026-05-13 A (-125d) | 2026-09-21 → 2026-05-25 A (-119d) | 0% → 100% | -64.25d → none |
| PRO-SL-PO-120 | Issuance of Purchase Order for Lighting Poles of Street Lighting Network | 2026-09-15 → 2026-05-13 A (-125d) | 2026-09-21 → 2026-05-25 A (-119d) | 0% → 100% | -30.25d → none |
| PRO-SL-PO-140 | Issuance of Purchase Order for Lighting Fixtures of Street Lighting Network | 2026-09-15 → 2026-05-13 A (-125d) | 2026-09-21 → 2026-05-25 A (-119d) | 0% → 100% | -19.75d → none |
| 3 | **Distribution Panel Board** | 2026-09-15 → 2026-05-13 (-125d) | 2026-09-27 → 2026-05-25 (-125d) |  |  |
| PRO-SL-PO-160 | Issuance of Purchase Order for Distrubution Panel Boards of Street Lighting Network | 2026-09-15 → 2026-05-13 A (-125d) | 2026-09-27 → 2026-05-25 A (-125d) | 0% → 100% | -19.75d → none |
| 4 | **Earthing System Works** | 2026-09-15 → 2026-05-13 (-125d) | 2026-09-24 → 2026-05-25 (-122d) |  |  |
| PRO-SL-PO-150 | Issuance of Purchase Order for Lighting Earthing of Street Lighting Network | 2026-09-15 → 2026-05-13 A (-125d) | 2026-09-24 → 2026-05-25 A (-122d) | 0% → 100% | -31.75d → none |
| 5 | **Termination and Testing Works** | 2026-09-15 → 2026-05-13 (-125d) | 2026-09-24 → 2026-05-25 (-122d) |  |  |
| PRO-SL-PO-130 | Issuance of Purchase Order for Fuse Boxes of Street Lighting Network | 2026-09-15 → 2026-05-13 A (-125d) | 2026-09-24 → 2026-05-25 A (-122d) | 0% → 100% | -59d → none |
| PRO-SL-PO-170 | Issuance of Purchase Order for Cable Lugs of Street Lighting Network | 2026-09-15 → 2026-05-13 A (-125d) | 2026-09-24 → 2026-05-25 A (-122d) | 0% → 100% | -28.75d → none |
| MF | **Manufacturing of Material** | 2026-09-22 → 2026-06-01 (-113d) | 2027-02-20 → 2026-06-17 (-248d) |  |  |
| 1 | **Cabling Works** | 2026-09-22 → 2026-06-01 (-113d) | 2026-12-20 → 2026-06-17 (-186d) |  |  |
| PRO-SL-MF-100 | Manufacturing of Lighting Cables for Street Lighting Network | 2026-09-22 → 2026-06-01 A (-113d) | 2026-12-20 → 2026-06-17 A (-186d) | 0% → 100% | -41.5d → none |
| 2 | **Lighting Poles Works** | 2026-09-22 → 2026-06-01 (-113d) | 2027-01-27 → 2026-06-17 (-224d) |  |  |
| PRO-SL-MF-110 | Manufacturing of Lighting Poles Foundations for Street Lighting Network | 2026-09-22 → 2026-06-01 A (-113d) | 2026-12-20 → 2026-06-17 A (-186d) | 0% → 100% | -75.38d → none |
| PRO-SL-MF-120 | Manufacturing of Lighting Poles for Street Lighting Network | 2026-09-22 → 2026-06-01 A (-113d) | 2026-12-20 → 2026-06-17 A (-186d) | 0% → 100% | -35.5d → none |
| PRO-SL-MF-140 | Manufacturing of Lighting Fixtures for Street Lighting Network | 2026-09-22 → 2026-06-01 A (-113d) | 2027-01-27 → 2026-06-17 A (-224d) | 0% → 100% | -23d → none |
| 3 | **Distribution Panel Board** | 2026-09-28 → 2026-06-01 (-119d) | 2027-01-15 → 2026-06-17 (-212d) |  |  |
| PRO-SL-MF-160 | Manufacturing of Distrubution Panel Boards for Street Lighting Network | 2026-09-28 → 2026-06-01 A (-119d) | 2027-01-15 → 2026-06-17 A (-212d) | 0% → 100% | -25d → none |
| 4 | **Earthing System Works** | 2026-09-25 → 2026-06-01 (-116d) | 2027-02-11 → 2026-06-17 (-239d) |  |  |
| PRO-SL-MF-150 | Manufacturing of Lighting Earthing for Street Lighting Network | 2026-09-25 → 2026-06-01 A (-116d) | 2027-02-11 → 2026-06-17 A (-239d) | 0% → 100% | -38d → none |
| 5 | **Termination and Testing Works** | 2026-09-25 → 2026-06-01 (-116d) | 2027-02-20 → 2026-06-17 (-248d) |  |  |
| PRO-SL-MF-130 | Manufacturing of Fuse Boxes for Street Lighting Network | 2026-09-25 → 2026-06-01 A (-116d) | 2027-02-20 → 2026-06-17 A (-248d) | 0% → 100% | -70d → none |
| PRO-SL-MF-170 | Manufacturing of Cable Lugs for Street Lighting Network | 2026-09-25 → 2026-06-01 A (-116d) | 2027-01-12 → 2026-06-17 A (-209d) | 0% → 100% | -34d → none |
| 1DL | **1st Material Delivery & Site Inspection** | 2026-12-21 → 2026-10-13 (-69d) | 2027-03-17 → 2026-10-29 (-139d) |  |  |
| 1 | **Cabling Works** | 2026-12-21 → 2026-10-13 (-69d) | 2026-12-27 → 2026-10-19 (-69d) |  |  |
| PRO-SL-1DL-100 | 1ST Material Delivery for Lighting Cables of Street Lighting Network | 2026-12-21 → 2026-10-13 (-69d) | 2026-12-27 → 2026-10-19 (-69d) |  | -35.5d → 23.5d |
| 2 | **Lighting Poles Works** | 2026-12-21 → 2026-10-13 (-69d) | 2027-02-03 → 2026-10-19 (-107d) |  |  |
| PRO-SL-1DL-110 | 1ST Material Delivery for Lighting Poles Foundations of Street Lighting Network | 2026-12-21 → 2026-10-13 (-69d) | 2026-12-27 → 2026-10-19 (-69d) |  | -64.5d → -5.5d |
| PRO-SL-1DL-120 | 1ST Material Delivery for Lighting Poles of Street Lighting Network | 2026-12-21 → 2026-10-13 (-69d) | 2026-12-27 → 2026-10-19 (-69d) |  | -30.5d → 28.5d |
| PRO-SL-1DL-140 | 1ST Material Delivery for Lighting Fixtures of Street Lighting Network | 2027-01-28 → 2026-10-13 (-107d) | 2027-02-03 → 2026-10-19 (-107d) |  | -20d → 72d |
| 3 | **Distribution Panel Board** | 2027-01-16 → 2026-10-13 (-95d) | 2027-01-21 → 2026-10-19 (-94d) |  |  |
| PRO-SL-1DL-160 | 1ST Material Delivery for Distrubution Panel Boards of Street Lighting Network | 2027-01-16 → 2026-10-13 (-95d) | 2027-01-21 → 2026-10-19 (-94d) |  | -21d → 60d |
| 5 | **Termination and Testing Works** | 2027-01-13 → 2026-10-13 (-92d) | 2027-03-17 → 2026-10-29 (-139d) |  |  |
| PRO-SL-1DL-130 | 1ST Material Delivery for Fuse Boxes of Street Lighting Network | 2027-02-21 → 2026-10-13 (-131d) | 2027-03-17 → 2026-10-29 (-139d) |  | -57.25d → 52d |
| PRO-SL-1DL-170 | 1ST Material Delivery for Cable Lugs of Street Lighting Network | 2027-01-13 → 2026-10-13 (-92d) | 2027-01-30 → 2026-10-29 (-93d) |  | -29d → 50d |
| 4 | **Earthing System Works** | 2027-02-13 → 2026-10-13 (-123d) | 2027-02-21 → 2026-10-19 (-125d) |  |  |
| PRO-SL-1DL-150 | 1ST Material Delivery for Lighting Earthing of Street Lighting Network | 2027-02-13 → 2026-10-13 (-123d) | 2027-02-21 → 2026-10-19 (-125d) |  | -32d → 72d |
| DL | **Material Delivery & Site Inspection** | 2026-12-28 → 2026-10-20 (-69d) | 2027-04-17 → 2026-11-29 (-139d) |  |  |
| 1 | **Cabling Works** | 2026-12-28 → 2026-10-20 (-69d) | 2026-12-28 → 2026-10-20 (-69d) |  |  |
| PRO-R25-SL-DL-100 | Material Delivery & Site Inspection of Lighting Cables for Street Lighting Network | 2026-12-28 → 2026-10-20 (-69d) | 2026-12-28 → 2026-10-20 (-69d) |  | -35.5d → 23.5d |
| 2 | **Lighting Poles Works** | 2026-12-28 → 2026-10-20 (-69d) | 2027-02-04 → 2026-11-09 (-87d) |  |  |
| PRO-R25-SL-DL-110 | Material Delivery & Site Inspection of Lighting Poles Foundations for Street Lighting Network | 2026-12-28 → 2026-10-20 (-69d) | 2027-01-17 → 2026-11-09 (-69d) |  | -64.5d → -5.5d |
| PRO-R25-SL-DL-120 | Material Delivery & Site Inspection of Lighting Poles for Street Lighting Network | 2026-12-28 → 2026-10-20 (-69d) | 2026-12-28 → 2026-10-20 (-69d) |  | -30.5d → 28.5d |
| PRO-R25-SL-DL-140 | Material Delivery & Site Inspection of Lighting Fixtures for Street Lighting Network | 2027-02-04 → 2026-10-20 (-107d) | 2027-02-04 → 2026-10-20 (-107d) |  | -20d → 72d |
| 3 | **Distribution Panel Board** | 2027-01-23 → 2026-10-20 (-95d) | 2027-01-23 → 2026-10-20 (-95d) |  |  |
| PRO-R25-SL-DL-160 | Material Delivery & Site Inspection of Distrubution Panel Boards for Street Lighting Network | 2027-01-23 → 2026-10-20 (-95d) | 2027-01-23 → 2026-10-20 (-95d) |  | -21d → 60d |
| 4 | **Termination and Testing Works** | 2027-01-31 → 2026-10-31 (-92d) | 2027-04-17 → 2026-11-29 (-139d) |  |  |
| PRO-R25-SL-DL-130 | Material Delivery & Site Inspection of Fuse Boxes for Street Lighting Network | 2027-03-17 → 2026-10-31 (-137d) | 2027-04-17 → 2026-11-29 (-139d) |  | -57.25d → 52d |
| PRO-R25-SL-DL-170 | Material Delivery & Site Inspection of Cable Lugs for Street Lighting Network | 2027-01-31 → 2026-10-31 (-92d) | 2027-03-08 → 2026-11-29 (-99d) |  | -29d → 50d |
| 5 | **Earthing System Works** | 2027-02-22 → 2026-10-20 (-125d) | 2027-02-22 → 2026-10-20 (-125d) |  |  |
| PRO-R25-SL-DL-150 | Material Delivery & Site Inspection of Lighting Earthing for Street Lighting Network | 2027-02-22 → 2026-10-20 (-125d) | 2027-02-22 → 2026-10-20 (-125d) |  | -32d → 72d |
| TE | **Telecom Network** | 2026-09-15 → 2026-10-13 (+28d) | 2027-01-02 → 2027-01-30 (+28d) |  |  |
| PO | **Issuance of Purchase Orders** | 2026-09-15 → 2026-10-13 (+28d) | 2026-09-21 → 2026-10-19 (+28d) |  |  |
| 1 | **Ducts Works** | 2026-09-15 → 2026-10-13 (+28d) | 2026-09-21 → 2026-10-19 (+28d) |  |  |
| PRO-TE-PO-100 | Issuance of Purchase Order for Ducts forTelecom Network | 2026-09-15 → 2026-10-13 (+28d) | 2026-09-21 → 2026-10-19 (+28d) |  | -11.75d → -34.75d |
| 3 | **Manholes Works** | 2026-09-15 → 2026-10-13 (+28d) | 2026-09-21 → 2026-10-19 (+28d) |  |  |
| PRO-TE-PO-110 | Issuance of Purchase Order for Manholes forTelecom Network | 2026-09-15 → 2026-10-13 (+28d) | 2026-09-21 → 2026-10-19 (+28d) |  | -29.75d → -52.75d |
| 2 | **CCTV System Wroks** | 2026-09-15 → 2026-10-13 (+28d) | 2026-09-21 → 2026-10-19 (+28d) |  |  |
| PRO-CTV-PO-100 | Issuance of Purchase Order for Civil and Finishes Works of CCTV Complete System | 2026-09-15 → 2026-10-13 (+28d) | 2026-09-21 → 2026-10-19 (+28d) |  | -15d → -38d |
| MF | **Manufacturing of Material** | 2026-09-22 → 2026-10-20 (+28d) | 2026-12-20 → 2027-01-17 (+28d) |  |  |
| 1 | **Ducts Works** | 2026-09-22 → 2026-10-20 (+28d) | 2026-11-20 → 2026-12-18 (+28d) |  |  |
| PRO-TE-MF-100 | Manufacturing of Ducts for Telecom Network | 2026-09-22 → 2026-10-20 (+28d) | 2026-11-20 → 2026-12-18 (+28d) |  | -14d → -42d |

| ID | Task | Start | Finish | Total float |
| --- | --- | --- | --- | --- |
| 3 | **Manholes Works** | 2026-09-22 → 2026-10-20 (+28d) | 2026-12-20 → 2027-01-17 (+28d) |  |
| PRO-TE-MF-110 | Manufacturing of Manholes for Telecom Network | 2026-09-22 → 2026-10-20 (+28d) | 2026-12-20 → 2027-01-17 (+28d) | -35d → -63d |
| 2 | **CCTV System Wroks** | 2026-09-22 → 2026-10-20 (+28d) | 2026-12-20 → 2027-01-17 (+28d) |  |
| PRO-CTV-MF-100 | Manufacturing of Civil and Finishes Works for CCTV Complete System | 2026-09-22 → 2026-10-20 (+28d) | 2026-12-20 → 2027-01-17 (+28d) | -18d → -46d |
| 1DL | **1st Material Delivery & Site Inspection** | 2026-11-21 → 2026-12-19 (+28d) | 2026-12-31 → 2027-01-28 (+28d) |  |
| 1 | **Ducts Works** | 2026-11-21 → 2026-12-19 (+28d) | 2026-11-26 → 2026-12-24 (+28d) |  |
| PRO-TE-1DL-100 | 1ST Material Delivery for Ducts of Telecom Network | 2026-11-21 → 2026-12-19 (+28d) | 2026-11-26 → 2026-12-24 (+28d) | -12d → -36d |
| 3 | **Manholes Works** | 2026-12-21 → 2027-01-18 (+28d) | 2026-12-27 → 2027-01-24 (+28d) |  |
| PRO-TE-1DL-110 | 1ST Material Delivery for Manholes of Telecom Network | 2026-12-21 → 2027-01-18 (+28d) | 2026-12-27 → 2027-01-24 (+28d) | -30d → -54d |
| 2 | **CCTV System Wroks** | 2026-12-21 → 2027-01-18 (+28d) | 2026-12-31 → 2027-01-28 (+28d) |  |
| PRO-CTV-1DL-100 | 1ST Material Delivery for Civil and Finishes Works of CCTV Complete System | 2026-12-21 → 2027-01-18 (+28d) | 2026-12-31 → 2027-01-28 (+28d) | -15d → -39d |
| DL | **Material Delivery & Site Inspection** | 2026-11-28 → 2026-12-26 (+28d) | 2027-01-02 → 2027-01-30 (+28d) |  |
| 1 | **Ducts Works** | 2026-11-28 → 2026-12-26 (+28d) | 2026-11-28 → 2026-12-26 (+28d) |  |
| PRO-R25-TE-DL-100 | Material Delivery & Site Inspection for Ducts of Telecom Network | 2026-11-28 → 2026-12-26 (+28d) | 2026-11-28 → 2026-12-26 (+28d) | -12d → -36d |
| 3 | **Manholes Works** | 2026-12-28 → 2027-01-25 (+28d) | 2026-12-28 → 2027-01-25 (+28d) |  |
| PRO-R25-TE-DL-110 | Material Delivery & Site Inspection of Manholes for Telecom Network | 2026-12-28 → 2027-01-25 (+28d) | 2026-12-28 → 2027-01-25 (+28d) | -30d → -54d |
| 2 | **CCTV System Wroks** | 2027-01-02 → 2027-01-30 (+28d) | 2027-01-02 → 2027-01-30 (+28d) |  |
| PRO-R25-CTV-DL-100 | Material Delivery & Site Inspection of for Civil and Finishes Works of CCTV Complete System | 2027-01-02 → 2027-01-30 (+28d) | 2027-01-02 → 2027-01-30 (+28d) | -15d → -39d |
| 1 | **Superstructure Works** |  | 2026-12-14 → 2027-01-11 (+28d) |  |
| 1 | **Issuance of Purchase Orders** |  | 2026-10-06 → 2026-11-02 (+27d) |  |
| SL11 | **Storage Tank (TSE)** | 2026-09-24 → 2026-10-21 (+27d) | 2026-10-06 → 2026-11-02 (+27d) |  |
| PRO-TSE-CV-PO-30 | Issuance of Purchase Order for Civil Works for Storage Tank (TSE) | 2026-09-24 → 2026-10-21 (+27d) | 2026-10-06 → 2026-11-02 (+27d) | -58.75d → -81.75d |
| SL12 | **Gaurd Room** | 2026-09-15 → 2026-10-13 (+28d) | 2026-09-28 → 2026-10-25 (+27d) |  |
| PRO-GR-CV-PO-40 | Issuance of Purchase Order for Civil Works for Gaurd Room | 2026-09-15 → 2026-10-13 (+28d) | 2026-09-28 → 2026-10-25 (+27d) | -46.25d → -69.25d |
| 2 | **Manufacturing of Material** |  | 2026-12-13 → 2027-01-10 (+28d) |  |
| SL | **Pump Stations** | 2026-09-15 → 2026-10-13 (+28d) | 2026-10-24 → 2026-11-21 (+28d) |  |
| PRO-SPS-CV-MF-10 | Manufacturing of Civil Works for Pump Stations | 2026-09-15 → 2026-10-13 (+28d) | 2026-10-24 → 2026-11-21 (+28d) | -56d → -84d |
| SL1 | **Lift Station** | 2026-09-15 → 2026-10-13 (+28d) | 2026-10-24 → 2026-11-21 (+28d) |  |
| PRO-LS-CV-MF-30 | Manufacturing of Civil Works for Civil Works for Lift Stations | 2026-09-15 → 2026-10-13 (+28d) | 2026-10-24 → 2026-11-21 (+28d) | 16d → -12d |
| SL11 | **Storage Tank (TSE)** | 2026-10-07 → 2026-11-03 (+27d) | 2026-11-15 → 2026-12-12 (+27d) |  |
| PRO-TSE-CV-MF-40 | Manufacturing of Civil Works for Civil Works for Storage Tank (TSE) | 2026-10-07 → 2026-11-03 (+27d) | 2026-11-15 → 2026-12-12 (+27d) | -70d → -97d |
| SL12 | **Gaurd Room** | 2026-09-28 → 2026-10-25 (+27d) | 2026-11-07 → 2026-12-04 (+27d) |  |
| PRO-GR-CV-MF-50 | Manufacturing of Civil Works for Civil Works for Gaurd Room | 2026-09-28 → 2026-10-25 (+27d) | 2026-11-07 → 2026-12-04 (+27d) | -55.5d → -82.5d |
| SL1211 | **Softscape and Planting Works** | 2026-09-15 → 2026-10-13 (+28d) | 2026-12-13 → 2027-01-10 (+28d) |  |
| PRO-FE-CV-MF-70 | Manufacturing of Civil Works for Softscape and Planting Works | 2026-09-15 → 2026-10-13 (+28d) | 2026-12-13 → 2027-01-10 (+28d) | -22d → -50d |
| 3 | **1st Material Delivery & Site Inspection** |  | 2026-11-21 → 2026-12-17 (+26d) |  |
| SL | **Pump Stations** | 2026-11-03 → 2026-11-30 (+27d) | 2026-11-04 → 2026-12-01 (+27d) |  |
| PRO-SPS-CV-1DL-10 | 1ST Material Delivery for Civil Works for Pump Stations | 2026-11-03 → 2026-11-30 (+27d) | 2026-11-04 → 2026-12-01 (+27d) | -55d → -78d |
| SL1 | **Lift Station** | 2026-11-05 → 2026-12-02 (+27d) | 2026-11-05 → 2026-12-02 (+27d) |  |
| PRO-LS-CV-1DL-40 | 1ST Material Delivery for Civil Works for Civil Works for Lift Stations | 2026-11-05 → 2026-12-02 (+27d) | 2026-11-05 → 2026-12-02 (+27d) | 4d → -19d |
| SL11 | **Storage Tank (TSE)** | 2026-11-16 → 2026-12-13 (+27d) | 2026-11-16 → 2026-12-13 (+27d) |  |
| PRO-TSE-CV-1DL-50 | 1ST Material Delivery for Civil Works for Civil Works for Storage Tank (TSE) | 2026-11-16 → 2026-12-13 (+27d) | 2026-11-16 → 2026-12-13 (+27d) | -59d → -82d |
| SL12 | **Gaurd Room** | 2026-11-07 → 2026-12-05 (+28d) | 2026-11-21 → 2026-12-17 (+26d) |  |
| PRO-GR-CV-1DL-60 | 1ST Material Delivery for Civil Works for Civil Works for Gaurd Room | 2026-11-07 → 2026-12-05 (+28d) | 2026-11-21 → 2026-12-17 (+26d) | -46.5d → -70d |
| 4 | **Material Delivery & Site Inspection** |  | 2026-12-14 → 2027-01-11 (+28d) |  |
| SL | **Pump Stations** |  | 2026-11-05 → 2026-12-02 (+27d) |  |
| PRO-SPS-CV-DL-10 | Material Delivery & Site Inspection for Civil Works for Pump Stations |  | 2026-11-05 → 2026-12-02 (+27d) | -55d → -78d |
| SL1 | **Lift Station** | 2026-11-07 → 2026-12-03 (+26d) | 2026-11-07 → 2026-12-03 (+26d) |  |
| PRO-LS-CV-DL-50 | Material Delivery & Site Inspection for Civil Works for Lift Stations | 2026-11-07 → 2026-12-03 (+26d) | 2026-11-07 → 2026-12-03 (+26d) | 4d → -19d |
| SL11 | **Storage Tank (TSE)** | 2026-11-16 → 2026-12-13 (+27d) | 2026-11-16 → 2026-12-13 (+27d) |  |
| PRO-TSE-CV-DL-60 | Material Delivery & Site Inspection for Civil Works for Storage Tank (TSE) | 2026-11-16 → 2026-12-13 (+27d) | 2026-11-16 → 2026-12-13 (+27d) | -58d → -81d |
| SL12 | **Gaurd Room** | 2026-11-21 → 2026-12-19 (+28d) | 2026-11-21 → 2026-12-19 (+28d) |  |
| PRO-GR-CV-DL-70 | Material Delivery & Site Inspection for Civil Works for Gaurd Room | 2026-11-21 → 2026-12-19 (+28d) | 2026-11-21 → 2026-12-19 (+28d) | -46.5d → -70d |
| SL121 | **Fence** |  | 2026-09-15 → 2026-10-13 (+28d) |  |
| PRO-FE-CV-DL-80 | Material Delivery & Site Inspection for Civil Works for Fence |  | 2026-09-15 → 2026-10-13 (+28d) | -33.5d → -48d |
| SL1211 | **Softscape and Planting Works** | 2026-12-14 → 2027-01-11 (+28d) | 2026-12-14 → 2027-01-11 (+28d) |  |
| PRO-FE-CV-DL-90 | Material Delivery & Site Inspection for Softscape and Planting Works | 2026-12-14 → 2027-01-11 (+28d) | 2026-12-14 → 2027-01-11 (+28d) | -19d → -43d |
| LL | **Long Lead Time Items** | 2026-09-15 → 2026-07-22 (-55d) | 2027-03-28 → 2027-04-24 (+27d) |  |
| 2 | **Infrastructure Networks** | 2026-09-15 → 2026-10-13 (+28d) | 2027-01-25 → 2027-02-24 (+30d) |  |
| 2 | **CCTV System Wroks of Telecom Network** | 2026-09-15 → 2026-10-13 (+28d) | 2027-01-25 → 2027-02-24 (+30d) |  |
| 3 | **Issuance of Purchase Orders** | 2026-09-15 → 2026-10-13 (+28d) | 2026-10-08 → 2026-11-04 (+27d) |  |
| PRO-CTV-LL-PO-10 | Issuance of Purchase Order for Low Current Works of CCTV Complete System with All Accessories | 2026-09-15 → 2026-10-13 (+28d) | 2026-10-08 → 2026-11-04 (+27d) | -29d → -52d |
| 1 | **Manufacturing of Material** | 2026-10-09 → 2026-11-05 (+27d) | 2027-01-06 → 2027-02-02 (+27d) |  |
| PRO-CTV-LL-MF-10 | Manufacturing of Low Current Works for CCTV Complete System with All Accessories | 2026-10-09 → 2026-11-05 (+27d) | 2027-01-06 → 2027-02-02 (+27d) | -35d → -62d |
| 2 | **Material Shipping/Custom Clearance/Delivery** | 2027-01-07 → 2027-02-02 (+26d) | 2027-01-24 → 2027-02-24 (+31d) |  |
| PRO-CTV-LL-SH/DL-10 | Material Delivery for Low Current Works of CCTV Complete System with All Accessories | 2027-01-07 → 2027-02-02 (+26d) | 2027-01-24 → 2027-02-24 (+31d) | -30d → -52.88d |
| 4 | **Material Site Inspection** | 2027-01-25 → 2027-02-24 (+30d) | 2027-01-25 → 2027-02-24 (+30d) |  |
| PRO-CTV-LL-MSI-10 | Material Site Inspection for Low Current Works of CCTV Complete System with All Accessories | 2027-01-25 → 2027-02-24 (+30d) | 2027-01-25 → 2027-02-24 (+30d) | -30d → -52.88d |
| 1 | **Superstructure Works** | 2026-09-26 → 2026-07-22 (-66d) | 2027-03-28 → 2027-04-24 (+27d) |  |
| SL | **Pump Stations** | 2026-09-26 → 2026-07-22 (-66d) | 2027-03-24 → 2027-03-16 (-8d) |  |

| ID | Task | Start | Finish | Complete | Total float |
| --- | --- | --- | --- | --- | --- |
| 1 | **Issuance of Purchase Orders** | 2026-09-26 → 2026-07-22 (-66d) | 2026-10-29 → 2026-07-22 (-99d) |  |  |
| PRO-SPS-LL-PO-10 | Issuance of Purchase Order for Electromechanical Works for Pump Stations | 2026-09-26 → 2026-07-22 A (-66d) | 2026-10-29 → 2026-07-22 A (-99d) | 0% → 100% | -39.75d → none |
| 2 | **Manufacturing of Material** | 2026-10-30 → 2026-08-26 (-65d) | 2026-12-28 → 2026-12-20 (-8d) |  |  |
| PRO-SPS-LL-MF-10 | Manufacturing of Electromechanical Works for Pump Stations | 2026-10-30 → 2026-08-26 A (-65d) | 2026-12-28 → 2026-12-20 (-8d) | 0% → 35% | -47d → -39d |
| 3 | **Material Shipping/Custom Clearance/Delivery** | 2026-12-29 → 2026-12-21 (-8d) | 2027-02-01 → 2027-01-24 (-8d) |  |  |
| PRO-SPS-LL-SH/DL-10 | Material Delivery for Electromechanical Works for Pump Stations | 2026-12-29 → 2026-12-21 (-8d) | 2027-02-01 → 2027-01-24 (-8d) |  | -40d → -33d |
| 4 | **Material Site Inspection** | 2027-02-02 → 2027-01-25 (-8d) | 2027-03-24 → 2027-03-16 (-8d) |  |  |
| PRO-SPS-LL-MSI-10 | Material Site Inspection for Electromechanical Works for Pump Stations | 2027-02-02 → 2027-01-25 (-8d) | 2027-03-24 → 2027-03-16 (-8d) |  | -40d → -33d |
| SL1 | **Lift Stations** | 2026-09-26 → 2026-07-22 (-66d) | 2027-03-28 → 2027-03-20 (-8d) |  |  |
| 1 | **Issuance of Purchase Orders** | 2026-09-26 → 2026-07-22 (-66d) | 2026-10-29 → 2026-07-22 (-99d) |  |  |
| PRO-LS-LL-PO-20 | Issuance of Purchase Order for Electromechanical Works for Lift Stations | 2026-09-26 → 2026-07-22 A (-66d) | 2026-10-29 → 2026-07-22 A (-99d) | 0% → 100% | -52.75d → none |
| 2 | **Manufacturing of Material** | 2026-10-30 → 2026-08-01 (-90d) | 2026-12-28 → 2026-12-20 (-8d) |  |  |
| PRO-LS-LL-MF-20 | Manufacturing of Electromechanical Works for Lift Stations | 2026-10-30 → 2026-08-01 A (-90d) | 2026-12-28 → 2026-12-20 (-8d) |  | -62d → -54d |
| 3 | **Material Shipping/Custom Clearance/Delivery** | 2026-12-29 → 2026-12-21 (-8d) | 2027-02-01 → 2027-01-24 (-8d) |  |  |
| PRO-LS-LL-SH/DL-20 | Material Delivery for Electromechanical Works for Lift Stations | 2026-12-29 → 2026-12-21 (-8d) | 2027-02-01 → 2027-01-24 (-8d) |  | -53d → -46d |
| 4 | **Material Site Inspection** | 2027-02-02 → 2027-01-25 (-8d) | 2027-03-28 → 2027-03-20 (-8d) |  |  |
| PRO-LS-LL-MSI-20 | Material Site Inspection for Electromechanical Works for Lift Stations | 2027-02-02 → 2027-01-25 (-8d) | 2027-03-28 → 2027-03-20 (-8d) |  | -53d → -46d |
| SL2 | **Storage Tank (TSE)** | 2026-09-26 → 2026-10-22 (+26d) | 2027-03-28 → 2027-04-24 (+27d) |  |  |
| 1 | **Issuance of Purchase Orders** | 2026-09-26 → 2026-10-22 (+26d) | 2026-10-29 → 2026-11-25 (+27d) |  |  |
| PRO-TSE-LL-PO-30 | Issuance of Purchase Order for Electromechanical Works for Storage Tank (TSE) | 2026-09-26 → 2026-10-22 (+26d) | 2026-10-29 → 2026-11-25 (+27d) |  | -52.75d → -75.75d |
| 2 | **Manufacturing of Material** | 2026-10-30 → 2026-11-26 (+27d) | 2026-12-28 → 2027-01-24 (+27d) |  |  |
| PRO-TSE-LL-MF-30 | Manufacturing of Electromechanical Works for Storage Tank (TSE) | 2026-10-30 → 2026-11-26 (+27d) | 2026-12-28 → 2027-01-24 (+27d) |  | -62d → -89d |
| 3 | **Material Shipping/Custom Clearance/Delivery** | 2026-12-29 → 2027-01-25 (+27d) | 2027-02-01 → 2027-03-07 (+34d) |  |  |
| PRO-TSE-LL-SH/DL-30 | Material Delivery for Electromechanical Works for Storage Tank (TSE) | 2026-12-29 → 2027-01-25 (+27d) | 2027-02-01 → 2027-03-07 (+34d) |  | -53d → -76d |
| 4 | **Material Site Inspection** | 2027-02-02 → 2027-03-07 (+33d) | 2027-03-28 → 2027-04-24 (+27d) |  |  |
| PRO-TSE-LL-MSI-30 | Material Site Inspection for Electromechanical Works for Storage Tank (TSE) | 2027-02-02 → 2027-03-07 (+33d) | 2027-03-28 → 2027-04-24 (+27d) |  | -53d → -76d |
| CON | **Construction Works** |  | 2027-05-12 → 2027-05-30 (+18d) |  |  |
| INF | **Infrastructure Networks** |  | 2027-05-12 → 2027-05-30 (+18d) |  |  |
| EW | **Earthworks** |  | 2026-10-04 → 2026-10-31 (+27d) |  |  |
| EW | **Earthworks** |  | 2026-10-04 → 2026-10-31 (+27d) |  |  |
| CO-EW-110_R | Embankments Works Upto Design Level for Earthworks(Remaining) |  | 2026-10-04 → 2026-10-31 (+27d) | 40% → 84% | -55d → -78d |
| CO-EW-200_R | Excavation Works Upto Design Level for Earthworks-P1(Remaining) |  | 2026-09-27 → 2026-10-24 (+27d) | 65% → 84% | -55d → -78d |
| CO-EW-210_R | Excavation Works Upto Design Level for Earthworks-P2(Remaining) |  | 2026-09-27 → 2026-10-24 (+27d) | 70% → 80% | -55d → -78d |
| CO-EW-220_R | Excavation Works Upto Design Level for Earthworks-P3(Remaining) |  | 2026-09-29 → 2026-10-26 (+27d) | 60% → 80% | -55d → -78d |
| SD | **Storm Drainage Network** |  | 2027-01-24 → 2027-01-31 (+7d) |  |  |
| MH25-MH12 | **FROM MH-25:MH-12** |  | 2026-12-23 → 2026-12-22 (-1d) |  |  |
| ML | **Main Line Sections** |  | 2026-10-13 → 2026-10-24 (+11d) |  |  |
| CO-SD-ML-100 | Trench Excavation and Bedding Works for Main Lines of Storm Drainage Network |  | 2026-10-01 → 2026-10-15 (+14d) |  | -52d → -64d |
| CO-SD-ML-120 | Pipes Laying Works for Main Lines of Storm Drainage Network |  | 2026-10-07 → 2026-10-18 (+11d) |  | -53d → -62d |
| CO-SD-ML-130 | Trench Backfilling and Compaction Works for Main Lines of Storm Drainage Network |  | 2026-10-13 → 2026-10-24 (+11d) |  | -53d → -62d |
| MH | **Manholes** |  | 2026-11-30 → 2026-11-29 (-1d) |  |  |
| CO-SD-MH-180 | Trench Excavation and Bedding Works for Manholes of Storm Drainage Network |  | 2026-11-09 → 2026-11-08 (-1d) |  | -71.2d → -71d |
| CO-SD-MH-190 | Install RC Footing Works for Manholes of Storm Drainage Network |  | 2026-11-17 → 2026-11-16 (-1d) |  | -71.2d → -71d |
| CO-SD-MH-200 | Install RC Wall Rings & Slab Works for Manholes of Storm Drainage Network |  | 2026-11-22 → 2026-11-21 (-1d) |  | -71.2d → -71d |
| CO-SD-MH-220 | Backfilling Works for Manholes of Storm Drainage Network |  | 2026-11-30 → 2026-11-29 (-1d) |  | -71.2d → -71d |
| CB | **Catch Basin Sections** |  | 2026-12-23 → 2026-12-22 (-1d) |  |  |
| CO-SD-CB-140 | Trench Excavation and Bedding Works for Catch Basins of Storm Drainage Network |  | 2026-11-21 → 2026-11-19 (-2d) |  | -63.2d → -63d |
| CO-SD-CB-150 | Installation and Pipes Laying Connection Works for Catch Basins of Storm Drainage Network |  | 2026-12-12 → 2026-12-10 (-2d) |  | -71.2d → -71d |
| CO-SD-CB-170 | Trench Backfilling and Compaction Works for Catch Basins of Storm Drainage Network |  | 2026-12-23 → 2026-12-22 (-1d) |  | -71.2d → -71d |
| MH25-MH121 | **FROM MH-12:MH-01** | 2026-10-05 → 2026-11-01 (+27d) | 2027-01-24 → 2027-01-31 (+7d) |  |  |
| ML | **Main Line Sections** | 2026-10-05 → 2026-11-01 (+27d) | 2026-11-29 → 2026-12-26 (+27d) |  |  |
| CO-SD-ML-140 | Trench Excavation and Bedding Works for Main Lines of Storm Drainage Network | 2026-10-05 → 2026-11-01 (+27d) | 2026-10-20 → 2026-11-16 (+27d) |  | -54d → -77d |
| CO-SD-ML-150 | Pipes Laying Works for Main Lines of Storm Drainage Network | 2026-10-21 → 2026-11-17 (+27d) | 2026-11-05 → 2026-12-02 (+27d) |  | -54d → -77d |
| CO-SD-ML-160 | Trench Backfilling and Compaction Works for Main Lines of Storm Drainage Network | 2026-11-07 → 2026-12-03 (+26d) | 2026-11-29 → 2026-12-26 (+27d) |  | -42d → -65d |
| MH | **Manholes** | 2026-11-09 → 2026-12-03 (+24d) | 2026-12-16 → 2027-01-09 (+24d) |  |  |
| CO-SD-MH-230 | Trench Excavation and Bedding Works for Manholes of Storm Drainage Network | 2026-11-09 → 2026-12-03 (+24d) | 2026-11-19 → 2026-12-13 (+24d) |  | -56.2d → -77d |
| CO-SD-MH-240 | Install RC Footing Works for Manholes of Storm Drainage Network | 2026-11-19 → 2026-12-14 (+25d) | 2026-11-28 → 2026-12-21 (+23d) |  | -56.2d → -77d |
| CO-SD-MH-250 | Install RC Wall Rings & Slab Works for Manholes of Storm Drainage Network | 2026-11-28 → 2026-12-22 (+24d) | 2026-12-06 → 2026-12-29 (+23d) |  | -56.2d → -77d |
| CO-SD-MH-260 | Backfilling Works for Manholes of Storm Drainage Network | 2026-12-06 → 2026-12-30 (+24d) | 2026-12-16 → 2027-01-09 (+24d) |  | -56.2d → -77d |
| CB | **Catch Basin Sections** |  | 2027-01-24 → 2027-01-31 (+7d) |  |  |
| CO-SD-CB-180 | Trench Excavation and Bedding Works for Catch Basins of Storm Drainage Network |  | 2027-01-03 → 2027-01-02 (-1d) |  | -71.2d → -71d |
| CO-SD-CB-190 | Installation and Pipes Laying Connection Works for Catch Basins of Storm Drainage Network | 2027-01-03 → 2027-01-11 (+8d) | 2027-01-13 → 2027-01-20 (+7d) |  | -71.2d → -78d |
| CO-SD-CB-200 | Trench Backfilling and Compaction Works for Catch Basins of Storm Drainage Network | 2027-01-13 → 2027-01-21 (+8d) | 2027-01-24 → 2027-01-31 (+7d) |  | -71.2d → -78d |
| SW | **Sewage Network** | 2026-10-05 → 2026-11-01 (+27d) | 2026-12-14 → 2027-01-10 (+27d) |  |  |
| 2 | **FROM MH-18:MH-10** | 2026-10-05 → 2026-11-01 (+27d) | 2026-12-05 → 2026-12-31 (+26d) |  |  |
| ML | **Main Line Sections** | 2026-10-05 → 2026-11-01 (+27d) | 2026-11-24 → 2026-12-21 (+27d) |  |  |
| CO-SW-ML-100 | Trench Excavation and Bedding Works for Main Lines of Sewage Network | 2026-10-05 → 2026-11-01 (+27d) | 2026-10-18 → 2026-11-14 (+27d) |  | -55d → -78d |
| CO-SW-ML-120 | Pipes Laying Works for Main Lines of Sewage Network | 2026-10-19 → 2026-11-15 (+27d) | 2026-11-01 → 2026-11-28 (+27d) |  | -55d → -78d |
| CO-SW-ML-130 | Trench Backfilling and Compaction Works for Main Lines of Sewage Network | 2026-11-02 → 2026-11-29 (+27d) | 2026-11-24 → 2026-12-21 (+27d) |  | -52d → -75d |
| 1 | **Manholes** | 2026-11-02 → 2026-11-29 (+27d) | 2026-12-05 → 2026-12-31 (+26d) |  |  |

| ID | Task | Start | Finish | Total float |
| --- | --- | --- | --- | --- |
| CO-SW-MH-160 | Excavation Works for Main Line Manholes of Sewage Network | 2026-11-02 → 2026-11-29 (+27d) | 2026-11-09 → 2026-12-06 (+27d) | -55d → -78d |
| CO-SW-MH-170 | Installation RC Footing Works for Main Line Manholes of Sewage Network | 2026-11-10 → 2026-12-07 (+27d) | 2026-11-17 → 2026-12-14 (+27d) | -54d → -77d |
| CO-SW-MH-180 | Install Grp Liner Wall Works for Main Line Manholes of Sewage Network | 2026-11-18 → 2026-12-15 (+27d) | 2026-11-25 → 2026-12-22 (+27d) | -54d → -77d |
| CO-SW-MH-190 | Pouring Grp Liner Wall Works for Main Line Manholes of Sewage Network | 2026-11-26 → 2026-12-23 (+27d) | 2026-11-30 → 2026-12-27 (+27d) | -51d → -74d |
| CO-SW-MH-200 | Backfilling Works for Main Line Manholes of Sewage Network | 2026-12-01 → 2026-12-28 (+27d) | 2026-12-05 → 2026-12-31 (+26d) | -51d → -74d |
| 1 | **FROM MH-10:MH-01** | 2026-10-19 → 2026-11-15 (+27d) | 2026-12-14 → 2027-01-10 (+27d) |  |
| ML | **Main Line Sections** | 2026-10-19 → 2026-11-15 (+27d) | 2026-11-18 → 2026-12-15 (+27d) |  |
| CO-SW-ML-140 | Trench Excavation and Bedding Works for Main Lines of Sewage Network | 2026-10-19 → 2026-11-15 (+27d) | 2026-10-25 → 2026-11-21 (+27d) | -55d → -78d |
| CO-SW-ML-150 | Pipes Laying Works for Main Lines of Sewage Network | 2026-10-26 → 2026-11-22 (+27d) | 2026-11-02 → 2026-11-29 (+27d) | -55d → -78d |
| CO-SW-ML-160 | Trench Backfilling and Compaction Works for Main Lines of Sewage Network | 2026-11-05 → 2026-12-02 (+27d) | 2026-11-18 → 2026-12-15 (+27d) | -55d → -78d |
| 1 | **Manholes** | 2026-11-10 → 2026-12-07 (+27d) | 2026-12-14 → 2027-01-10 (+27d) |  |
| CO-SW-MH-210 | Excavation Works for Main Line Manholes of Sewage Network | 2026-11-10 → 2026-12-07 (+27d) | 2026-11-18 → 2026-12-15 (+27d) | -55d → -78d |
| CO-SW-MH-220 | Installation RC Footing Works for Main Line Manholes of Sewage Network | 2026-11-19 → 2026-12-16 (+27d) | 2026-11-26 → 2026-12-23 (+27d) | -55d → -78d |
| CO-SW-MH-230 | Install Grp Liner Wall Works for Main Line Manholes of Sewage Network | 2026-11-28 → 2026-12-24 (+26d) | 2026-12-05 → 2026-12-31 (+26d) | -55d → -78d |
| CO-SW-MH-240 | Pouring Grp Liner Wall Works for Main Line Manholes of Sewage Network | 2026-12-06 → 2027-01-02 (+27d) | 2026-12-09 → 2027-01-05 (+27d) | -55d → -78d |
| CO-SW-MH-250 | Backfilling Works for Main Line Manholes of Sewage Network | 2026-12-10 → 2027-01-06 (+27d) | 2026-12-14 → 2027-01-10 (+27d) | -55d → -78d |
| PW | **Potable Water Network** | 2026-12-30 → 2027-01-11 (+12d) | 2027-03-22 → 2027-04-01 (+10d) |  |
| ML | **Main Line Sections** | 2026-12-30 → 2027-01-11 (+12d) | 2027-01-27 → 2027-02-07 (+11d) |  |
| CO-PW-ML-100 | Trench Excavation and Bedding Works for Main Lines of Potable Water Network | 2026-12-30 → 2027-01-11 (+12d) | 2027-01-09 → 2027-01-19 (+10d) | -68d → -77.5d |
| CO-PW-ML-110 | Pipes Laying and accessories for Main Lines of Potable Water Network | 2027-01-09 → 2027-01-20 (+11d) | 2027-01-18 → 2027-01-28 (+10d) | -68d → -77.5d |
| CO-PW-ML-130 | Trench Backfilling and Compaction Works for Main Lines of Potable Water Network | 2027-01-18 → 2027-01-30 (+12d) | 2027-01-27 → 2027-02-07 (+11d) | -66d → -75.5d |
| VC | **Valve Chamber** | 2027-01-27 → 2027-02-08 (+12d) | 2027-02-17 → 2027-03-03 (+14d) |  |
| CO-PW-VC-170 | Excavation Works for Main Line Valves and Valve Chambers of Potable Water Network | 2027-01-27 → 2027-02-08 (+12d) | 2027-01-30 → 2027-02-10 (+11d) | -66d → -75.5d |
| CO-PW-VC180 | Installation Works for Valve Chambers of Potable Water Network | 2027-01-30 → 2027-02-10 (+11d) | 2027-02-03 → 2027-02-16 (+13d) | -66d → -75.5d |
| CO-PW-VC-190 | Installation Works for Valves of Potable Water Network | 2027-02-03 → 2027-02-17 (+14d) | 2027-02-13 → 2027-02-27 (+14d) | -66d → -75.5d |
| CO-PW-VC-220 | Backfilling Works for Main Line Valves and Valve Chambers of Potable Water Network | 2027-02-13 → 2027-02-28 (+15d) | 2027-02-17 → 2027-03-03 (+14d) | -66d → -75.5d |
| FH | **Fire Hydrant** | 2027-02-17 → 2027-03-04 (+15d) | 2027-03-22 → 2027-04-01 (+10d) |  |
| CO-PW-FH-140 | Excavation Works for Fire Hydrants of Potable Water Network | 2027-02-17 → 2027-03-04 (+15d) | 2027-02-28 → 2027-03-16 (+16d) | -66d → -75.5d |
| CO-PW-FH-150 | Installation Works for Fire Hydrant of Potable Water Network | 2027-02-28 → 2027-03-17 (+17d) | 2027-03-14 → 2027-03-24 (+10d) | -66d → -75.5d |
| CO-PW-FH-160 | Trench Backfilling and Compaction Works for Fire Hydrants of Potable Water Network | 2027-03-14 → 2027-03-25 (+11d) | 2027-03-22 → 2027-04-01 (+10d) | -66d → -75.5d |
| IR | **Irrigation Network** | 2027-01-09 → 2027-01-20 (+11d) | 2027-03-18 → 2027-03-29 (+11d) |  |
| ML | **Main Line Pipes** | 2027-01-09 → 2027-01-20 (+11d) | 2027-03-18 → 2027-03-29 (+11d) |  |
| CO-IR-ML-100 | Trench Excavation and Bedding Works for Main Lines of Irrigation Network | 2027-01-09 → 2027-01-20 (+11d) | 2027-01-20 → 2027-01-31 (+11d) | -61.5d → -71d |
| CO-IR-ML-110 | Pipes Laying Works for Main Lines of Irrigation Network | 2027-01-20 → 2027-02-01 (+12d) | 2027-01-31 → 2027-02-13 (+13d) | -61.5d → -71d |
| CO-IR-ML-120 | Installation Works for Main Line Valves of Irrigation Network | 2027-02-01 → 2027-02-13 (+12d) | 2027-02-11 → 2027-02-27 (+16d) | -61.5d → -71d |
| CO-IR-ML-130 | Trench Backfilling and Compaction Works for Main Lines of Irrigation Network | 2027-02-17 → 2027-03-04 (+15d) | 2027-03-03 → 2027-03-18 (+15d) | -65d → -74.5d |
| CO-IR-ML-140 | Installation Works for Bulbblers And Sprinklers of Irrigation Network | 2027-03-03 → 2027-03-20 (+17d) | 2027-03-18 → 2027-03-29 (+11d) | -58d → -67.5d |
| TSE | **Treated Sewage Effluent (Tse)** | 2027-01-09 → 2027-01-20 (+11d) | 2027-03-18 → 2027-03-29 (+11d) |  |
| ML | **Main Line Pipes** | 2027-01-09 → 2027-01-20 (+11d) | 2027-03-18 → 2027-03-29 (+11d) |  |
| CO-TSE-ML-150 | Trench Excavation and Bedding Works for Main Lines of Treated Sewage Effluent (Tse) | 2027-01-09 → 2027-01-20 (+11d) | 2027-01-19 → 2027-01-30 (+11d) | -60d → -69.5d |
| CO-TSE-ML-160 | Pipes Laying Works for Main Lines of Treated Sewage Effluent (Tse) | 2027-01-20 → 2027-02-01 (+12d) | 2027-01-31 → 2027-02-11 (+11d) | -60d → -69.5d |
| CO-TSE-ML-170 | Installation Works for Main Line Valves of Treated Sewage Effluent (Tse) | 2027-02-01 → 2027-02-13 (+12d) | 2027-02-10 → 2027-02-24 (+14d) | -60.5d → -70d |
| CO-TSE-ML-180 | Trench Backfilling and Compaction Works for Treated Sewage Effluent (Tse) | 2027-02-17 → 2027-03-04 (+15d) | 2027-03-03 → 2027-03-18 (+15d) | -65d → -74.5d |
| CO-TSE-ML-190 | Installation Works for Valve and Washout Chambers of Treated Sewage Effluent (Tse) | 2027-03-03 → 2027-03-20 (+17d) | 2027-03-18 → 2027-03-29 (+11d) | -46d → -55.5d |
| MV | **Medium Voltage Network** | 2027-01-18 → 2027-01-30 (+12d) | 2027-03-20 → 2027-03-30 (+10d) |  |
| CW | **Cabling Works** | 2027-01-18 → 2027-01-30 (+12d) | 2027-03-20 → 2027-03-30 (+10d) |  |
| CO-MV-ML-250 | Trench Excavation and Bedding Works for Medium Voltage Network | 2027-01-18 → 2027-01-30 (+12d) | 2027-01-31 → 2027-02-11 (+11d) | -68d → -77.5d |
| CO-MV-ML-260 | Cable Laying Works for Medium Voltage Network | 2027-01-31 → 2027-02-13 (+13d) | 2027-02-22 → 2027-03-08 (+14d) | -68d → -77.5d |
| CO-MV-ML-270 | Trench Backfilling and Compaction Works for Medium Voltage Network | 2027-02-22 → 2027-03-13 (+19d) | 2027-03-20 → 2027-03-30 (+10d) | -68d → -77.5d |
| SL | **Street Lighting Network** | 2027-01-18 → 2027-01-30 (+12d) | 2027-04-17 → 2027-04-27 (+10d) |  |
| LP | **Lighting Poles Works** | 2027-01-18 → 2027-01-30 (+12d) | 2027-03-06 → 2027-03-21 (+15d) |  |
| CO-SL-LP-300 | Foundation Excavation Works for Lighting Poles of Street Lighting Network | 2027-01-18 → 2027-01-30 (+12d) | 2027-01-27 → 2027-02-07 (+11d) | -65d → -74.5d |
| CO-SL-LP-310 | Installation Works for Lighting Poles Foundation of Street Lighting Network | 2027-01-27 → 2027-02-08 (+12d) | 2027-02-06 → 2027-02-20 (+14d) | -65d → -74.5d |
| CO-SL-LP-320 | Installation Works for Lighting Poles of Street Lighting Network | 2027-02-06 → 2027-02-20 (+14d) | 2027-02-18 → 2027-03-06 (+16d) | -65d → -74.5d |
| CO-SL-LP-210 | Backfilling Works for Lighting Poles of Street Lighting Network | 2027-02-20 → 2027-03-06 (+14d) | 2027-03-06 → 2027-03-21 (+15d) | -65d → -74.5d |
| CW | **Cabling Works** | 2027-01-27 → 2027-02-08 (+12d) | 2027-03-03 → 2027-03-18 (+15d) |  |
| CO-SL-CL-250 | Trench Excavation and Bedding Works for Street Lighting Network | 2027-01-27 → 2027-02-08 (+12d) | 2027-02-04 → 2027-02-18 (+14d) | -62d → -71.5d |
| CO-SL-CL-260 | Cable Laying Works for Street Lighting Network | 2027-02-04 → 2027-02-18 (+14d) | 2027-02-14 → 2027-03-01 (+15d) | -62d → -71.5d |
| CO-SL-CL-270 | Trench Backfilling and Compaction Works for Street Lighting Network | 2027-02-20 → 2027-03-06 (+14d) | 2027-03-03 → 2027-03-18 (+15d) | -65d → -74.5d |
| DPB | **Distrubution Panel Boards** | 2027-03-20 → 2027-03-31 (+11d) | 2027-04-17 → 2027-04-27 (+10d) |  |
| CO-SL-DB-250 | Foundation Excavation Works For Panel Boards of Street Lighting Network | 2027-03-20 → 2027-03-31 (+11d) | 2027-03-27 → 2027-04-06 (+10d) | -66.5d → -76d |
| CO-SL-DB-260 | Installation Works for Panel Board Concrete Foundations of Street Lighting Network | 2027-03-27 → 2027-04-07 (+11d) | 2027-04-03 → 2027-04-13 (+10d) | -66.5d → -76d |
| CO-SL-DB-270 | Installation Works for Lighting Panel Boards of Street Lighting Network | 2027-04-03 → 2027-04-14 (+11d) | 2027-04-10 → 2027-04-20 (+10d) | -66.5d → -76d |
| CO-SL-DB-220 | A wall of concrete blocks to install the KWH meter of Street Lighting Network | 2027-04-10 → 2027-04-21 (+11d) | 2027-04-17 → 2027-04-27 (+10d) | -59.5d → -69d |
| TE | **Telecom Network** | 2027-01-31 → 2027-02-13 (+13d) | 2027-03-31 → 2027-04-11 (+11d) |  |
| PD | **Ducts Works** | 2027-01-31 → 2027-02-13 (+13d) | 2027-03-13 → 2027-03-23 (+10d) |  |
| CO-TE-DW-100 | Trench Excavation and Bedding Works for Ducts of Telecom Network | 2027-01-31 → 2027-02-13 (+13d) | 2027-02-04 → 2027-02-18 (+14d) | -67.5d → -77d |
| CO-TE-DW-110 | Pipes Laying Works for Ducts of Telecom Network | 2027-02-04 → 2027-02-18 (+14d) | 2027-02-09 → 2027-02-24 (+15d) | -67.5d → -77d |
| CO-TE-DW-130 | Trench Backfilling and Compaction Works for Ducts of Telecom Network | 2027-02-10 → 2027-02-24 (+14d) | 2027-02-22 → 2027-03-08 (+14d) | -66.5d → -76d |
| CO-TE-DW-120 | Pouring Road Crossing Concrete Encasement | 2027-02-22 → 2027-03-13 (+19d) | 2027-03-13 → 2027-03-23 (+10d) | -66.5d → -76d |

| ID | Task | Start | Finish | Total float |
| --- | --- | --- | --- | --- |
| MH | **Manholes Works** | 2027-02-10 → 2027-02-24 (+14d) | 2027-03-14 → 2027-03-24 (+10d) |  |
| CO-TE-MH-140 | Excavation Works for Manholes of Telecom Network | 2027-02-10 → 2027-02-24 (+14d) | 2027-02-17 → 2027-03-03 (+14d) | -67.5d → -77d |
| CO-TE-MH-150 | Installation Works for Manholes of Telecom Network | 2027-02-17 → 2027-03-04 (+15d) | 2027-02-28 → 2027-03-16 (+16d) | -67.5d → -77d |
| CO-TE-MH-160 | Backfilling Works for Manholes of Telecom Network | 2027-02-28 → 2027-03-17 (+17d) | 2027-03-14 → 2027-03-24 (+10d) | -67.5d → -77d |
| DD | **CCTV System Wroks** | 2027-03-14 → 2027-03-25 (+11d) | 2027-03-31 → 2027-04-11 (+11d) |  |
| CO-TE-CTV-100 | Digging and Pulling Trenches PVC ducts , Backfilling, Excavations, of Power Cable | 2027-03-14 → 2027-03-25 (+11d) | 2027-03-20 → 2027-03-30 (+10d) | -67.5d → -77d |
| CO-TE-CTV-110 | Installation of Network Cable Cat.6A from Network switch to CCTV Camera and ACS Device | 2027-03-20 → 2027-03-31 (+11d) | 2027-03-25 → 2027-04-05 (+11d) | -67.5d → -77d |
| CO-TE-CTV-130 | Installation of Access Control System | 2027-03-25 → 2027-04-06 (+12d) | 2027-03-31 → 2027-04-11 (+11d) | -67.5d → -77d |
| RD | **Road Works** | 2027-02-25 → 2027-03-15 (+18d) | 2027-05-01 → 2027-05-12 (+11d) |  |
| 3 | **ST+1000:ST+1531** | 2027-02-25 → 2027-03-15 (+18d) | 2027-04-04 → 2027-04-15 (+11d) |  |
| RD | **Pre-Bituminous Construction** | 2027-02-25 → 2027-03-15 (+18d) | 2027-04-04 → 2027-04-15 (+11d) |  |
| CO-RD-PB-140 | Subgrade Layer for Road Works | 2027-02-25 → 2027-03-15 (+18d) | 2027-03-18 → 2027-03-30 (+12d) | -68d → -77.5d |
| CO-RD-PB-150 | Aggregate Base Course Layer for Road Works | 2027-03-20 → 2027-03-30 (+10d) | 2027-04-04 → 2027-04-15 (+11d) | -68d → -77.5d |
| 2 | **ST+500:ST+1000** | 2027-03-20 → 2027-03-31 (+11d) | 2027-04-17 → 2027-04-28 (+11d) |  |
| RD | **Pre-Bituminous Construction** | 2027-03-20 → 2027-03-31 (+11d) | 2027-04-17 → 2027-04-28 (+11d) |  |
| CO-RD-PB-120 | Subgrade Layer for Road Works | 2027-03-20 → 2027-03-31 (+11d) | 2027-04-01 → 2027-04-12 (+11d) | -67.3d → -76.8d |
| CO-RD-PB-130 | Aggregate Base Course Layer for Road Works | 2027-04-05 → 2027-04-15 (+10d) | 2027-04-17 → 2027-04-28 (+11d) | -68d → -77.5d |
| 1 | **ST+01:ST+500** | 2027-04-01 → 2027-04-12 (+11d) | 2027-05-01 → 2027-05-12 (+11d) |  |
| RD | **Pre-Bituminous Construction** | 2027-04-01 → 2027-04-12 (+11d) | 2027-05-01 → 2027-05-12 (+11d) |  |
| CO-RD-PB-100 | Subgrade Layer for Road Works | 2027-04-01 → 2027-04-12 (+11d) | 2027-04-15 → 2027-04-26 (+11d) | -67.3d → -76.8d |
| CO-RD-PB-110 | Aggregate Base Course Layer for Road Works | 2027-04-18 → 2027-04-28 (+10d) | 2027-05-01 → 2027-05-12 (+11d) | -68d → -77.5d |
| 3 | **Finishes for Infrastructure Networks** | 2026-12-15 → 2027-01-11 (+27d) | 2027-05-12 → 2027-05-30 (+18d) |  |
| 11 | **Storm Drainage Network** | 2027-01-24 → 2027-02-01 (+8d) | 2027-04-10 → 2027-04-17 (+7d) |  |
| TF | **Testing and Finishes** | 2027-01-24 → 2027-02-01 (+8d) | 2027-04-10 → 2027-04-17 (+7d) |  |
| CO-SD-ML-TF-100 | Testing Work for Pipes of Storm Drainage Network | 2027-01-24 → 2027-02-01 (+8d) | 2027-02-04 → 2027-02-14 (+10d) | -71.2d → -78d |
| CO-SD-CB-TF-130 | Catch Basin Internal Finishes (Benching ) for Storm Drainage Network | 2027-02-04 → 2027-02-14 (+10d) | 2027-02-18 → 2027-03-01 (+11d) | -71.2d → -78d |
| CO-SD-CB-TF-160 | Testing Works for Catch Basins of Storm Drainage Network | 2027-02-18 → 2027-03-01 (+11d) | 2027-03-06 → 2027-03-17 (+11d) | -71.2d → -78d |
| CO-SD-CB-TF-110 | Install Catch Basin Cover Works for External Finishes of Storm Drainage Network | 2027-03-06 → 2027-03-18 (+12d) | 2027-03-22 → 2027-03-29 (+7d) | -71.2d → -78d |
| CO-SD-MH-TF-120 | Main Manhole Internal Finishes (Benching ) for Storm Drainage Network | 2027-03-22 → 2027-03-30 (+8d) | 2027-04-03 → 2027-04-10 (+7d) | -71.2d → -78d |
| CO-SD-MH-TF-210 | Testing Works for Manholes of Storm Drainage Network | 2027-04-03 → 2027-04-11 (+8d) | 2027-04-10 → 2027-04-17 (+7d) | -71.2d → -78d |
| 10 | **Sewage Network** | 2026-12-15 → 2027-01-11 (+27d) | 2027-04-03 → 2027-04-21 (+18d) |  |
| TF | **Testing and Finishes** | 2026-12-15 → 2027-01-11 (+27d) | 2027-04-03 → 2027-04-21 (+18d) |  |
| CO-SW-TF-100 | Final Testing For Main Line of Sewage Network | 2026-12-15 → 2027-01-11 (+27d) | 2026-12-24 → 2027-01-20 (+27d) | -47.5d → -70.5d |
| CO-SW-TF-130 | Main Manhole Internal Finishes (Benching + Insulation) of Sewage Network | 2026-12-26 → 2027-01-21 (+26d) | 2027-01-18 → 2027-02-16 (+29d) | -16d → -39d |
| CO-SW-TF-110 | Install Manhole Cover Works for External Finishes of Sewage Network | 2027-03-18 → 2027-04-05 (+18d) | 2027-03-29 → 2027-04-17 (+19d) | -57d → -72.5d |
| CO-SW-TF-210 | Testing Works for Main Line Manholes of Sewage Network | 2027-03-30 → 2027-04-17 (+18d) | 2027-04-03 → 2027-04-21 (+18d) | -57d → -72.5d |
| 9 | **Potable Water Network** | 2027-03-22 → 2027-04-03 (+12d) | 2027-04-26 → 2027-05-08 (+12d) |  |
| TF | **Testing and Finishes** | 2027-03-22 → 2027-04-03 (+12d) | 2027-04-26 → 2027-05-08 (+12d) |  |
| CO-PW-TF-110 | Testing Work for Main Line of Potable Water Network | 2027-03-22 → 2027-04-03 (+12d) | 2027-04-03 → 2027-04-14 (+11d) | -66d → -75.5d |
| CO-PW-TF-120 | Fire Hydrant Finishies (S.Box + Safety + Marker Post ) of Potable Water Network | 2027-04-04 → 2027-04-14 (+10d) | 2027-04-14 → 2027-04-26 (+12d) | -66d → -75.5d |
| CO-PW-TF-100 | Final Finishes works and Covers for Valves and Valve Chambers of Potable Water Network | 2027-04-15 → 2027-04-26 (+11d) | 2027-04-26 → 2027-05-08 (+12d) | -66d → -75.5d |
| 13 | **Irrigation Network** | 2027-03-18 → 2027-03-30 (+12d) | 2027-04-01 → 2027-04-12 (+11d) |  |
| TF | **Testing and Finishes** | 2027-03-18 → 2027-03-30 (+12d) | 2027-04-01 → 2027-04-12 (+11d) |  |
| CO-IR-TF-160 | Final Testing (pressure tests) of Irrigation Network | 2027-03-18 → 2027-03-30 (+12d) | 2027-04-01 → 2027-04-12 (+11d) | -58d → -67.5d |
| 1 | **Treated Sewage Effluent (Tse)** | 2027-04-01 → 2027-04-13 (+12d) | 2027-04-14 → 2027-04-26 (+12d) |  |
| TF | **Testing and Finishes** | 2027-04-01 → 2027-04-13 (+12d) | 2027-04-14 → 2027-04-26 (+12d) |  |
| CO-TSE-TF-170 | Final Testing (pressure tests) of Treated Sewage Effluent (Tse) | 2027-04-01 → 2027-04-13 (+12d) | 2027-04-14 → 2027-04-26 (+12d) | -58d → -67.5d |
| 14 | **Medium Voltage Network** | 2027-03-20 → 2027-03-31 (+11d) | 2027-04-10 → 2027-04-20 (+10d) |  |
| TT | **Termination and Testing Works** | 2027-03-20 → 2027-03-31 (+11d) | 2027-04-10 → 2027-04-20 (+10d) |  |
| CO-MV-TF-220 | Termination Works of Medium Voltage Network | 2027-03-20 → 2027-03-31 (+11d) | 2027-04-10 → 2027-04-20 (+10d) | -64.5d → -74d |
| 12 | **Street Lighting Network** | 2027-04-10 → 2027-04-21 (+11d) | 2027-04-26 → 2027-05-06 (+10d) |  |
| TR | **Termination and Testing Works** | 2027-04-10 → 2027-04-21 (+11d) | 2027-04-26 → 2027-05-06 (+10d) |  |
| CO-SL-LP-330 | Installation Works for Lighting Fixtures With Drop Wire of Street Lighting Network | 2027-04-10 → 2027-04-21 (+11d) | 2027-04-18 → 2027-04-28 (+10d) | -66.5d → -76d |
| CO-SL-TF-200 | Testing Works for Lighting Poles of Street Lighting Network | 2027-04-18 → 2027-04-29 (+11d) | 2027-04-24 → 2027-05-04 (+10d) | -58.5d → -68d |
| CO-SL-TF-220 | Termination Works For Lighting Poles Cables of Street Lighting Network | 2027-04-18 → 2027-04-29 (+11d) | 2027-04-26 → 2027-05-06 (+10d) | -60.5d → -70d |
| CO-SL-TF-230 | Termination Works For Panel Board Cables of Street Lighting Network | 2027-04-18 → 2027-04-29 (+11d) | 2027-04-26 → 2027-05-06 (+10d) | -60.5d → -70d |
| CO-SL-TF-380 | Testing Works For Panel Board Cables of Street Lighting Network | 2027-04-18 → 2027-04-29 (+11d) | 2027-04-20 → 2027-05-01 (+11d) | -55.5d → -65d |
| ES | **Earthing System Works** | 2027-04-10 → 2027-04-21 (+11d) | 2027-04-18 → 2027-04-28 (+10d) |  |
| CO-SL-ES-220 | Install Earthing System Works for Lighting Poles of Street Lighting Network | 2027-04-10 → 2027-04-21 (+11d) | 2027-04-18 → 2027-04-28 (+10d) | -66.5d → -76d |
| CO-SL-ES-230 | Install Earthing System Works for Lighting Panel Boards of Street Lighting Network | 2027-04-10 → 2027-04-21 (+11d) | 2027-04-18 → 2027-04-28 (+10d) | -66.5d → -76d |
| 3 | **Telecom Network** | 2027-03-31 → 2027-04-12 (+12d) | 2027-04-19 → 2027-04-29 (+10d) |  |
| 1 | **Testing and Finishes** | 2027-03-31 → 2027-04-12 (+12d) | 2027-04-19 → 2027-04-29 (+10d) |  |
| CO-TE-CTV-TF-110 | Smart Card Printer | 2027-03-31 → 2027-04-12 (+12d) | 2027-04-05 → 2027-04-15 (+10d) | -67.5d → -77d |
| CO-TE-CTV-TF-120 | Card Issue Work Station | 2027-04-05 → 2027-04-17 (+12d) | 2027-04-10 → 2027-04-20 (+10d) | -67.5d → -77d |
| CO-TE-CTV-TF-130 | Photographic Camera with stand | 2027-04-10 → 2027-04-21 (+11d) | 2027-04-14 → 2027-04-25 (+11d) | -67.5d → -77d |
| CO-TE-CTV-TF-140 | Interface modules with CCTV, Fire and other systems | 2027-04-14 → 2027-04-26 (+12d) | 2027-04-19 → 2027-04-29 (+10d) | -67.5d → -77d |
| 2 | **Road Works** | 2027-03-20 → 2027-03-30 (+10d) | 2027-05-12 → 2027-05-30 (+18d) |  |
| 3 | **ST+1000:ST+1531** | 2027-03-20 → 2027-03-30 (+10d) | 2027-05-06 → 2027-05-24 (+18d) |  |
| 1 | **Bituminous Construction** | 2027-04-05 → 2027-04-15 (+10d) | 2027-04-20 → 2027-05-02 (+12d) |  |
| CO-RD-B-150 | Application of Prime Coat Layer for Road Works | 2027-04-05 → 2027-04-15 (+10d) | 2027-04-12 → 2027-04-24 (+12d) | -67d → -76.5d |

| ID | Task | Start | Finish | Complete | Total float | Predecessors |
| --- | --- | --- | --- | --- | --- | --- |
| CO-RD-B-160 | Bituminous Base Courses Layers for Road Works- | 2027-04-13 → 2027-04-24 (+11d) | 2027-04-20 → 2027-05-02 (+12d) |  | -67d → -76.5d |  |
| LS | **Pavement Works** | 2027-03-20 → 2027-03-30 (+10d) | 2027-04-15 → 2027-04-26 (+11d) |  |  |  |
| CO-RD-PV-160 | Fixing of Curbstone for Sidewalks Pavement | 2027-03-20 → 2027-03-30 (+10d) | 2027-04-03 → 2027-04-13 (+10d) |  | -67.2d → -76.7d |  |
| CO-RD-PV-170 | Fixing of Interlock Tiles for Sidewalks Pavement | 2027-04-03 → 2027-04-13 (+10d) | 2027-04-15 → 2027-04-26 (+11d) |  | -67.2d → -76.7d |  |
| TS | **Traffic Signs Boards and Roads Marking** | 2027-04-21 → 2027-05-02 (+11d) | 2027-05-06 → 2027-05-24 (+18d) |  |  |  |
| CO-RD-F-RM-180 | Application of Road Marking Works For Road Works | 2027-04-21 → 2027-05-02 (+11d) | 2027-04-28 → 2027-05-10 (+12d) |  | -64d → -73.5d |  |
| CO-RD-F-TS-120 | Installation Works of Traffic Signs Boards For Road Works | 2027-04-29 → 2027-05-10 (+11d) | 2027-05-06 → 2027-05-24 (+18d) |  | -64d → -73.5d |  |
| 1 | **ST+500:ST+1000** | 2027-04-03 → 2027-04-13 (+10d) | 2027-05-11 → 2027-05-29 (+18d) |  |  |  |
| 1 | **Bituminous Construction** | 2027-04-21 → 2027-05-02 (+11d) | 2027-04-29 → 2027-05-11 (+12d) |  |  |  |
| CO-RD-B-130 | Application of Prime Coat Layer for Road Works | 2027-04-21 → 2027-05-02 (+11d) | 2027-04-25 → 2027-05-06 (+11d) |  | -67d → -76.5d |  |
| CO-RD-B-140 | Bituminous Base Courses Layers for Road Works- | 2027-04-26 → 2027-05-06 (+10d) | 2027-04-29 → 2027-05-11 (+12d) |  | -67d → -76.5d |  |
| LS | **Pavement Works** | 2027-04-03 → 2027-04-13 (+10d) | 2027-04-28 → 2027-05-09 (+11d) |  |  |  |
| CO-RD-PV-140 | Fixing of Curbstone for Sidewalks Pavement | 2027-04-03 → 2027-04-13 (+10d) | 2027-04-15 → 2027-04-26 (+11d) |  | -67.2d → -76.7d |  |
| CO-RD-PV-150 | Fixing of Interlock Tiles for Sidewalks Pavement | 2027-04-15 → 2027-04-26 (+11d) | 2027-04-28 → 2027-05-09 (+11d) |  | -67.2d → -76.7d |  |
| TS | **Traffic Signs Boards and Roads Marking** | 2027-05-02 → 2027-05-12 (+10d) | 2027-05-11 → 2027-05-29 (+18d) |  |  |  |
| CO-RD-F-RM-170 | Application of Road Marking Works For Road Works | 2027-05-02 → 2027-05-12 (+10d) | 2027-05-06 → 2027-05-24 (+18d) |  | -68d → -77.5d |  |
| CO-RD-F-TS-110 | Installation Works of Traffic Signs Boards For Road Works | 2027-05-08 → 2027-05-24 (+16d) | 2027-05-11 → 2027-05-29 (+18d) |  | -68d → -77.5d |  |
| 2 | **ST+01:ST+500** | 2027-04-15 → 2027-04-26 (+11d) | 2027-05-12 → 2027-05-30 (+18d) |  |  |  |
| 1 | **Bituminous Construction** | 2027-05-02 → 2027-05-12 (+10d) | 2027-05-11 → 2027-05-29 (+18d) |  |  |  |
| CO-RD-B-110 | Application of Prime Coat Layer for Road Works | 2027-05-02 → 2027-05-12 (+10d) | 2027-05-06 → 2027-05-24 (+18d) |  | -68d → -77.5d |  |
| CO-RD-B-120 | Bituminous Base Courses Layers for Road Works- | 2027-05-08 → 2027-05-24 (+16d) | 2027-05-11 → 2027-05-29 (+18d) |  | -68d → -77.5d |  |
| LS | **Pavement Works** | 2027-04-15 → 2027-04-26 (+11d) | 2027-05-11 → 2027-05-27 (+16d) |  |  |  |
| CO-RD-PV-120 | Fixing of Curbstone for Sidewalks Pavement | 2027-04-15 → 2027-04-26 (+11d) | 2027-04-28 → 2027-05-09 (+11d) |  | -67.3d → -76.8d |  |
| CO-RD-PV-130 | Fixing of Interlock Tiles for Sidewalks Pavement | 2027-04-28 → 2027-05-09 (+11d) | 2027-05-11 → 2027-05-27 (+16d) |  | -67.3d → -76.8d |  |
| TS | **Traffic Signs Boards and Roads Marking** | 2027-05-12 → 2027-05-29 (+17d) | 2027-05-12 → 2027-05-30 (+18d) |  |  |  |
| CO-RD-F-RM-160 | Application of Road Marking Works For Road Works | 2027-05-12 → 2027-05-29 (+17d) | 2027-05-12 → 2027-05-30 (+18d) |  | -65d → -74.5d |  |
| CO-RD-F-TS-100 | Installation Works of Traffic Signs Boards For Road Works | 2027-05-12 → 2027-05-29 (+17d) | 2027-05-12 → 2027-05-30 (+18d) |  | -65d → -74.5d |  |
| GEN | **Superstructure Work** |  | 2027-04-25 → 2027-05-27 (+32d) |  |  |  |
| 4 | **Utility Buildings** |  | 2027-04-25 → 2027-05-12 (+17d) |  |  |  |
| 4 | **Pump Station** |  | 2027-04-25 → 2027-05-05 (+10d) |  |  |  |
| 1 | **Civil work** |  | 2026-12-20 → 2026-12-03 (-17d) |  |  |  |
| 2 | **Super structure** | 2026-11-05 → 2026-09-16 (-50d) | 2026-12-20 → 2026-12-03 (-17d) |  |  |  |
| CO-UB-PS-170 | Formwork for Wall and columns for Pump station building | 2026-11-05 → 2026-09-16 A (-50d) | 2026-11-16 → 2026-09-21 A (-56d) | 0% → 100% | -14.96d → none |  |
| CO-UB-PS-180 | Steel fixing for Wall columns | 2026-11-16 → 2026-09-16 A (-61d) | 2026-11-24 → 2026-09-21 A (-64d) | 0% → 100% | -14.96d → none |  |
| CO-UB-PS-190 | pouring for Wall columns | 2026-11-24 → 2026-09-21 A (-64d) | 2026-11-25 → 2026-09-21 A (-65d) | 0% → 100% | -14.96d → none |  |
| CO-UB-PS-200 | curing and deshuttering formwork for Wall columns | 2026-11-25 → 2026-09-23 A (-63d) | 2026-11-28 → 2026-09-23 A (-66d) | 0% → 100% | -14.96d → none |  |
| CO-UB-PS-210 | Waterproofing for Walls columns | 2026-11-28 → 2026-09-24 A (-65d) | 2026-12-02 → 2026-09-24 A (-69d) | 0% → 100% | -14.96d → none |  |
| CO-UB-PS-220 | Formwork for pump roof | 2026-12-02 → 2026-09-24 A (-69d) | 2026-12-09 → 2026-10-03 A (-67d) | 0% → 100% | -14.96d → none |  |
| CO-UB-PS-230 | Steel fixing for pump roof | 2026-12-09 → 2026-09-26 A (-74d) | 2026-12-16 → 2026-10-11 A (-66d) | 0% → 100% | -14.96d → none |  |
| CO-UB-PS-240 | pouring for pump roof | 2026-12-16 → 2026-10-12 A (-65d) | 2026-12-17 → 2026-10-12 A (-66d) | 0% → 100% | -14.96d → none |  |
| CO-UB-PS-250 | curing and deshuttering formwork for pump roof | 2026-12-17 → 2026-12-02 (-15d) | 2026-12-20 → 2026-12-03 (-17d) |  | -14.96d → -1d |  |
| 2 | **Architectural work** | 2026-12-20 → 2026-12-05 (-15d) | 2027-01-30 → 2027-01-13 (-17d) |  |  |  |
| CO-UB-PS-260 | Executing Masonry Works for Pump station building | 2026-12-20 → 2026-12-05 (-15d) | 2026-12-26 → 2026-12-09 (-17d) |  | -14.96d → -1d |  |
| CO-UB-PS-270 | Executing Plastering Works for Pump station building | 2026-12-26 → 2026-12-10 (-16d) | 2026-12-31 → 2026-12-15 (-16d) |  | -14.96d → -1d |  |
| CO-UB-PS-280 | Executing Painting Works for Pump station building | 2026-12-31 → 2026-12-16 (-15d) | 2027-01-06 → 2026-12-21 (-16d) |  | -14.96d → -1d |  |
| CO-UB-PS-320 | Doors and windows Fixing &Stair Tiles | 2027-01-21 → 2027-01-06 (-15d) | 2027-01-30 → 2027-01-13 (-17d) |  | -10.96d → 3d |  |
| 3 | **Electrical work** | 2027-01-06 → 2026-12-22 (-15d) | 2027-04-19 → 2027-04-29 (+10d) |  |  |  |
| CO-UB-PS-290 | Lighting system for pump house | 2027-01-06 → 2026-12-22 (-15d) | 2027-01-12 → 2026-12-27 (-16d) |  | -14.96d → -1d |  |
| CO-UB-PS-300 | Wiring connection for pump house | 2027-01-12 → 2026-12-28 (-15d) | 2027-01-18 → 2027-01-02 (-16d) |  | -14.96d → -1d |  |
| CO-UB-PS-310 | Sockets and switches for pump house | 2027-01-18 → 2027-01-03 (-15d) | 2027-01-21 → 2027-01-05 (-16d) |  | -14.96d → -1d |  |
| CO-UB-PS-330 | Installation for Distribution boards for pump house | 2027-01-21 → 2027-01-06 (-15d) | 2027-01-31 → 2027-01-14 (-17d) |  | -14.96d → -1d |  |
| CO-UB-PS-370 | Executing Earthing and bonding for the entire system | 2027-04-10 → 2027-04-21 (+11d) | 2027-04-19 → 2027-04-29 (+10d) |  | -64.5d → -74d |  |
| 4 | **Mechanical work** | 2027-01-21 → 2027-01-06 (-15d) | 2027-04-25 → 2027-05-05 (+10d) |  |  |  |
| CO-UB-PS-340 | Executing HVAC System for Pump station building | 2027-01-21 → 2027-01-06 (-15d) | 2027-02-07 → 2027-01-21 (-17d) |  | -12.96d → 1d |  |
| CO-UB-PS-350 | Executing Fire Alarm System for Pump station building | 2027-01-21 → 2027-01-06 (-15d) | 2027-01-27 → 2027-01-11 (-16d) |  | -13.96d → 0d |  |
| CO-UB-PS-360 | Executing Fire fighting institution works(piping and wire installation) for Pump station building | 2027-01-27 → 2027-01-12 (-15d) | 2027-02-02 → 2027-01-17 (-16d) |  | -13.96d → 0d |  |
| CO-UB-PS-380 | Executing Fire fighting finishing works for Pump station building | 2027-02-02 → 2027-01-18 (-15d) | 2027-02-09 → 2027-01-23 (-17d) |  | -13.96d → 0d |  |
| CO-UB-PS-390 | Installation of pumps | 2027-04-19 → 2027-05-01 (+12d) | 2027-04-25 → 2027-05-05 (+10d) |  | -64.5d → -74d |  |
| 3 | **Lift Station** |  | 2027-03-15 → 2027-02-25 (-18d) |  |  |  |
| 1 | **Civil work** |  | 2027-01-09 → 2026-12-28 (-12d) |  |  |  |
| 1 | **Sup Structure** |  | 2026-11-25 → 2026-09-30 (-56d) |  |  |  |
| CO-UB-LS-240 | Formwork for Foundation for Lift Station | 2026-11-05 → 2026-09-15 A (-51d) | 2026-11-10 → 2026-09-20 A (-51d) | 0% → 100% | -30d → none |  |
| CO-UB-LS-250 | Steel fixing for Foundation for Lift Station | 2026-11-11 → 2026-09-21 A (-51d) | 2026-11-17 → 2026-09-24 A (-54d) | 0% → 100% | -30d → none |  |
| CO-UB-LS-260 | pouring for Foundation for Lift Station | 2026-11-18 → 2026-09-26 A (-53d) | 2026-11-18 → 2026-09-26 A (-53d) | 0% → 100% | -30d → none |  |
| CO-UB-LS-270 | curing and deshuttering formwork Lift Station | 2026-11-19 → 2026-09-27 A (-53d) | 2026-11-21 → 2026-09-27 A (-55d) | 0% → 100% | -30d → none |  |
| CO-UB-LS-280 | Backfilling and compaction work for pump station | 2026-11-22 → 2026-09-28 A (-55d) | 2026-11-25 → 2026-09-30 A (-56d) | 0% → 100% | -30d → none |  |
| 2 | **Super structure** | 2026-11-26 → 2026-09-23 (-64d) | 2027-01-09 → 2026-12-28 (-12d) |  |  |  |
| CO-UB-LS-290 | Formwork for Wall and columns for Lift Station | 2026-11-26 → 2026-09-23 A (-64d) | 2026-12-03 → 2026-12-02 (-1d) | 0% → 70% | -30d → -20d | CO-UB-LS-280 → CO-UB-LS-280 FF |
| CO-UB-LS-300 | Steel fixing for Wall columns | 2026-12-05 → 2026-09-23 A (-73d) | 2026-12-14 → 2026-12-03 (-11d) | 0% → 70% | -30d → -20d | CO-UB-LS-290 → CO-UB-LS-290 FF, CO-UB-LS-290 SS |
| CO-UB-LS-310 | pouring for Wall columns | 2026-12-15 → 2026-09-30 A (-76d) | 2026-12-15 → 2026-12-03 (-12d) | 0% → 50% | -30d → -20d | CO-UB-LS-300 → CO-UB-LS-300 FF, CO-UB-LS-300 SS |

| ID | Task | Start | Finish | Complete | Total float |
| --- | --- | --- | --- | --- | --- |
| CO-UB-LS-320 | curing and deshuttering formwork for Wall columns | 2026-12-16 → 2026-12-05 (-11d) | 2026-12-17 → 2026-12-06 (-11d) |  | -30d → -20d |
| CO-UB-LS-330 | Waterproofing for Walls columns | 2026-12-19 → 2026-12-07 (-12d) | 2026-12-22 → 2026-12-10 (-12d) |  | -30d → -20d |
| CO-UB-LS-340 | Formwork for pump roof | 2026-12-23 → 2026-12-12 (-11d) | 2026-12-28 → 2026-12-16 (-12d) |  | -30d → -20d |
| CO-UB-LS-350 | Steel fixing for pump roof | 2026-12-29 → 2026-12-17 (-12d) | 2027-01-04 → 2026-12-23 (-12d) |  | -30d → -20d |
| CO-UB-LS-360 | pouring for pump roof | 2027-01-05 → 2026-12-24 (-12d) | 2027-01-05 → 2026-12-24 (-12d) |  | -30d → -20d |
| CO-UB-LS-370 | curing and deshuttering formwork for pump roof | 2027-01-06 → 2026-12-26 (-11d) | 2027-01-09 → 2026-12-28 (-12d) |  | -30d → -20d |
| 2 | **Architectural work** | 2027-01-10 → 2026-12-29 (-12d) | 2027-01-26 → 2027-01-14 (-12d) |  |  |
| CO-UB-LS-380 | Executing Masonry Works for Pump station building | 2027-01-10 → 2026-12-29 (-12d) | 2027-01-17 → 2027-01-05 (-12d) |  | -30d → -20d |
| CO-UB-LS-390 | Executing Plastering Works for Pump station building | 2027-01-18 → 2027-01-06 (-12d) | 2027-01-26 → 2027-01-14 (-12d) |  | -30d → -20d |
| 3 | **Electrical work** | 2027-01-27 → 2027-01-16 (-11d) | 2027-03-15 → 2027-02-25 (-18d) |  |  |
| CO-UB-LS-400 | Lighting system for pump house | 2027-01-27 → 2027-01-16 (-11d) | 2027-02-04 → 2027-01-24 (-11d) |  | -30d → -20d |
| CO-UB-LS-420 | Wiring connection for pump house | 2027-02-06 → 2027-01-25 (-12d) | 2027-02-14 → 2027-01-31 (-14d) |  | -30d → -20d |
| CO-UB-LS-440 | Sockets and switches for pump house | 2027-02-14 → 2027-02-01 (-13d) | 2027-02-22 → 2027-02-07 (-15d) |  | -30d → -20d |
| CO-UB-LS-460 | Installation for Distribution boards for pump house | 2027-02-23 → 2027-02-08 (-15d) | 2027-03-03 → 2027-02-16 (-15d) |  | -30d → -20d |
| CO-UB-LS-480 | Executing Earthing and bonding for the entire system | 2027-03-04 → 2027-02-17 (-15d) | 2027-03-15 → 2027-02-25 (-18d) |  | -30d → -20d |
| 4 | **Mechanical work** | 2027-01-27 → 2027-01-16 (-11d) | 2027-03-13 → 2027-02-22 (-19d) |  |  |
| CO-UB-LS-410 | Internal pipe installation | 2027-01-27 → 2027-01-16 (-11d) | 2027-02-04 → 2027-01-24 (-11d) |  | -28d → -18d |
| CO-UB-LS-430 | Guide rails & lifting chains installation | 2027-02-06 → 2027-01-25 (-12d) | 2027-02-15 → 2027-02-01 (-14d) |  | -28d → -18d |
| CO-UB-LS-450 | ExeValve installation | 2027-02-15 → 2027-02-02 (-13d) | 2027-02-25 → 2027-02-10 (-15d) |  | -28d → -18d |
| CO-UB-LS-470 | Installation of pumps | 2027-02-25 → 2027-02-10 (-15d) | 2027-03-13 → 2027-02-22 (-19d) |  | -28d → -18d |
| 5 | **Potable Water Tank** | 2026-11-17 → 2026-12-14 (+27d) | 2027-02-01 → 2027-03-07 (+34d) |  |  |
| 1 | **Eearth Work** | 2026-11-17 → 2026-12-14 (+27d) | 2026-11-30 → 2026-12-27 (+27d) |  |  |
| CO-UB-PWT-100 | Excavation work for tank foundation tank formation level | 2026-11-17 → 2026-12-14 (+27d) | 2026-11-24 → 2026-12-21 (+27d) |  | -59d → -82d |
| CO-UB-PWT-110 | Soil replacement Up to tank formation level | 2026-11-25 → 2026-12-22 (+27d) | 2026-11-30 → 2026-12-27 (+27d) |  | -59d → -82d |
| 2 | **Structural Work** | 2026-12-01 → 2026-12-28 (+27d) | 2026-12-17 → 2027-01-13 (+27d) |  |  |
| CO-UB-PWT-120 | Plain Concrete works | 2026-12-01 → 2026-12-28 (+27d) | 2026-12-03 → 2026-12-30 (+27d) |  | -59d → -82d |
| CO-UB-PWT-130 | Form work for Tank Foundation | 2026-12-05 → 2026-12-31 (+26d) | 2026-12-09 → 2027-01-05 (+27d) |  | -59d → -82d |
| CO-UB-PWT-140 | Steel Reinforcement work for Tank Foundation | 2026-12-10 → 2027-01-06 (+27d) | 2026-12-16 → 2027-01-12 (+27d) |  | -59d → -82d |
| CO-UB-PWT-150 | Casting concrete for Tank Foundation | 2026-12-17 → 2027-01-13 (+27d) | 2026-12-17 → 2027-01-13 (+27d) |  | -59d → -82d |
| 3 | **Tank Shell Erection&Roof Installation** | 2026-12-19 → 2027-01-14 (+26d) | 2027-01-12 → 2027-02-09 (+28d) |  |  |
| CO-UB-PWT-160 | Bottom ring installation | 2026-12-19 → 2027-01-14 (+26d) | 2026-12-24 → 2027-01-20 (+27d) |  | -59d → -82d |
| CO-UB-PWT-170 | shell erection | 2026-12-26 → 2027-01-21 (+26d) | 2027-01-03 → 2027-01-30 (+27d) |  | -59d → -82d |
| CO-UB-PWT-180 | Aluminum dome / steel roof installation | 2027-01-04 → 2027-01-31 (+27d) | 2027-01-12 → 2027-02-09 (+28d) |  | -59d → -82d |
| 4 | **Mechanical Work&Accessories** | 2027-01-13 → 2027-02-09 (+27d) | 2027-02-01 → 2027-03-07 (+34d) |  |  |
| CO-UB-PWT-190 | Inlet / outlet piping connections | 2027-01-13 → 2027-02-09 (+27d) | 2027-01-19 → 2027-02-18 (+30d) |  | -59d → -82d |
| CO-UB-PWT-200 | installation Valves | 2027-01-20 → 2027-02-18 (+29d) | 2027-01-26 → 2027-02-27 (+32d) |  | -59d → -82d |
| CO-UB-PWT-210 | Ladders, platforms & handrails | 2027-01-27 → 2027-02-28 (+32d) | 2027-02-01 → 2027-03-07 (+34d) |  | -59d → -82d |
| 2 | **IrrigationTank** | 2027-02-02 → 2027-03-07 (+33d) | 2027-04-15 → 2027-05-12 (+27d) |  |  |
| 1 | **Eearth Work** | 2027-02-02 → 2027-03-07 (+33d) | 2027-02-16 → 2027-03-23 (+35d) |  |  |
| CO-UB-IRT-140 | Excavation work for tank foundation tank formation level | 2027-02-02 → 2027-03-07 (+33d) | 2027-02-09 → 2027-03-17 (+36d) |  | -59d → -82d |
| CO-UB-IRT-150 | Soil replacement Up to tank formation level | 2027-02-09 → 2027-03-18 (+37d) | 2027-02-16 → 2027-03-23 (+35d) |  | -59d → -82d |
| 2 | **Structural Work** | 2027-02-17 → 2027-03-24 (+35d) | 2027-03-14 → 2027-04-10 (+27d) |  |  |
| CO-UB-IRT-160 | Plain Concrete works | 2027-02-17 → 2027-03-24 (+35d) | 2027-02-21 → 2027-03-27 (+34d) |  | -59d → -82d |
| CO-UB-IRT-170 | Form work for Tank Foundation | 2027-02-22 → 2027-03-28 (+34d) | 2027-03-02 → 2027-04-03 (+32d) |  | -59d → -82d |
| CO-UB-IRT-180 | Steel Reinforcement work for Tank Foundation | 2027-03-02 → 2027-04-04 (+33d) | 2027-03-13 → 2027-04-08 (+26d) |  | -59d → -82d |
| CO-UB-IRT-190 | Casting concrete for Tank Foundation | 2027-03-14 → 2027-04-10 (+27d) | 2027-03-14 → 2027-04-10 (+27d) |  | -59d → -82d |
| 3 | **Tank Shell Erection&Roof Installation** | 2027-03-15 → 2027-04-11 (+27d) | 2027-04-04 → 2027-05-01 (+27d) |  |  |
| CO-UB-IRT-200 | Bottom ring installation | 2027-03-15 → 2027-04-11 (+27d) | 2027-03-21 → 2027-04-17 (+27d) |  | -59d → -82d |
| CO-UB-IRT-210 | shell erection | 2027-03-22 → 2027-04-18 (+27d) | 2027-03-28 → 2027-04-24 (+27d) |  | -59d → -82d |
| CO-UB-IRT-220 | Aluminum dome / steel roof installation | 2027-03-29 → 2027-04-25 (+27d) | 2027-04-04 → 2027-05-01 (+27d) |  | -59d → -82d |
| 4 | **Mechanical Work&Accessories** | 2027-04-05 → 2027-05-02 (+27d) | 2027-04-15 → 2027-05-12 (+27d) |  |  |
| CO-UB-IRT-230 | Inlet / outlet piping connections | 2027-04-05 → 2027-05-02 (+27d) | 2027-04-08 → 2027-05-05 (+27d) |  | -59d → -82d |
| CO-UB-IRT-240 | installation Valves | 2027-04-10 → 2027-05-06 (+26d) | 2027-04-13 → 2027-05-10 (+27d) |  | -59d → -82d |
| CO-UB-IRT-250 | Ladders, platforms & handrails | 2027-04-14 → 2027-05-11 (+27d) | 2027-04-15 → 2027-05-12 (+27d) |  | -59d → -82d |
| 1 | **Control Room** |  | 2027-03-02 → 2027-03-17 (+15d) |  |  |
| 5 | **Civil Work** |  | 2026-12-09 → 2026-12-20 (+11d) |  |  |
| CO-UB-CR-120 | Pouring R.C Footing For Control Room | 2026-11-05 → 2026-09-16 A (-50d) | 2026-11-21 → 2026-09-30 A (-52d) | 0% → 100% | -5d → none |
| CO-UB-CR-130 | Pouring R.C Columns For Control Room | 2026-11-22 → 2026-12-02 (+10d) | 2026-11-30 → 2026-12-10 (+10d) |  | -5d → -14d |
| CO-UB-CR-140 | Pouring Beams and Slab For Control Room | 2026-12-01 → 2026-12-12 (+11d) | 2026-12-09 → 2026-12-20 (+11d) |  | -5d → -14d |
| 6 | **Finishing Work** | 2026-12-10 → 2026-12-21 (+11d) | 2027-03-02 → 2027-03-17 (+15d) |  |  |
| 1 | **Architictural work** | 2026-12-10 → 2026-12-21 (+11d) | 2027-01-25 → 2027-02-04 (+10d) |  |  |
| CO-UB-CR-150 | Brick Work For Control Room | 2026-12-10 → 2026-12-21 (+11d) | 2026-12-20 → 2026-12-30 (+10d) |  | -5d → -14d |
| CO-UB-CR-160 | Thermal & Moisture Protection Work for Control Room | 2026-12-21 → 2026-12-31 (+10d) | 2026-12-28 → 2027-01-07 (+10d) |  | -5d → -14d |
| CO-UB-CR-200 | Install For Curtian Wall and Windows and Doors | 2026-12-29 → 2027-01-09 (+11d) | 2027-01-06 → 2027-01-17 (+11d) |  | -5d → -14d |
| CO-UB-CR-240 | External Finshing Work (Walls and Floor) | 2027-01-07 → 2027-01-18 (+11d) | 2027-01-16 → 2027-01-26 (+10d) |  | -5d → -14d |
| CO-UB-CR-250 | Internal Finshing Work (Walls,Floor and Ceiling) | 2027-01-17 → 2027-01-27 (+10d) | 2027-01-25 → 2027-02-04 (+10d) |  | -5d → -14d |
| 3 | **Mechanical Work** | 2026-12-21 → 2026-12-31 (+10d) | 2027-02-06 → 2027-02-20 (+14d) |  |  |
| 3 | **HVAC System** | 2026-12-21 → 2026-12-31 (+10d) | 2027-02-06 → 2027-02-20 (+14d) |  |  |
| CO-UB-CR-170 | Install of Refrigerant Piping ( fabricated metal ducts with flanges complete with supports, vanes, dampers ) | 2026-12-21 → 2026-12-31 (+10d) | 2026-12-24 → 2027-01-04 (+11d) |  | 8d → -1d |
| CO-UB-CR-260 | Install of Mini split actual capacity 2 Ton and Ducted split actual capacity 4 Ton | 2027-01-26 → 2027-02-06 (+11d) | 2027-02-02 → 2027-02-15 (+13d) |  | 6d → -3d |

| ID | Task | Start | Finish | Total float |
| --- | --- | --- | --- | --- |
| CO-UB-CR-310 | Install of Air Grills 150mm x150mm and Air Diffuser 600mm x 600mm | 2027-02-03 → 2027-02-15 (+12d) | 2027-02-06 → 2027-02-20 (+14d) | 6d → -3d |
| 4 | **Fire Fitting System** | 2026-12-26 → 2027-01-05 (+10d) | 2027-01-28 → 2027-02-09 (+12d) |  |
| CO-UB-CR-180 | Installation & Testing of 2 hours Fire rated system for closing the openings between rooms with help of Rock wool | 2026-12-26 → 2027-01-05 (+10d) | 2026-12-29 → 2027-01-09 (+11d) | 8d → -1d |
| CO-UB-CR-270 | Install Fire Extinguishers | 2027-01-26 → 2027-02-06 (+11d) | 2027-01-28 → 2027-02-09 (+12d) | 13d → 4d |
| 4 | **Electrical Work** | 2026-12-30 → 2027-01-10 (+11d) | 2027-02-22 → 2027-03-08 (+14d) |  |
| 1 | **LV Power** | 2027-01-26 → 2027-02-06 (+11d) | 2027-02-14 → 2027-02-27 (+13d) |  |
| CO-UB-CR-190 | Install of Distribution board For Control Room | 2027-01-26 → 2027-02-06 (+11d) | 2027-01-31 → 2027-02-11 (+11d) | 1d → -8d |
| CO-UB-CR-220 | Install of Earting Cable for Control Room | 2027-02-01 → 2027-02-13 (+12d) | 2027-02-06 → 2027-02-20 (+14d) | 1d → -8d |
| CO-UB-CR-280 | Install of Socket outlet and LED Lighting | 2027-02-07 → 2027-02-20 (+13d) | 2027-02-14 → 2027-02-27 (+13d) | 1d → -8d |
| 3 | **Fire Detection And Alarm System** | 2026-12-30 → 2027-01-10 (+11d) | 2027-02-22 → 2027-03-08 (+14d) |  |
| CO-UB-CR-210 | Install of 2C x 1.5 Sqm FR Rated Armored - Cable For Loop Wiring | 2026-12-30 → 2027-01-10 (+11d) | 2027-01-04 → 2027-01-14 (+10d) | 8d → -1d |
| CO-UB-CR-230 | Install of Transmission Communication cable - Fiber Optics 12Core | 2027-01-05 → 2027-01-16 (+11d) | 2027-01-10 → 2027-01-20 (+10d) | 8d → -1d |
| CO-UB-CR-290 | Install of power supply system for fire alarm control panel | 2027-01-26 → 2027-02-06 (+11d) | 2027-01-31 → 2027-02-11 (+11d) | -5d → -14d |
| CO-UB-CR-300 | Install of Fire Alarm Control panel | 2027-02-01 → 2027-02-13 (+12d) | 2027-02-07 → 2027-02-21 (+14d) | -5d → -14d |
| CO-UB-CR-320 | Installation of the addressable manual call point with operation safety glass breaking | 2027-02-08 → 2027-02-22 (+14d) | 2027-02-11 → 2027-02-25 (+14d) | -5d → -14d |
| CO-UB-CR-330 | Install of the photoelectric heat & smoke detector | 2027-02-13 → 2027-02-25 (+12d) | 2027-02-16 → 2027-03-02 (+14d) | -5d → -14d |
| CO-UB-CR-340 | Install of Sounder With Beacon | 2027-02-13 → 2027-02-25 (+12d) | 2027-02-16 → 2027-03-02 (+14d) | -5d → -14d |
| CO-UB-CR-350 | Install of Addressable Control module | 2027-02-17 → 2027-03-02 (+13d) | 2027-02-22 → 2027-03-08 (+14d) | -5d → -14d |
| 2 | **Furnitures work** | 2027-02-23 → 2027-03-13 (+18d) | 2027-03-02 → 2027-03-17 (+15d) |  |
| CO-UB-CR-360 | Office Chairs,Tables and Stand | 2027-02-23 → 2027-03-13 (+18d) | 2027-03-02 → 2027-03-17 (+15d) | -5d → -14d |
| ML | **Softscape and Planting Works** | 2027-01-11 → 2027-02-08 (+28d) | 2027-03-02 → 2027-04-04 (+33d) |  |
| 1 | **Planting Beds Preparation** | 2027-01-11 → 2027-02-08 (+28d) | 2027-02-03 → 2027-03-14 (+39d) |  |
| CO-LS-PL-100 | Excavation of planting beds | 2027-01-11 → 2027-02-08 (+28d) | 2027-01-18 → 2027-02-18 (+31d) | -43d → -67d |
| CO-LS-PL-110 | Supply & placement of suitable topsoil | 2027-01-19 → 2027-02-18 (+30d) | 2027-01-26 → 2027-03-01 (+34d) | -43d → -67d |
| CO-LS-PL-120 | Soil improvement (fertilizer, compost, additives) | 2027-01-27 → 2027-03-01 (+33d) | 2027-02-03 → 2027-03-14 (+39d) | -43d → -67d |
| 2 | **Supports & Protection** | 2027-02-04 → 2027-03-15 (+39d) | 2027-02-11 → 2027-03-21 (+38d) |  |
| CO-LS-PL-130 | installation of plant supports / stakes | 2027-02-04 → 2027-03-15 (+39d) | 2027-02-07 → 2027-03-17 (+38d) | -43d → -67d |
| CO-LS-PL-140 | Ties and protection materials | 2027-02-08 → 2027-03-18 (+38d) | 2027-02-11 → 2027-03-21 (+38d) | -43d → -67d |
| 3 | **Plant Supply** | 2027-02-13 → 2027-03-22 (+37d) | 2027-02-16 → 2027-03-24 (+36d) |  |
| CO-LS-PL-150 | installation of trees | 2027-02-13 → 2027-03-22 (+37d) | 2027-02-16 → 2027-03-24 (+36d) | -43d → -67d |
| 4 | **Site Furnishings** | 2027-02-17 → 2027-03-25 (+36d) | 2027-03-02 → 2027-04-04 (+33d) |  |
| CO-LS-PL-160 | installation of Seating benches | 2027-02-17 → 2027-03-25 (+36d) | 2027-02-21 → 2027-03-28 (+35d) | -43d → -67d |
| CO-LS-PL-170 | tone boulders ï¿½ placement & fixing Works | 2027-02-22 → 2027-03-29 (+35d) | 2027-02-25 → 2027-03-31 (+34d) | -43d → -67d |
| CO-LS-PL-180 | Gravel Works | 2027-02-25 → 2027-04-01 (+35d) | 2027-03-02 → 2027-04-04 (+33d) | -43d → -67d |
| 1 | **Fence and Gaurd Room** |  | 2027-04-25 → 2027-05-27 (+32d) |  |
| 1 | **Gaurd Room Work** | 2026-11-21 → 2026-12-19 (+28d) | 2027-04-25 → 2027-05-27 (+32d) |  |
| 1 | **Civil Work** | 2026-11-21 → 2026-12-19 (+28d) | 2027-01-07 → 2027-02-03 (+27d) |  |
| A1000 | Excavation Work For Gaurd Room Foundation | 2026-11-21 → 2026-12-19 (+28d) | 2026-11-29 → 2026-12-26 (+27d) | -46.5d → -70d |
| A1010 | Pouring for Plain Concrete | 2026-11-29 → 2026-12-27 (+28d) | 2026-12-03 → 2026-12-30 (+27d) | -46.5d → -70d |
| A1020 | Pouring R.C Footing For Gaurd Room | 2026-12-03 → 2026-12-31 (+28d) | 2026-12-16 → 2027-01-12 (+27d) | -46.5d → -70d |
| A1030 | Pouring R.C Columns For Gaurd Room | 2026-12-16 → 2027-01-13 (+28d) | 2026-12-28 → 2027-01-24 (+27d) | -46.5d → -70d |
| A1040 | Pouring Beams and Slab For Gaurd Room | 2026-12-28 → 2027-01-25 (+28d) | 2027-01-07 → 2027-02-03 (+27d) | -46.5d → -70d |
| 2 | **Finishing Work** | 2027-01-07 → 2027-02-04 (+28d) | 2027-04-25 → 2027-05-27 (+32d) |  |
| 1 | **Architictural work** | 2027-01-07 → 2027-02-04 (+28d) | 2027-03-13 → 2027-04-08 (+26d) |  |
| A1050 | Brick Work For Gaurd Room | 2027-01-07 → 2027-02-04 (+28d) | 2027-01-18 → 2027-02-16 (+29d) | -46.5d → -70d |
| A1060 | Thermal & Moisture Protection Work for Gaurd Room | 2027-01-18 → 2027-02-17 (+30d) | 2027-01-26 → 2027-02-27 (+32d) | -40.5d → -64d |
| A1070 | Install For Curtian Wall and Windows and Doors | 2027-02-02 → 2027-03-13 (+39d) | 2027-02-13 → 2027-03-21 (+36d) | -46.5d → -70d |
| A1080 | External Finshing Work (Walls and Floor) | 2027-02-13 → 2027-03-22 (+37d) | 2027-02-24 → 2027-03-30 (+34d) | -46.5d → -70d |
| A1090 | Internal Finshing Work (Walls,Floor and Ceiling) | 2027-02-25 → 2027-03-31 (+34d) | 2027-03-13 → 2027-04-08 (+26d) | -46.5d → -70d |
| 3 | **Mechanical Work** | 2027-01-18 → 2027-02-17 (+30d) | 2027-03-24 → 2027-04-20 (+27d) |  |
| 1 | **Sanitary Drainage & Plumbing System** | 2027-01-18 → 2027-02-17 (+30d) | 2027-02-02 → 2027-03-08 (+34d) |  |
| A1110 | Install Sanitary Piping System (UPVC) | 2027-01-18 → 2027-02-17 (+30d) | 2027-01-23 → 2027-02-22 (+30d) | -46.5d → -70d |
| A1120 | Install Base mounted flush tank water Western water closet system | 2027-01-23 → 2027-02-23 (+31d) | 2027-01-30 → 2027-03-03 (+32d) | -46.5d → -70d |
| A1130 | Install 1 meter length 10mm diameter Flexible Hose and Gate Valves and Slow Closing Valve | 2027-01-30 → 2027-03-04 (+33d) | 2027-02-02 → 2027-03-08 (+34d) | -46.5d → -70d |
| 2 | **Water Supply System** | 2027-01-18 → 2027-02-17 (+30d) | 2027-03-15 → 2027-04-11 (+27d) |  |
| A1240 | Install GRP water tanks capacity of each 1000 liter | 2027-01-18 → 2027-02-17 (+30d) | 2027-01-21 → 2027-02-21 (+31d) | -45.5d → -69d |
| A1140 | Install for Cold Water Pipe complete with joints, angles, reducer etc. | 2027-01-21 → 2027-02-22 (+32d) | 2027-01-27 → 2027-03-01 (+33d) | -45.5d → -69d |
| A1150 | Install for Hot Water Pipe complete with joints, angles, reducer etc. | 2027-01-27 → 2027-03-01 (+33d) | 2027-02-01 → 2027-03-07 (+34d) | -45.5d → -69d |
| A1160 | Install for Isolation Valve,Spray Head,Roof Drain,Floor Drain,Gully teap,Vend on Roof to exhaust air | 2027-02-01 → 2027-03-07 (+34d) | 2027-02-04 → 2027-03-14 (+38d) | -26.5d → -50d |
| A1170 | Install of Inspection chamber, size 800x900x1000 | 2027-02-04 → 2027-03-15 (+39d) | 2027-02-07 → 2027-03-16 (+37d) | -26.5d → -50d |
| A1180 | Install OF Electric Water Heater set with connection and Water meter complete with accessories | 2027-03-13 → 2027-04-10 (+28d) | 2027-03-15 → 2027-04-11 (+27d) | -46.5d → -70d |
| 3 | **HVAC System** | 2027-01-23 → 2027-02-23 (+31d) | 2027-03-24 → 2027-04-20 (+27d) |  |
| A1200 | Install of Refrigerant Piping ( fabricated metal ducts with flanges complete with supports, vanes, dampers ) | 2027-01-23 → 2027-02-23 (+31d) | 2027-01-27 → 2027-03-01 (+33d) | -25.5d → -49d |
| A1190 | Install of Mini split actual capacity 2 Ton and Ducted split actual capacity 4 Ton | 2027-03-13 → 2027-04-10 (+28d) | 2027-03-21 → 2027-04-17 (+27d) | -24.5d → -48d |
| A1210 | Install of Air Grills 150mm x150mm and Air Diffuser 600mm x 600mm | 2027-03-21 → 2027-04-18 (+28d) | 2027-03-24 → 2027-04-20 (+27d) | -24.5d → -48d |
| 4 | **Fire Fitting System** | 2027-01-27 → 2027-03-01 (+33d) | 2027-03-20 → 2027-04-15 (+26d) |  |
| A1220 | Installation & Testing of 2 hours Fire rated system for closing the openings between rooms with help of Rock wool | 2027-01-27 → 2027-03-01 (+33d) | 2027-02-03 → 2027-03-13 (+38d) | -25.5d → -49d |
| A1230 | Install Fire Extinguishers | 2027-03-13 → 2027-04-10 (+28d) | 2027-03-20 → 2027-04-15 (+26d) | -20.5d → -44d |
| 4 | **Electrical Work** | 2027-01-27 → 2027-03-01 (+33d) | 2027-04-19 → 2027-05-22 (+33d) |  |
| 1 | **LV Power** | 2027-01-27 → 2027-03-01 (+33d) | 2027-03-18 → 2027-04-14 (+27d) |  |

| ID | Task | Start | Finish | Complete | Total float | Predecessors |
| --- | --- | --- | --- | --- | --- | --- |
| A1250 | Install of Distribution board For Gaurd Room | 2027-01-27 → 2027-03-01 (+33d) | 2027-02-02 → 2027-03-08 (+34d) |  | -25.5d → -49d |  |
| A1270 | Install of Earting Cable for Gaurd Room | 2027-02-02 → 2027-03-13 (+39d) | 2027-02-08 → 2027-03-17 (+37d) |  | -25.5d → -49d |  |
| A1260 | Install of Socket outlet and LED Lighting | 2027-03-13 → 2027-04-10 (+28d) | 2027-03-18 → 2027-04-14 (+27d) |  | -19.5d → -43d |  |
| 3 | **Fire Detection And Alarm System** | 2027-02-03 → 2027-03-14 (+39d) | 2027-04-06 → 2027-05-03 (+27d) |  |  |  |
| A1340 | Install of 2C x 1.5 Sqm FR Rated Armored - Cable For Loop Wiring | 2027-02-03 → 2027-03-14 (+39d) | 2027-02-09 → 2027-03-18 (+37d) |  | -25.5d → -49d |  |
| A1350 | Install of Transmission Communication cable - Fiber Optics 12Core | 2027-02-10 → 2027-03-20 (+38d) | 2027-02-17 → 2027-03-24 (+35d) |  | -25.5d → -49d |  |
| A1360 | Install of power supply system for fire alarm control panel | 2027-03-13 → 2027-04-10 (+28d) | 2027-03-18 → 2027-04-14 (+27d) |  | -38.5d → -62d |  |
| A1280 | Install of Fire Alarm Control panel | 2027-03-18 → 2027-04-15 (+28d) | 2027-03-25 → 2027-04-21 (+27d) |  | -38.5d → -62d |  |
| A1290 | Installation of the addressable manual call point with operation safety glass breaking | 2027-03-25 → 2027-04-22 (+28d) | 2027-03-29 → 2027-04-25 (+27d) |  | -38.5d → -62d |  |
| A1300 | Install of the photoelectric heat & smoke detector | 2027-03-29 → 2027-04-26 (+28d) | 2027-04-01 → 2027-04-28 (+27d) |  | -38.5d → -62d |  |
| A1310 | Install of Sounder With Beacon | 2027-03-29 → 2027-04-26 (+28d) | 2027-04-01 → 2027-04-28 (+27d) |  | -38.5d → -62d |  |
| A1320 | Install of Addressable Control module | 2027-04-01 → 2027-04-29 (+28d) | 2027-04-06 → 2027-05-03 (+27d) |  | -38.5d → -62d |  |
| 2 | **Security System** | 2027-03-15 → 2027-04-12 (+28d) | 2027-04-19 → 2027-05-22 (+33d) |  |  |  |
| A1580 | Install 8 Port Industrial PoE Switch 10/100BaseT (0 deg to +70 deg. Celsius) | 2027-03-15 → 2027-04-12 (+28d) | 2027-03-21 → 2027-04-17 (+27d) |  | -46.5d → -70d |  |
| A1590 | Optical Fiber,48 Core Splice Closure | 2027-03-21 → 2027-04-18 (+28d) | 2027-03-24 → 2027-04-20 (+27d) |  | -45.5d → -69d |  |
| A1650 | Pole/Bollard mounted IP( PoE) and 12U rack dimension | 2027-03-21 → 2027-04-18 (+28d) | 2027-03-25 → 2027-04-21 (+27d) |  | -46.5d → -70d |  |
| A1600 | Boom Barrier at Security Guard Room | 2027-03-25 → 2027-04-22 (+28d) | 2027-03-31 → 2027-04-27 (+27d) |  | -46.5d → -70d |  |
| A1610 | Pedestrian turnstile at Security Guard Room | 2027-03-31 → 2027-04-28 (+28d) | 2027-04-06 → 2027-05-03 (+27d) |  | -46.5d → -70d |  |
| A1620 | Access Control Unit and Access Card Reader | 2027-04-06 → 2027-05-04 (+28d) | 2027-04-11 → 2027-05-08 (+27d) |  | -46.5d → -70d |  |
| A1630 | Magnetic Lock and Break Glass and Exit Push button | 2027-04-11 → 2027-05-09 (+28d) | 2027-04-15 → 2027-05-12 (+27d) |  | -46.5d → -70d |  |
| A1640 | Door Sensor and Biometrics Reader | 2027-04-15 → 2027-05-13 (+28d) | 2027-04-19 → 2027-05-22 (+33d) |  | -46.5d → -70d |  |
| 2 | **Furnitures work** | 2027-04-19 → 2027-05-23 (+34d) | 2027-04-25 → 2027-05-27 (+32d) |  |  |  |
| A1100 | Office Chairs,Tables and Stand | 2027-04-19 → 2027-05-23 (+34d) | 2027-04-25 → 2027-05-27 (+32d) |  | -46.5d → -70d |  |
| 2 | **Fence Work** |  | 2027-04-14 → 2027-05-03 (+19d) |  |  |  |
| 1 | **Northern Fence N01:N03** |  | 2027-01-24 → 2027-01-28 (+4d) |  |  |  |
| 1 | **Civil Work** |  | 2026-10-13 → 2026-10-29 (+16d) |  |  |  |
| CO-SU-FE-N-CI-110 | Pouring for Plain Concrete Northern Fence |  | 2026-09-19 → 2026-10-17 (+28d) |  | -33.5d → -48d |  |
| CO-SU-FE-N-CI-120 | Pouring R.C Footing For Northern Fence |  | 2026-09-21 → 2026-10-19 (+28d) | 41% → 85% | -33.5d → -48d |  |
| CO-SU-FE-N-CI-130 | Pouring R.C Columns For Northern Fence | 2026-09-22 → 2026-10-01 A (+9d) | 2026-09-28 → 2026-10-25 (+27d) | 0% → 10% | -33.5d → -48d |  |
| CO-SU-FE-N-CI-140 | Pouring Beams For Northern Fence | 2026-10-08 → 2026-10-03 A (-5d) | 2026-10-13 → 2026-10-29 (+16d) | 0% → 20% | -24.5d → -22d |  |
| 5 | **Finishing Work** |  | 2027-01-24 → 2027-01-28 (+4d) |  |  |  |
| 3 | **Electrical Work** | 2026-10-08 → 2026-10-26 (+18d) | 2027-01-12 → 2027-01-28 (+16d) |  |  |  |
| CO-SU-FE-N-EL-100 | Trench excavation to receive 2 nos 50mm diameter PVC Conduit | 2026-10-08 → 2026-10-26 (+18d) | 2026-10-18 → 2026-11-03 (+16d) |  | -33.5d → -48d |  |
| CO-SU-FE-N-EL-110 | Trench excavation to receive 3 nos 50mm diameter PVC Conduit | 2026-10-08 → 2026-10-26 (+18d) | 2026-10-18 → 2026-11-03 (+16d) |  | -33.5d → -48d |  |
| CO-SU-FE-N-EL-120 | Fixing of Control cable,CAT6A cable | 2026-10-18 → 2026-11-04 (+17d) | 2026-10-28 → 2026-11-14 (+17d) |  | -33.5d → -48d |  |
| CO-SU-FE-N-EL-130 | Install 800mm x 800mm x 800mm height concrete handhole | 2026-10-18 → 2026-11-04 (+17d) | 2026-10-28 → 2026-11-14 (+17d) |  | -33.5d → -48d |  |
| CO-SU-FE-N-EL-140 | Hot dipped galvanized cable conduits for CAT6A cable and Control Cables embedded to wall | 2026-10-18 → 2026-11-04 (+17d) | 2026-10-27 → 2026-11-12 (+16d) |  | -32.5d → -47d |  |
| CO-SU-FE-N-EL-150 | Fixing Earthing Work (Earth Pit,Grounding rod,Tinned Copper wire) | 2026-10-28 → 2026-11-15 (+18d) | 2026-11-07 → 2026-11-23 (+16d) |  | -33.5d → -48d |  |
| CO-SU-FE-N-EL-160 | Field Equipment Cabinet enclosed outdoor complete with precast concrete footing, | 2026-11-07 → 2026-11-24 (+17d) | 2026-11-16 → 2026-12-02 (+16d) |  | -33.5d → -48d |  |
| CO-SU-FE-N-EL-170 | Fence Lightining 400V, 3PH, 60Hz lighting control panelï¿½ (LCP-02) | 2026-11-07 → 2026-11-24 (+17d) | 2026-11-16 → 2026-12-02 (+16d) |  | -33.5d → -48d |  |
| CO-SU-FE-N-EL-180 | Install of direct buried armored cable 4C-16mm2 ,10mm2 | 2026-11-16 → 2026-12-03 (+17d) | 2026-11-26 → 2026-12-13 (+17d) |  | -33.5d → -48d |  |
| CO-SU-FE-N-EL-190 | Install 16mm2,10mm2 CU/PVC wire | 2026-11-16 → 2026-12-03 (+17d) | 2026-11-26 → 2026-12-13 (+17d) |  | -33.5d → -48d |  |
| CO-SU-FE-N-EL-200 | FEC-CCTV ( 4C-16mm2 CU/XLPE/PVC direct buried armored cable,16mm2 CU/PVC wire | 2026-11-16 → 2026-12-03 (+17d) | 2026-11-25 → 2026-12-12 (+17d) |  | -32.5d → -47d |  |
| CO-SU-FE-N-EL-210 | Junction Box for lighting fixture | 2026-11-26 → 2026-12-14 (+18d) | 2026-12-06 → 2026-12-22 (+16d) |  | -31.5d → -46d |  |
| CO-SU-FE-N-EL-220 | IR Intrusion Detection System Quad Beams | 2026-12-24 → 2027-01-11 (+18d) | 2027-01-03 → 2027-01-19 (+16d) |  | 8.5d → -6d |  |
| CO-SU-FE-N-EL-230 | Install of 38W, 230V, 1PH, 60Hz fence, led linear uplight lighting, IP66 | 2026-12-24 → 2027-01-11 (+18d) | 2027-01-04 → 2027-01-20 (+16d) |  | 7.5d → -7d |  |
| CO-SU-FE-N-EL-240 | Install, fixings, testing and commissioning 80W LED | 2027-01-04 → 2027-01-21 (+17d) | 2027-01-12 → 2027-01-28 (+16d) |  | 7.5d → -7d |  |
| 4 | **Architictural work** |  | 2027-01-24 → 2027-01-20 (-4d) |  |  |  |
| CO-SU-FE-N-AR-100 | Install Brick Work For Northern Fence | 2026-09-29 A | 2026-10-08 → 2026-10-25 (+17d) | 0% → 40% | -33.5d → -48d | CO-SU-FE-N-CI-130 → CO-SU-FE-N-CI-130 FF |
| CO-SU-FE-N-AR-110 | External plastering to walls and columns | 2026-11-26 → 2026-12-14 (+18d) | 2026-12-05 → 2026-12-21 (+16d) |  | -33.5d → -48d |  |
| CO-SU-FE-N-AR-120 | Install 50mm thick random cut stone cladding | 2026-12-05 → 2026-12-22 (+17d) | 2026-12-13 → 2026-12-29 (+16d) |  | -33.5d → -48d |  |
| CO-SU-FE-N-AR-130 | Install 2 coats of weatherproof paint at walls | 2026-12-13 → 2026-12-30 (+17d) | 2026-12-20 → 2027-01-05 (+16d) |  | -33.5d → -48d |  |
| CO-SU-FE-N-AR-140 | Install Stone coping 500mm,525mm | 2026-12-20 → 2027-01-06 (+17d) | 2026-12-24 → 2027-01-10 (+17d) |  | -33.5d → -48d |  |
| CO-SU-FE-N-AR-150 | Install MODON Signage | 2027-01-16 → 2027-01-13 (-3d) | 2027-01-24 → 2027-01-20 (-4d) |  | -6.5d → -4d |  |
| 2 | **Western Fence P1 ( W01:W06 )** |  | 2027-03-13 → 2027-03-29 (+16d) |  |  |  |
| 1 | **Civil Work** |  | 2026-12-01 → 2026-11-28 (-3d) |  |  |  |
| CO-SU-FE-WP1-CI-160 | Pouring for Plain Concrete Northern Fence |  | 2026-09-20 → 2026-10-18 (+28d) |  | -9d → -15d |  |
| CO-SU-FE-WP1-CI-170 | Pouring R.C Footing For Northern Fence |  | 2026-10-13 → 2026-10-29 (+16d) | 35% → 85% | -24.5d → -22d |  |
| CO-SU-FE-WP1-CI-180 | Pouring R.C Columns For Northern Fence | 2026-10-13 → 2026-09-17 A (-26d) | 2026-11-01 → 2026-11-08 (+7d) | 0% → 30% | -24.5d → -22d | CO-SU-FE-WP1-CI-170, CO-SU-FE-WP1-CI-150 → CO-SU-FE-WP1-CI-170 FF, CO-SU-FE-WP1-CI-150 FF, CO-SU-FE-WP1-CI-170 SS |
| CO-SU-FE-WP1-CI-190 | Pouring Beams For Northern Fence | 2026-11-11 → 2026-10-05 A (-37d) | 2026-12-01 → 2026-11-28 (-3d) | 0% → 20% | -6.5d → -4d |  |
| 5 | **Finishing Work** | 2026-11-01 → 2026-09-29 (-33d) | 2027-03-13 → 2027-03-29 (+16d) |  |  |  |
| 3 | **Electrical Work** | 2026-11-11 → 2026-11-09 (-2d) | 2027-03-13 → 2027-03-29 (+16d) |  |  |  |
| CO-SU-FE-WP1-EL-260 | Trench excavation to receive 2 nos 50mm diameter PVC Conduit | 2026-11-11 → 2026-11-09 (-2d) | 2026-11-28 → 2026-11-24 (-4d) |  | -24.5d → -22d |  |
| CO-SU-FE-WP1-EL-320 | Trench excavation to receive 3 nos 50mm diameter PVC Conduit | 2026-11-11 → 2026-11-09 (-2d) | 2026-11-28 → 2026-11-24 (-4d) |  | -24.5d → -22d |  |
| CO-SU-FE-WP1-EL-300 | Fixing of Control cable,CAT6A cable | 2026-11-28 → 2026-11-25 (-3d) | 2026-12-14 → 2026-12-10 (-4d) |  | -24.5d → -22d |  |
| CO-SU-FE-WP1-EL-330 | Hot dipped galvanized cable conduits for CAT6A cable and Control Cables embedded to wall | 2026-11-28 → 2026-11-25 (-3d) | 2026-12-14 → 2026-12-10 (-4d) |  | -24.5d → -22d |  |
| CO-SU-FE-WP1-EL-310 | Install 800mm x 800mm x 800mm height concrete handhole | 2026-12-06 → 2026-12-23 (+17d) | 2026-12-22 → 2027-01-07 (+16d) |  | -31.5d → -46d |  |
| CO-SU-FE-WP1-EL-280 | Fixing Earthing Work (Earth Pit,Grounding rod,Tinned Copper wire) | 2026-12-24 → 2027-01-11 (+18d) | 2027-01-06 → 2027-01-23 (+17d) |  | -33.5d → -48d |  |
| CO-SU-FE-WP1-EL-340 | Field Equipment Cabinet enclosed outdoor complete with precast concrete footing, | 2027-01-06 → 2027-01-24 (+18d) | 2027-01-17 → 2027-02-02 (+16d) |  | -33.5d → -48d |  |
| CO-SU-FE-WP1-EL-350 | Fence Lightining 400V, 3PH, 60Hz lighting control panelï¿½ (LCP-02) | 2027-01-06 → 2027-01-24 (+18d) | 2027-01-17 → 2027-02-02 (+16d) |  | -33.5d → -48d |  |

| ID | Task | Start | Finish | Complete | Total float | Predecessors |
| --- | --- | --- | --- | --- | --- | --- |
| CO-SU-FE-WP1-EL-360 | Install of direct buried armored cable 4C-16mm2 ,10mm2 | 2027-01-17 → 2027-02-03 (+17d) | 2027-01-26 → 2027-02-14 (+19d) |  | -32.5d → -47d |  |
| CO-SU-FE-WP1-EL-370 | Install 16mm2,10mm2 CU/PVC wire | 2027-01-17 → 2027-02-03 (+17d) | 2027-01-26 → 2027-02-14 (+19d) |  | -32.5d → -47d |  |
| CO-SU-FE-WP1-EL-390 | FEC-CCTV ( 4C-16mm2 CU/XLPE/PVC direct buried armored cable,16mm2 CU/PVC wire | 2027-01-17 → 2027-02-03 (+17d) | 2027-01-27 → 2027-02-15 (+19d) |  | -33.5d → -48d |  |
| CO-SU-FE-WP1-EL-250 | Junction Box for lighting fixture | 2027-01-26 → 2027-02-14 (+19d) | 2027-02-08 → 2027-03-02 (+22d) |  | -29.5d → -44d |  |
| CO-SU-FE-WP1-EL-290 | IR Intrusion Detection System Quad Beams | 2027-02-25 → 2027-03-21 (+24d) | 2027-03-03 → 2027-03-24 (+21d) |  | -33.5d → -48d |  |
| CO-SU-FE-WP1-EL-380 | Install of 38W, 230V, 1PH, 60Hz fence, led linear uplight lighting, IP66 | 2027-02-25 → 2027-03-21 (+24d) | 2027-03-03 → 2027-03-24 (+21d) |  | -30.5d → -45d |  |
| CO-SU-FE-WP1-EL-270 | Install, fixings, testing and commissioning 80W LED | 2027-03-03 → 2027-03-25 (+22d) | 2027-03-13 → 2027-03-29 (+16d) |  | -30.5d → -45d |  |
| 4 | **Architictural work** | 2026-11-01 → 2026-09-29 (-33d) | 2027-03-13 → 2027-03-29 (+16d) |  |  |  |
| CO-SU-FE-WP1-AR-160 | Install Brick Work For Northern Fence | 2026-11-01 → 2026-09-29 A (-33d) | 2026-11-11 → 2026-11-08 (-3d) | 0% → 40% | -24.5d → -22d | CO-SU-FE-WP1-CI-180 → CO-SU-FE-WP1-CI-180 FF, CO-SU-FE-WP1-CI-180 SS |
| CO-SU-FE-WP1-AR-170 | External plastering to walls and columns | 2027-01-27 → 2027-02-15 (+19d) | 2027-02-03 → 2027-02-24 (+21d) |  | -33.5d → -48d |  |
| CO-SU-FE-WP1-AR-180 | Install 50mm thick random cut stone cladding | 2027-02-03 → 2027-02-24 (+21d) | 2027-02-09 → 2027-03-03 (+22d) |  | -33.5d → -48d |  |
| CO-SU-FE-WP1-AR-190 | Install 2 coats of weatherproof paint at walls | 2027-02-10 → 2027-03-04 (+22d) | 2027-02-18 → 2027-03-15 (+25d) |  | -33.5d → -48d |  |
| CO-SU-FE-WP1-AR-200 | Install Stone coping 500mm,525mm | 2027-02-20 → 2027-03-16 (+24d) | 2027-02-24 → 2027-03-20 (+24d) |  | -33.5d → -48d |  |
| CO-SU-FE-WP1-AR-210 | Install MODON Signage | 2027-02-25 → 2027-03-21 (+24d) | 2027-03-13 → 2027-03-29 (+16d) |  | -30.5d → -45d |  |
| 3 | **Western Fence P2 ( W07:W12 )** |  | 2027-03-24 → 2027-04-10 (+17d) |  |  |  |
| 1 | **Civil Work** |  | 2026-12-09 → 2026-12-06 (-3d) |  |  |  |
| CO-SU-FE-WP2-CI-210 | Pouring for Plain Concrete Northern Fence |  | 2026-10-10 → 2026-10-26 (+16d) |  | -4.5d → -4d |  |
| CO-SU-FE-WP2-CI-220 | Pouring R.C Footing For Northern Fence |  | 2026-10-12 → 2026-10-28 (+16d) | 41% → 85% | -4.5d → -4d |  |
| CO-SU-FE-WP2-CI-230 | Pouring R.C Columns For Northern Fence | 2026-10-12 → 2026-09-19 A (-23d) | 2026-10-22 → 2026-10-31 (+9d) | 0% → 30% | -4.5d → -4d | CO-SU-FE-WP2-CI-220 → CO-SU-FE-WP2-CI-220 FF, CO-SU-FE-WP2-CI-220 SS |
| CO-SU-FE-WP2-CI-240 | Pouring Beams For Northern Fence | 2026-12-01 → 2026-10-11 A (-51d) | 2026-12-09 → 2026-12-06 (-3d) | 0% → 20% | -6.5d → -4d |  |
| 5 | **Finishing Work** | 2026-10-22 → 2026-09-29 (-23d) | 2027-03-24 → 2027-04-10 (+17d) |  |  |  |
| 3 | **Electrical Work** |  | 2027-03-24 → 2027-04-10 (+17d) |  |  |  |
| CO-SU-FE-WP2-EL-410 | Trench excavation to receive 2 nos 50mm diameter PVC Conduit |  | 2026-11-05 → 2026-11-04 (-1d) |  | -4.5d → -4d |  |
| CO-SU-FE-WP2-EL-470 | Trench excavation to receive 3 nos 50mm diameter PVC Conduit |  | 2026-11-08 → 2026-11-07 (-1d) |  | -4.5d → -4d |  |
| CO-SU-FE-WP2-EL-450 | Fixing of Control cable,CAT6A cable |  | 2026-11-16 → 2026-11-15 (-1d) |  | -4.5d → -4d |  |
| CO-SU-FE-WP2-EL-460 | Install 800mm x 800mm x 800mm height concrete handhole |  | 2026-11-16 → 2026-11-15 (-1d) |  | -4.3d → -3.8d |  |
| CO-SU-FE-WP2-EL-480 | Hot dipped galvanized cable conduits for CAT6A cable and Control Cables embedded to wall |  | 2026-11-15 → 2026-11-14 (-1d) |  | -3.5d → -3d |  |
| CO-SU-FE-WP2-EL-430 | Fixing Earthing Work (Earth Pit,Grounding rod,Tinned Copper wire) |  | 2026-11-23 → 2026-11-22 (-1d) |  | -4.5d → -4d |  |
| CO-SU-FE-WP2-EL-490 | Field Equipment Cabinet enclosed outdoor complete with precast concrete footing, |  | 2026-11-28 → 2026-11-26 (-2d) |  | -4.5d → -4d |  |
| CO-SU-FE-WP2-EL-540 | FEC-CCTV ( 4C-16mm2 CU/XLPE/PVC direct buried armored cable,16mm2 CU/PVC wire |  | 2026-12-07 → 2026-12-06 (-1d) |  | -4.5d → -4d |  |
| CO-SU-FE-WP2-EL-400 | Junction Box for lighting fixture | 2026-12-07 → 2026-12-06 (-1d) |  |  | 10d → 10.5d |  |
| CO-SU-FE-WP2-EL-440 | IR Intrusion Detection System Quad Beams | 2027-03-03 → 2027-03-25 (+22d) | 2027-03-16 → 2027-04-01 (+16d) |  | -33.5d → -48d |  |
| CO-SU-FE-WP2-EL-530 | Install of 38W, 230V, 1PH, 60Hz fence, led linear uplight lighting, IP66 | 2027-03-03 → 2027-03-25 (+22d) | 2027-03-16 → 2027-04-01 (+16d) |  | -33.5d → -48d |  |
| CO-SU-FE-WP2-EL-420 | Install, fixings, testing and commissioning 80W LED | 2027-03-16 → 2027-04-03 (+18d) | 2027-03-24 → 2027-04-10 (+17d) |  | -33.5d → -48d |  |
| 4 | **Architictural work** | 2026-10-22 → 2026-09-29 (-23d) | 2027-03-22 → 2027-04-07 (+16d) |  |  |  |
| CO-SU-FE-WP2-AR-220 | Install Brick Work For Northern Fence | 2026-10-22 → 2026-09-29 A (-23d) | 2026-11-01 → 2026-10-31 (-1d) | 0% → 40% | -4.5d → -4d | CO-SU-FE-WP2-CI-230 → CO-SU-FE-WP2-CI-230 FF, CO-SU-FE-WP2-CI-230 SS |
| CO-SU-FE-WP2-AR-230 | External plastering to walls and columns | 2026-12-09 → 2026-12-07 (-2d) | 2026-12-19 → 2026-12-15 (-4d) |  | -6.5d → -4d |  |
| CO-SU-FE-WP2-AR-240 | Install 50mm thick random cut stone cladding | 2026-12-19 → 2026-12-16 (-3d) | 2026-12-28 → 2026-12-24 (-4d) |  | -6.5d → -4d |  |
| CO-SU-FE-WP2-AR-250 | Install 2 coats of weatherproof paint at walls | 2026-12-28 → 2026-12-26 (-2d) | 2027-01-06 → 2027-01-03 (-3d) |  | -6.5d → -4d |  |
| CO-SU-FE-WP2-AR-260 | Install Stone coping 500mm,525mm | 2027-01-06 → 2027-01-04 (-2d) | 2027-01-16 → 2027-01-12 (-4d) |  | -6.5d → -4d |  |
| CO-SU-FE-WP2-AR-270 | Install MODON Signage | 2027-03-13 → 2027-03-30 (+17d) | 2027-03-22 → 2027-04-07 (+16d) |  | -30.5d → -45d |  |
| 4 | **Southern Fence S01:S05** |  | 2027-04-01 → 2027-04-18 (+17d) |  |  |  |
| 1 | **Civil Work** |  | 2026-10-17 → 2026-11-12 (+26d) |  |  |  |
| CO-SU-FE-S-CI-260 | Pouring for Plain Concrete Northern Fence |  | 2026-09-17 → 2026-10-15 (+28d) |  | 22d → 5d |  |
| CO-SU-FE-S-CI-270 | Pouring R.C Footing For Northern Fence |  | 2026-09-24 → 2026-10-21 (+27d) | 41% → 85% | 22d → 5d |  |
| CO-SU-FE-S-CI-280 | Pouring R.C Columns For Northern Fence | 2026-09-26 → 2026-10-05 A (+9d) | 2026-10-06 → 2026-11-02 (+27d) | 0% → 20% | 22d → 5d |  |
| CO-SU-FE-S-CI-290 | Pouring Beams For Northern Fence | 2026-10-07 → 2026-10-08 A (+1d) | 2026-10-17 → 2026-11-12 (+26d) | 0% → 20% | 35d → 14d |  |
| 5 | **Finishing Work** | 2026-10-07 → 2026-09-29 (-8d) | 2027-04-01 → 2027-04-18 (+17d) |  |  |  |
| 3 | **Electrical Work** | 2026-10-07 → 2026-10-27 (+20d) | 2027-04-01 → 2027-04-18 (+17d) |  |  |  |
| CO-SU-FE-S-EL-560 | Trench excavation to receive 2 nos 50mm diameter PVC Conduit | 2026-10-07 → 2026-10-27 (+20d) | 2026-10-24 → 2026-11-12 (+19d) |  | 22d → 5d |  |
| CO-SU-FE-S-EL-620 | Trench excavation to receive 3 nos 50mm diameter PVC Conduit | 2026-10-07 → 2026-10-27 (+20d) | 2026-10-24 → 2026-11-12 (+19d) |  | 22d → 5d |  |
| CO-SU-FE-S-EL-600 | Fixing of Control cable,CAT6A cable | 2026-10-25 → 2026-11-14 (+20d) | 2026-11-10 → 2026-11-30 (+20d) |  | 22d → 5d |  |
| CO-SU-FE-S-EL-610 | Install 800mm x 800mm x 800mm height concrete handhole | 2026-10-25 → 2026-11-14 (+20d) | 2026-11-10 → 2026-11-30 (+20d) |  | 22d → 5d |  |
| CO-SU-FE-S-EL-630 | Hot dipped galvanized cable conduits for CAT6A cable and Control Cables embedded to wall | 2026-10-25 → 2026-11-14 (+20d) | 2026-11-10 → 2026-11-30 (+20d) |  | 22d → 5d |  |
| CO-SU-FE-S-EL-580 | Fixing Earthing Work (Earth Pit,Grounding rod,Tinned Copper wire) | 2026-11-11 → 2026-12-01 (+20d) | 2026-11-17 → 2026-12-07 (+20d) |  | 22d → 5d |  |
| CO-SU-FE-S-EL-640 | Field Equipment Cabinet enclosed outdoor complete with precast concrete footing, | 2026-11-14 → 2026-12-03 (+19d) | 2026-11-17 → 2026-12-07 (+20d) |  | 22d → 5d |  |
| CO-SU-FE-S-EL-650 | Fence Lightining 400V, 3PH, 60Hz lighting control panelï¿½ (LCP-02) | 2026-11-14 → 2026-12-03 (+19d) | 2026-11-17 → 2026-12-07 (+20d) |  | 22d → 5d |  |
| CO-SU-FE-S-EL-660 | Install of direct buried armored cable 4C-16mm2 ,10mm2 | 2026-11-14 → 2026-12-03 (+19d) | 2026-11-24 → 2026-12-14 (+20d) |  | 23d → 6d |  |
| CO-SU-FE-S-EL-670 | Install 16mm2,10mm2 CU/PVC wire | 2026-11-18 → 2026-12-08 (+20d) | 2026-11-24 → 2026-12-14 (+20d) |  | 23d → 6d |  |
| CO-SU-FE-S-EL-690 | FEC-CCTV ( 4C-16mm2 CU/XLPE/PVC direct buried armored cable,16mm2 CU/PVC wire | 2026-11-18 → 2026-12-08 (+20d) | 2026-11-25 → 2026-12-15 (+20d) |  | 22d → 5d |  |
| CO-SU-FE-S-EL-550 | Junction Box for lighting fixture | 2026-12-10 → 2026-12-15 (+5d) | 2026-12-17 → 2026-12-22 (+5d) |  | 10d → 6d |  |
| CO-SU-FE-S-EL-590 | IR Intrusion Detection System Quad Beams | 2027-02-21 → 2027-03-17 (+24d) | 2027-03-03 → 2027-03-24 (+21d) |  | -19.5d → -34d |  |
| CO-SU-FE-S-EL-680 | Install of 38W, 230V, 1PH, 60Hz fence, led linear uplight lighting, IP66 | 2027-03-16 → 2027-04-03 (+18d) | 2027-03-24 → 2027-04-10 (+17d) |  | -33.5d → -48d |  |
| CO-SU-FE-S-EL-570 | Install, fixings, testing and commissioning 80W LED | 2027-03-24 → 2027-04-11 (+18d) | 2027-04-01 → 2027-04-18 (+17d) |  | -33.5d → -48d |  |
| 4 | **Architictural work** | 2026-10-07 → 2026-09-29 (-8d) | 2027-03-31 → 2027-04-17 (+17d) |  |  |  |
| CO-SU-FE-S-AR-280 | Install Brick Work For Northern Fence | 2026-10-07 → 2026-09-29 A (-8d) | 2026-10-13 → 2026-11-02 (+20d) | 0% → 40% | 22d → 5d | CO-SU-FE-S-CI-280 → CO-SU-FE-S-CI-280 FF |
| CO-SU-FE-S-AR-290 | External plastering to walls and columns | 2026-11-26 → 2026-12-16 (+20d) | 2026-12-02 → 2026-12-22 (+20d) |  | 22d → 5d |  |
| CO-SU-FE-S-AR-300 | Install 50mm thick random cut stone cladding | 2026-12-03 → 2026-12-23 (+20d) | 2026-12-09 → 2026-12-29 (+20d) |  | 22d → 5d |  |
| CO-SU-FE-S-AR-310 | Install 2 coats of weatherproof paint at walls | 2027-02-08 → 2027-03-02 (+22d) | 2027-02-21 → 2027-03-16 (+23d) |  | -29.5d → -44d |  |
| CO-SU-FE-S-AR-320 | Install Stone coping 500mm,525mm | 2027-02-21 → 2027-03-17 (+24d) | 2027-03-08 → 2027-03-28 (+20d) |  | -29.5d → -44d |  |

| ID | Task | Start | Finish | Complete | Total float | Predecessors |
| --- | --- | --- | --- | --- | --- | --- |
| CO-SU-FE-S-AR-330 | Install MODON Signage | 2027-03-22 → 2027-04-08 (+17d) | 2027-03-31 → 2027-04-17 (+17d) |  | -30.5d → -45d |  |
| 5 | **Eastern Fence P1 ( E01:E06 )** |  | 2027-04-06 → 2027-04-22 (+16d) |  |  |  |
| 1 | **Civil Work** |  | 2026-11-03 → 2026-11-21 (+18d) |  |  |  |
| CO-SU-FE-EP1-CI-310 | Pouring for Plain Concrete Northern Fence |  | 2026-09-24 → 2026-10-21 (+27d) |  | 26d → 13d |  |
| CO-SU-FE-EP1-CI-320 | Pouring R.C Footing For Northern Fence |  | 2026-09-29 → 2026-10-26 (+27d) | 41% → 85% | 26d → 13d |  |
| CO-SU-FE-EP1-CI-330 | Pouring R.C Columns For Northern Fence | 2026-09-30 → 2026-10-06 A (+6d) | 2026-10-17 → 2026-11-12 (+26d) | 0% → 20% | 26d → 13d |  |
| CO-SU-FE-EP1-CI-340 | Pouring Beams For Northern Fence | 2026-10-27 → 2026-10-08 A (-19d) | 2026-11-03 → 2026-11-21 (+18d) | 0% → 20% | 27d → 14d |  |
| 5 | **Finishing Work** | 2026-10-18 → 2026-09-29 (-19d) | 2027-04-06 → 2027-04-22 (+16d) |  |  |  |
| 3 | **Electrical Work** | 2026-10-27 → 2026-11-14 (+18d) | 2027-04-06 → 2027-04-22 (+16d) |  |  |  |
| CO-SU-FE-EP1-EL-710 | Trench excavation to receive 2 nos 50mm diameter PVC Conduit | 2026-10-27 → 2026-11-14 (+18d) | 2026-10-31 → 2026-11-17 (+17d) |  | 26d → 13d |  |
| CO-SU-FE-EP1-EL-770 | Trench excavation to receive 3 nos 50mm diameter PVC Conduit | 2026-10-27 → 2026-11-14 (+18d) | 2026-10-31 → 2026-11-17 (+17d) |  | 26d → 13d |  |
| CO-SU-FE-EP1-EL-750 | Fixing of Control cable,CAT6A cable | 2026-11-01 → 2026-11-18 (+17d) | 2026-11-04 → 2026-11-22 (+18d) |  | 26d → 13d |  |
| CO-SU-FE-EP1-EL-760 | Install 800mm x 800mm x 800mm height concrete handhole | 2026-11-01 → 2026-11-18 (+17d) | 2026-11-04 → 2026-11-22 (+18d) |  | 26d → 13d |  |
| CO-SU-FE-EP1-EL-780 | Hot dipped galvanized cable conduits for CAT6A cable and Control Cables embedded to wall | 2026-11-01 → 2026-11-18 (+17d) | 2026-11-04 → 2026-11-22 (+18d) |  | 26d → 13d |  |
| CO-SU-FE-EP1-EL-730 | Fixing Earthing Work (Earth Pit,Grounding rod,Tinned Copper wire) | 2026-11-05 → 2026-11-23 (+18d) | 2026-11-11 → 2026-11-29 (+18d) |  | 26d → 13d |  |
| CO-SU-FE-EP1-EL-790 | Field Equipment Cabinet enclosed outdoor complete with precast concrete footing, | 2026-11-12 → 2026-11-30 (+18d) | 2026-11-16 → 2026-12-03 (+17d) |  | 26d → 13d |  |
| CO-SU-FE-EP1-EL-800 | Fence Lightining 400V, 3PH, 60Hz lighting control panelï¿½ (LCP-02) | 2026-11-12 → 2026-11-30 (+18d) | 2026-11-16 → 2026-12-03 (+17d) |  | 26d → 13d |  |
| CO-SU-FE-EP1-EL-810 | Install of direct buried armored cable 4C-16mm2 ,10mm2 | 2026-11-17 → 2026-12-05 (+18d) | 2026-11-21 → 2026-12-08 (+17d) |  | 28d → 13d |  |
| CO-SU-FE-EP1-EL-820 | Install 16mm2,10mm2 CU/PVC wire | 2026-11-17 → 2026-12-05 (+18d) | 2026-11-21 → 2026-12-08 (+17d) |  | 28d → 13d |  |
| CO-SU-FE-EP1-EL-840 | FEC-CCTV ( 4C-16mm2 CU/XLPE/PVC direct buried armored cable,16mm2 CU/PVC wire | 2026-11-17 → 2026-12-05 (+18d) | 2026-11-21 → 2026-12-08 (+17d) |  | 26d → 13d |  |
| CO-SU-FE-EP1-EL-700 | Junction Box for lighting fixture | 2026-12-19 → 2026-12-23 (+4d) | 2026-12-21 → 2026-12-26 (+5d) |  | 10d → 6d |  |
| CO-SU-FE-EP1-EL-740 | IR Intrusion Detection System Quad Beams | 2027-03-03 → 2027-03-25 (+22d) | 2027-03-13 → 2027-03-29 (+16d) |  | -16.5d → -31d |  |
| CO-SU-FE-EP1-EL-830 | Install of 38W, 230V, 1PH, 60Hz fence, led linear uplight lighting, IP66 | 2027-03-03 → 2027-03-25 (+22d) | 2027-03-13 → 2027-03-29 (+16d) |  | -16.5d → -31d |  |
| CO-SU-FE-EP1-EL-720 | Install, fixings, testing and commissioning 80W LED | 2027-04-01 → 2027-04-19 (+18d) | 2027-04-06 → 2027-04-22 (+16d) |  | -33.5d → -48d |  |
| 4 | **Architictural work** | 2026-10-18 → 2026-09-29 (-19d) | 2027-04-04 → 2027-04-20 (+16d) |  |  |  |
| CO-SU-FE-EP1-AR-340 | Install Brick Work For Northern Fence | 2026-10-18 → 2026-09-29 A (-19d) | 2026-10-26 → 2026-11-12 (+17d) | 0% → 40% | 26d → 13d | CO-SU-FE-EP1-CI-330 → CO-SU-FE-EP1-CI-330 FF |
| CO-SU-FE-EP1-AR-350 | External plastering to walls and columns | 2026-11-22 → 2026-12-09 (+17d) | 2026-11-30 → 2026-12-17 (+17d) |  | 28d → 13d |  |
| CO-SU-FE-EP1-AR-360 | Install 50mm thick random cut stone cladding | 2026-12-01 → 2026-12-19 (+18d) | 2026-12-12 → 2026-12-29 (+17d) |  | 28d → 13d |  |
| CO-SU-FE-EP1-AR-370 | Install 2 coats of weatherproof paint at walls | 2026-12-13 → 2026-12-30 (+17d) | 2026-12-23 → 2027-01-10 (+18d) |  | 28d → 13d |  |
| CO-SU-FE-EP1-AR-380 | Install Stone coping 500mm,525mm | 2026-12-24 → 2027-01-11 (+18d) | 2027-01-04 → 2027-01-21 (+17d) |  | 28d → 13d |  |
| CO-SU-FE-EP1-AR-390 | Install MODON Signage | 2027-03-31 → 2027-04-18 (+18d) | 2027-04-04 → 2027-04-20 (+16d) |  | -30.5d → -45d |  |
| 6 | **Eastern Fence P2 ( E07:E13 )** |  | 2027-04-14 → 2027-05-03 (+19d) |  |  |  |
| 1 | **Civil Work** |  | 2026-12-09 → 2026-12-20 (+11d) |  |  |  |
| CO-SU-FE-EP2-CI-360 | Pouring for Plain Concrete Northern Fence |  | 2026-10-17 → 2026-11-12 (+26d) |  | 46d → 39d |  |
| CO-SU-FE-EP2-CI-370 | Pouring R.C Footing For Northern Fence |  | 2026-10-17 → 2026-11-12 (+26d) | 41% → 85% | 46d → 39d |  |
| CO-SU-FE-EP2-CI-380 | Pouring R.C Columns For Northern Fence | 2026-10-18 → 2026-09-15 A (-33d) | 2026-10-28 → 2026-11-12 (+15d) | 0% → 30% | 46d → 39d | CO-SU-FE-EP2-CI-370, CO-SU-FE-EP1-CI-330 → CO-SU-FE-EP2-CI-370 FF, CO-SU-FE-EP2-CI-370 SS, CO-SU-FE-EP1-CI-330 FF |
| CO-SU-FE-EP2-CI-390 | Pouring Beams For Northern Fence | 2026-11-29 → 2026-10-01 A (-59d) | 2026-12-09 → 2026-12-20 (+11d) |  | 36d → 27d |  |
| 5 | **Finishing Work** | 2026-11-22 → 2026-09-29 (-54d) | 2027-04-14 → 2027-05-03 (+19d) |  |  |  |
| 3 | **Electrical Work** | 2026-11-29 → 2026-12-09 (+10d) | 2027-04-14 → 2027-05-03 (+19d) |  |  |  |
| CO-SU-FE-EP2-EL-860 | Trench excavation to receive 2 nos 50mm diameter PVC Conduit | 2026-11-29 → 2026-12-09 (+10d) | 2026-12-02 → 2026-12-13 (+11d) |  | 26d → 17d |  |
| CO-SU-FE-EP2-EL-920 | Trench excavation to receive 3 nos 50mm diameter PVC Conduit | 2026-11-29 → 2026-12-09 (+10d) | 2026-12-02 → 2026-12-13 (+11d) |  | 26d → 17d |  |
| CO-SU-FE-EP2-EL-910 | Install 800mm x 800mm x 800mm height concrete handhole | 2026-12-03 → 2026-12-14 (+11d) | 2026-12-06 → 2026-12-16 (+10d) |  | 26d → 17d |  |
| CO-SU-FE-EP2-EL-930 | Hot dipped galvanized cable conduits for CAT6A cable and Control Cables embedded to wall | 2026-12-03 → 2026-12-14 (+11d) | 2026-12-06 → 2026-12-16 (+10d) |  | 26d → 17d |  |
| CO-SU-FE-EP2-EL-900 | Fixing of Control cable,CAT6A cable | 2026-12-22 → 2026-12-27 (+5d) | 2026-12-24 → 2026-12-29 (+5d) |  | 10d → 6d |  |
| CO-SU-FE-EP2-EL-880 | Fixing Earthing Work (Earth Pit,Grounding rod,Tinned Copper wire) | 2026-12-26 → 2026-12-30 (+4d) | 2026-12-28 → 2027-01-02 (+5d) |  | 10d → 6d |  |
| CO-SU-FE-EP2-EL-940 | Field Equipment Cabinet enclosed outdoor complete with precast concrete footing, | 2026-12-29 → 2027-01-03 (+5d) | 2027-01-02 → 2027-01-06 (+4d) |  | 10d → 6d |  |
| CO-SU-FE-EP2-EL-950 | Fence Lightining 400V, 3PH, 60Hz lighting control panelï¿½ (LCP-02) | 2026-12-29 → 2027-01-03 (+5d) | 2027-01-02 → 2027-01-06 (+4d) |  | 10d → 6d |  |
| CO-SU-FE-EP2-EL-960 | Install of direct buried armored cable 4C-16mm2 ,10mm2 | 2027-01-03 → 2027-01-07 (+4d) | 2027-01-05 → 2027-01-10 (+5d) |  | 10d → 6d |  |
| CO-SU-FE-EP2-EL-970 | Install 16mm2,10mm2 CU/PVC wire | 2027-01-03 → 2027-01-07 (+4d) | 2027-01-05 → 2027-01-10 (+5d) |  | 10d → 6d |  |
| CO-SU-FE-EP2-EL-990 | FEC-CCTV ( 4C-16mm2 CU/XLPE/PVC direct buried armored cable,16mm2 CU/PVC wire | 2027-01-03 → 2027-01-07 (+4d) | 2027-01-09 → 2027-01-13 (+4d) |  | 10d → 6d |  |
| CO-SU-FE-EP2-EL-850 | Junction Box for lighting fixture | 2027-01-06 → 2027-01-11 (+5d) | 2027-01-09 → 2027-01-13 (+4d) |  | 10d → 6d |  |
| CO-SU-FE-EP2-EL-890 | IR Intrusion Detection System Quad Beams | 2027-04-08 → 2027-04-26 (+18d) | 2027-04-11 → 2027-04-29 (+18d) |  | -38d → -53.5d |  |
| CO-SU-FE-EP2-EL-980 | Install of 38W, 230V, 1PH, 60Hz fence, led linear uplight lighting, IP66 | 2027-04-08 → 2027-04-26 (+18d) | 2027-04-11 → 2027-04-29 (+18d) |  | -38d → -53.5d |  |
| CO-SU-FE-EP2-EL-870 | Install, fixings, testing and commissioning 80W LED | 2027-04-12 → 2027-04-29 (+17d) | 2027-04-14 → 2027-05-03 (+19d) |  | -38d → -53.5d |  |
| 4 | **Architictural work** | 2026-11-22 → 2026-09-29 (-54d) | 2027-04-10 → 2027-04-28 (+18d) |  |  |  |
| CO-SU-FE-EP2-AR-400 | Install Brick Work For Northern Fence | 2026-11-22 → 2026-09-29 A (-54d) | 2026-11-28 → 2026-12-08 (+10d) | 0% → 40% | 26d → 17d | CO-SU-FE-EP2-CI-380, CO-SU-FE-EP1-EL-840 → CO-SU-FE-EP2-CI-380 FF, CO-SU-FE-EP2-CI-380 SS, CO-SU-FE-EP1-EL-840 FF |
| CO-SU-FE-EP2-AR-410 | External plastering to walls and columns | 2027-01-10 → 2027-01-14 (+4d) | 2027-01-14 → 2027-01-19 (+5d) |  | 10d → 6d |  |
| CO-SU-FE-EP2-AR-420 | Install 50mm thick random cut stone cladding | 2027-01-16 → 2027-01-20 (+4d) | 2027-01-20 → 2027-01-25 (+5d) |  | 10d → 6d |  |
| CO-SU-FE-EP2-AR-430 | Install 2 coats of weatherproof paint at walls | 2027-01-21 → 2027-01-26 (+5d) | 2027-01-26 → 2027-01-31 (+5d) |  | 10d → 6d |  |
| CO-SU-FE-EP2-AR-440 | Install Stone coping 500mm,525mm | 2027-04-04 → 2027-04-21 (+17d) | 2027-04-07 → 2027-04-26 (+19d) |  | -38d → -53.5d |  |
| CO-SU-FE-EP2-AR-450 | Install MODON Signage | 2027-04-08 → 2027-04-26 (+18d) | 2027-04-10 → 2027-04-28 (+18d) |  | -34d → -49.5d |  |
| TC | **Testing and Comissioning** | 2026-10-03 → 2026-10-13 (+10d) | 2027-05-22 → 2027-06-06 (+15d) |  |  |  |
| INF | **Infrastructure Networks** | 2027-04-10 → 2027-04-18 (+8d) | 2027-05-22 → 2027-06-05 (+14d) |  |  |  |
| PW1 | **Irrigation Network** | 2027-04-27 → 2027-05-08 (+11d) | 2027-05-02 → 2027-05-13 (+11d) |  |  |  |
| T/C-IR | Testing and Commissioning of Irrigation Network | 2027-04-27 → 2027-05-08 (+11d) | 2027-05-02 → 2027-05-13 (+11d) |  | -66d → -75.5d |  |
| PW11 | **TSE Network** | 2027-04-20 → 2027-05-13 (+23d) | 2027-05-08 → 2027-06-05 (+28d) |  |  |  |
| T/C-TSE-10 | Testing and Commissioning of TSE Network | 2027-04-20 → 2027-05-13 (+23d) | 2027-05-08 → 2027-06-05 (+28d) |  | -62.2d → -82d |  |
| PW | **Potable Water Network** | 2027-04-27 → 2027-05-08 (+11d) | 2027-05-03 → 2027-05-20 (+17d) |  |  |  |
| T/C-PW | Testing and Commissioning of Potable Water Network | 2027-04-27 → 2027-05-08 (+11d) | 2027-05-03 → 2027-05-20 (+17d) |  | -66d → -75.5d |  |
| SW | **Sewage Network** | 2027-04-20 → 2027-04-28 (+8d) | 2027-04-24 → 2027-05-01 (+7d) |  |  |  |

| ID | Task | Start | Finish | Total float |
| --- | --- | --- | --- | --- |
| T/C-SW | Testing and Commissioning of Sewage Network | 2027-04-20 → 2027-04-28 (+8d) | 2027-04-24 → 2027-05-01 (+7d) | -71.2d → -78d |
| SD | **Storm Drainage Network** | 2027-04-10 → 2027-04-18 (+8d) | 2027-04-20 → 2027-04-27 (+7d) |  |
| T/C-SD | Testing and Commissioning of Storm Drainage Network | 2027-04-10 → 2027-04-18 (+8d) | 2027-04-20 → 2027-04-27 (+7d) | -71.2d → -78d |
| SL | **Street Lighting Network** | 2027-05-03 → 2027-05-13 (+10d) | 2027-05-09 → 2027-05-26 (+17d) |  |
| T/C-SL | Testing and Commissioning of Street Lighting Network | 2027-05-03 → 2027-05-13 (+10d) | 2027-05-09 → 2027-05-26 (+17d) | -66d → -75.5d |
| TE | **Telecom Network** | 2027-04-24 → 2027-05-02 (+8d) | 2027-04-27 → 2027-05-04 (+7d) |  |
| T/C-TE | Testing and Commissioning of Telecom Network | 2027-04-24 → 2027-05-02 (+8d) | 2027-04-27 → 2027-05-04 (+7d) | -71.2d → -78d |
| MV | **Medium Voltage Network** | 2027-04-24 → 2027-05-02 (+8d) | 2027-05-10 → 2027-05-23 (+13d) |  |
| T/C-MV | Testing and Commissioning of Medium Voltage Network | 2027-04-24 → 2027-05-02 (+8d) | 2027-05-10 → 2027-05-23 (+13d) | -71.2d → -78d |
| RD | **Road Works** | 2027-05-12 → 2027-05-29 (+17d) | 2027-05-22 → 2027-06-02 (+11d) |  |
| T/C-RD | Testing and Commissioning of Road Works | 2027-05-12 → 2027-05-29 (+17d) | 2027-05-22 → 2027-06-02 (+11d) | -68d → -77.5d |
| 1 | **Utility Buildings** | 2026-10-03 → 2026-10-13 (+10d) | 2027-05-08 → 2027-06-06 (+29d) |  |
| T/C-DPO | Testing and Commissioning of Storm Drainage Ponds | 2026-10-03 → 2026-10-13 (+10d) | 2026-10-03 → 2026-10-13 (+10d) | 106d → 97d |
| T/C-CTV | Testing and Commissioning of Guard Room and Fence | 2027-04-25 → 2027-05-29 (+34d) | 2027-04-25 → 2027-05-29 (+34d) | -46.5d → -70d |
| T/C-SPS | Testing and Commissioning of Sewage Pump Stations& soft scape and planting work | 2027-05-08 → 2027-06-06 (+29d) | 2027-05-08 → 2027-06-06 (+29d) | -58.2d → -78d |
| 1 | **Handing over and close out** | 2026-10-03 → 2026-10-13 (+10d) | 2027-05-30 → 2027-06-10 (+11d) |  |
| 2 | **As-Built** | 2026-10-03 → 2026-10-13 (+10d) | 2027-05-30 → 2027-06-06 (+7d) |  |
| HO-130 | Submission As-Built Drawing For Pond | 2026-10-03 → 2026-10-13 (+10d) | 2026-10-18 → 2026-10-28 (+10d) | 106d → 97d |
| HO-100 | Submission As-Built Drawing For Sewage Network | 2027-04-24 → 2027-05-02 (+8d) | 2027-05-10 → 2027-05-23 (+13d) | -59.2d → -66d |
| HO-160 | Submission As-Built Drawing For Telecom Network | 2027-04-27 → 2027-05-05 (+8d) | 2027-05-11 → 2027-05-24 (+13d) | -60.2d → -67d |
| HO-180 | Submission As-Built Drawing For Irrigation Network | 2027-05-03 → 2027-05-13 (+10d) | 2027-05-22 → 2027-06-02 (+11d) | -65d → -74.5d |
| HO-190 | As-Built Drawing For Potable Water Network | 2027-05-04 → 2027-05-20 (+16d) | 2027-05-23 → 2027-06-03 (+11d) | -66d → -75.5d |
| HO-170 | Submission As-Built Drawing For Medium Voltage Network | 2027-05-10 → 2027-05-24 (+14d) | 2027-05-30 → 2027-06-06 (+7d) | -71.2d → -78d |
| HO-150 | Submission As-Built Drawing For Street Lighting Network | 2027-05-10 → 2027-05-26 (+16d) | 2027-05-23 → 2027-06-03 (+11d) | -66d → -75.5d |
| HO-140 | Submission As-Built Drawing For Roads Network | 2027-05-23 → 2027-06-02 (+10d) | 2027-05-25 → 2027-06-06 (+12d) | -68d → -77.5d |
| HO-210 | Submission As-Built Drawing For Pump station | 2027-05-08 → 2027-06-06 (+29d) | 2027-05-09 → 2027-06-06 (+28d) | -58.2d → -78d |
| 1 | **De-Mobilization Works** | 2027-05-12 → 2027-06-06 (+25d) | 2027-05-23 → 2027-06-10 (+18d) |  |
| HO-230 | Remove Temporary Car Shades | 2027-05-12 → 2027-06-06 (+25d) | 2027-05-23 → 2027-06-10 (+18d) | -66d → -82d |
| 3 | **Handing Over** | 2027-05-23 → 2027-06-06 (+14d) | 2027-05-25 → 2027-06-08 (+14d) |  |
| HO-250 | Review B.O.Q Qty. to ensure compliance with the actual status | 2027-05-23 → 2027-06-06 (+14d) | 2027-05-25 → 2027-06-08 (+14d) | -68d → -80d |
